# Larch Road Health Centre: design and build (offsite modular)

Schedule from Primavera P6, 2026-11-25 to 2027-07-02, data date 2027-05-01, A marks actual dates.
Must finish by 2027-07-02

## Calendars

- LRHC 5-day (England, Christmas shutdown): Mon-Fri 08:00-12:00, 13:00-17:00; Sat-Sun off. Exceptions (off unless hours are given): 2026-12-24 to 2026-12-25, 2026-12-28 to 2027-01-01, 2027-03-26, 2027-03-29, 2027-05-03, 2027-05-31.
- LRHC 7-day (continuous tests): Mon-Sun 08:00-12:00, 13:00-17:00.

## Schedule

| ID | WBS | Activity | Type | Duration | Start | Finish | Predecessors | Complete | Total float | Constraint |
| --- | --- | --- | --- | --- | --- | --- | --- | --- | --- | --- |
|  | KEY | **Key dates and milestones** |  |  | 2026-11-25 | 2027-07-02 |  |  |  |  |
| M-203-AW |  | Contract award and start on site possession date | milestone | 0d | 2026-11-25 A | 2026-11-25 A |  | 100% |  | start on or after 2026-11-25 |
| M-203-S4 |  | M-203-S4 Stage 4 technical design complete (IE1) | milestone | 0d | 2027-01-15 A | 2027-01-15 A | 4-ARC-1015, 4-ARC-1105, 4-ARC-1205, 4-ARC-1305, 4-ARC-1405, 4-ARC-1605, 4-ARC-1705, 4-ARC-1805, 4-ARC-1905, 4-ARC-2005, 4-ARC-2105, 4-ARC-2205, 4-ARC-2305, 4-STR-1015, 4-STR-1105, 4-STR-1205, 4-STR-1305, 4-STR-1405, 4-MEP-1015, 4-MEP-1025, 4-MEP-1035, 4-MEP-1105, 4-MEP-1205, 4-MEP-1305, 4-MEP-1405, 4-MEP-1505, 4-MOD-1015, 4-MOD-1105, 4-MOD-1205, 4-COO-1005, 4-COO-1105, 4-COO-3005, 4-COO-3105 | 100% |  | finish on 2027-01-15 |
| M-204-EN |  | M-204-EN Campus 11 kV energisation (by others, MA 4920.204) | milestone | 0d | 2027-04-06 A | 2027-04-06 A |  | 100% |  | start on or after 2027-04-06 |
| M-203-IE2 |  | M-203-IE2 Pre-handover information (IE2) | milestone | 0d | 2027-04-16 A | 2027-04-16 A | 5-INF-1005, 5-INF-1105, 5-INF-1205, 5-INF-1305 | 100% |  | finish on 2027-04-16 |
| M-203-PC |  | M-203-PC Practical completion and handover information (IE3) | milestone | 0d | 2027-06-04 | 2027-06-04 | 6-INF-1005, 6-INF-1105, 6-INF-1205, 6-INF-1305, 6-INF-1405, 6-INF-1505, 6-INF-1605, 6-INF-1705, 6-INF-1805, 6-INF-1905, 6-HND-1040, 6-HND-1000 |  | 0d | finish on 2027-06-04 |
| M-203-REC |  | M-203-REC Record information (IE4) | milestone | 0d | 2027-07-02 | 2027-07-02 | 6-REC-1005, 6-REC-1105, 6-REC-1205, 6-HND-1050 |  | 0d | finish on 2027-07-02 |
|  | 4 | **RIBA Stage 4 Technical Design** |  |  | 2026-11-25 | 2027-02-09 |  |  |  |  |
|  | GEN | **Design management** |  |  | 2026-11-25 | 2026-12-01 |  |  |  |  |
| 4-GEN-1010 |  | Design kick-off and Stage 3 design review |  | 3d | 2026-11-25 A | 2026-11-27 A | M-203-AW | 100% |  |  |
| 4-GEN-1020 |  | Confirm BEP and design responsibility matrix |  | 5d | 2026-11-25 A | 2026-12-01 A | M-203-AW | 100% |  |  |
| 4-GEN-1030 |  | Site investigation and survey review |  | 3d | 2026-11-25 A | 2026-11-27 A | M-203-AW | 100% |  |  |
|  | ARC | **Architecture (FLD)** |  |  | 2026-11-30 | 2027-01-07 |  |  |  |  |
| 4-ARC-1010 |  | Develop architectural model (Stage 4) |  | 13d | 2026-11-30 A | 2026-12-16 A | 4-GEN-1010 | 100% |  |  |
| 4-ARC-2300 |  | Develop external works and landscape layout |  | 14d | 2026-11-30 A | 2026-12-17 A | 4-GEN-1030 | 100% |  |  |
| 4-ARC-2100 |  | Develop architectural specification |  | 16d | 2026-12-01 A | 2026-12-22 A | 4-GEN-1010 SS+4d | 100% |  |  |
| 4-ARC-2200 |  | Develop fire strategy report |  | 11d | 2026-12-03 A | 2026-12-17 A | 4-ARC-1010 SS+3d | 100% |  |  |
| 4-ARC-1100 |  | Develop GA plan, public zone |  | 11d | 2026-12-04 A | 2026-12-18 A | 4-ARC-1010 SS+4d | 100% |  |  |
| 4-ARC-1200 |  | Develop GA plan, clinical zone |  | 11d | 2026-12-07 A | 2026-12-21 A | 4-ARC-1010 SS+5d | 100% |  |  |
| 4-ARC-1300 |  | Develop GA plan, staff and support zone |  | 11d | 2026-12-08 A | 2026-12-22 A | 4-ARC-1010 SS+6d | 100% |  |  |
| 4-ARC-1600 |  | Develop roof plan |  | 9d | 2026-12-08 A | 2026-12-18 A | 4-ARC-1010 SS+6d | 100% |  |  |
| 4-ARC-1400 |  | Develop GA plan, plant zone |  | 11d | 2026-12-09 A | 2026-12-23 A | 4-ARC-1010 SS+7d | 100% |  |  |
| 4-ARC-1700 |  | Develop elevations |  | 9d | 2026-12-09 A | 2026-12-21 A | 4-ARC-1010 SS+7d | 100% |  |  |
| 4-ARC-1800 |  | Develop sections |  | 9d | 2026-12-10 A | 2026-12-22 A | 4-ARC-1010 SS+8d | 100% |  |  |
| 4-ARC-1900 |  | Develop room data sheets, clinical zone |  | 10d | 2026-12-10 A | 2026-12-23 A | 4-ARC-1200 SS+3d | 100% |  |  |
| 4-ARC-2000 |  | Develop door schedule |  | 9d | 2026-12-10 A | 2026-12-22 A | 4-ARC-1010 SS+8d | 100% |  |  |
| 4-ARC-1011 |  | Check and approve architectural model (Stage 4) |  | 2d | 2026-12-17 A | 2026-12-18 A | 4-ARC-1010 | 100% |  |  |
| 4-ARC-2201 |  | Check and approve fire strategy report |  | 2d | 2026-12-18 A | 2026-12-21 A | 4-ARC-2200 | 100% |  |  |
| 4-ARC-2301 |  | Check and approve external works and landscape layout |  | 2d | 2026-12-18 A | 2026-12-21 A | 4-ARC-2300 | 100% |  |  |
| 4-ARC-1015 |  | Issue architectural model (Stage 4) |  | 1d | 2026-12-21 A | 2026-12-21 A | 4-ARC-1011 | 100% |  |  |
| 4-ARC-1101 |  | Check and approve GA plan, public zone |  | 2d | 2026-12-21 A | 2026-12-22 A | 4-ARC-1100 | 100% |  |  |
| 4-ARC-1601 |  | Check and approve roof plan |  | 2d | 2026-12-21 A | 2026-12-22 A | 4-ARC-1600 | 100% |  |  |
| 4-ARC-1201 |  | Check and approve GA plan, clinical zone |  | 2d | 2026-12-22 A | 2026-12-23 A | 4-ARC-1200 | 100% |  |  |
| 4-ARC-1701 |  | Check and approve elevations |  | 2d | 2026-12-22 A | 2026-12-23 A | 4-ARC-1700 | 100% |  |  |
| 4-ARC-2205 |  | Issue fire strategy report |  | 1d | 2026-12-22 A | 2026-12-22 A | 4-ARC-2201 | 100% |  |  |
| 4-ARC-2305 |  | Issue external works and landscape layout |  | 1d | 2026-12-22 A | 2026-12-22 A | 4-ARC-2301 | 100% |  |  |
| 4-ARC-1102 |  | Client review of GA plan, public zone |  | 1d | 2026-12-23 A | 2026-12-23 A | 4-ARC-1101 | 100% |  |  |
| 4-ARC-1301 |  | Check and approve GA plan, staff and support zone |  | 2d | 2026-12-23 A | 2027-01-04 A | 4-ARC-1300 | 100% |  |  |
| 4-ARC-1605 |  | Issue roof plan |  | 1d | 2026-12-23 A | 2026-12-23 A | 4-ARC-1601 | 100% |  |  |
| 4-ARC-1801 |  | Check and approve sections |  | 2d | 2026-12-23 A | 2027-01-04 A | 4-ARC-1800 | 100% |  |  |
| 4-ARC-2001 |  | Check and approve door schedule |  | 2d | 2026-12-23 A | 2027-01-04 A | 4-ARC-2000 | 100% |  |  |
| 4-ARC-2101 |  | Check and approve architectural specification |  | 2d | 2026-12-23 A | 2027-01-04 A | 4-ARC-2100 | 100% |  |  |
| 4-ARC-1105 |  | Issue GA plan, public zone |  | 1d | 2027-01-04 A | 2027-01-04 A | 4-ARC-1102 | 100% |  |  |
| 4-ARC-1202 |  | Client review of GA plan, clinical zone |  | 1d | 2027-01-04 A | 2027-01-04 A | 4-ARC-1201 | 100% |  |  |
| 4-ARC-1401 |  | Check and approve GA plan, plant zone |  | 2d | 2027-01-04 A | 2027-01-05 A | 4-ARC-1400 | 100% |  |  |
| 4-ARC-1705 |  | Issue elevations |  | 1d | 2027-01-04 A | 2027-01-04 A | 4-ARC-1701 | 100% |  |  |
| 4-ARC-1901 |  | Check and approve room data sheets, clinical zone |  | 2d | 2027-01-04 A | 2027-01-05 A | 4-ARC-1900 | 100% |  |  |
| 4-ARC-1205 |  | Issue GA plan, clinical zone |  | 1d | 2027-01-05 A | 2027-01-05 A | 4-ARC-1202 | 100% |  |  |
| 4-ARC-1302 |  | Client review of GA plan, staff and support zone |  | 1d | 2027-01-05 A | 2027-01-05 A | 4-ARC-1301 | 100% |  |  |
| 4-ARC-1805 |  | Issue sections |  | 1d | 2027-01-05 A | 2027-01-05 A | 4-ARC-1801 | 100% |  |  |
| 4-ARC-2005 |  | Issue door schedule |  | 1d | 2027-01-05 A | 2027-01-05 A | 4-ARC-2001 | 100% |  |  |
| 4-ARC-2105 |  | Issue architectural specification |  | 1d | 2027-01-05 A | 2027-01-05 A | 4-ARC-2101 | 100% |  |  |
| 4-ARC-1305 |  | Issue GA plan, staff and support zone |  | 1d | 2027-01-06 A | 2027-01-06 A | 4-ARC-1302 | 100% |  |  |
| 4-ARC-1402 |  | Client review of GA plan, plant zone |  | 1d | 2027-01-06 A | 2027-01-06 A | 4-ARC-1401 | 100% |  |  |
| 4-ARC-1905 |  | Issue room data sheets, clinical zone |  | 1d | 2027-01-06 A | 2027-01-06 A | 4-ARC-1901 | 100% |  |  |
| 4-ARC-1405 |  | Issue GA plan, plant zone |  | 1d | 2027-01-07 A | 2027-01-07 A | 4-ARC-1402 | 100% |  |  |

| ID | WBS | Activity | Duration | Start | Finish | Predecessors | Complete |
| --- | --- | --- | --- | --- | --- | --- | --- |
|  | STR | **Structure and civils (CKE)** |  | 2026-11-30 | 2027-01-05 |  |  |
| 4-STR-1300 |  | Develop below-ground drainage layout | 12d | 2026-11-30 A | 2026-12-15 A | 4-GEN-1030 | 100% |
| 4-STR-1400 |  | Develop drainage and SuDS calculations | 10d | 2026-12-02 A | 2026-12-15 A | 4-STR-1300 SS+2d | 100% |
| 4-STR-1010 |  | Develop structural model (foundations and module interfaces) | 11d | 2026-12-03 A | 2026-12-17 A | 4-ARC-1010 SS+3d, 4-GEN-1030 | 100% |
| 4-STR-1200 |  | Develop structural calculations | 12d | 2026-12-07 A | 2026-12-22 A | 4-STR-1010 SS+2d | 100% |
| 4-STR-1100 |  | Develop foundation layout | 9d | 2026-12-08 A | 2026-12-18 A | 4-STR-1010 SS+3d | 100% |
| 4-STR-1301 |  | Check and approve below-ground drainage layout | 2d | 2026-12-16 A | 2026-12-17 A | 4-STR-1300 | 100% |
| 4-STR-1401 |  | Check and approve drainage and SuDS calculations | 2d | 2026-12-16 A | 2026-12-17 A | 4-STR-1400 | 100% |
| 4-STR-1011 |  | Check and approve structural model (foundations and module interfaces) | 2d | 2026-12-18 A | 2026-12-21 A | 4-STR-1010 | 100% |
| 4-STR-1305 |  | Issue below-ground drainage layout | 1d | 2026-12-18 A | 2026-12-18 A | 4-STR-1301 | 100% |
| 4-STR-1405 |  | Issue drainage and SuDS calculations | 1d | 2026-12-18 A | 2026-12-18 A | 4-STR-1401 | 100% |
| 4-STR-1101 |  | Check and approve foundation layout | 2d | 2026-12-21 A | 2026-12-22 A | 4-STR-1100 | 100% |
| 4-STR-1015 |  | Issue structural model (foundations and module interfaces) | 1d | 2026-12-22 A | 2026-12-22 A | 4-STR-1011 | 100% |
| 4-STR-1105 |  | Issue foundation layout | 1d | 2026-12-23 A | 2026-12-23 A | 4-STR-1101 | 100% |
| 4-STR-1201 |  | Check and approve structural calculations | 2d | 2026-12-23 A | 2027-01-04 A | 4-STR-1200 | 100% |
| 4-STR-1205 |  | Issue structural calculations | 1d | 2027-01-05 A | 2027-01-05 A | 4-STR-1201 | 100% |
|  | MEP | **Building services (KBS)** |  | 2026-11-30 | 2027-01-13 |  |  |
| 4-MEP-1000 |  | Heating, cooling and ventilation load calculations | 5d | 2026-11-30 A | 2026-12-04 A | 4-GEN-1010 | 100% |
| 4-MEP-1500 |  | Develop building services specification | 15d | 2026-12-02 A | 2026-12-22 A | 4-MEP-1000 SS+2d | 100% |
| 4-MEP-1001 |  | Plant selection (AHU, air source heat pumps, LV switchgear) | 5d | 2026-12-07 A | 2026-12-11 A | 4-MEP-1000 | 100% |
| 4-MEP-1010 |  | Develop mechanical model | 13d | 2026-12-07 A | 2026-12-23 A | 4-MEP-1000, 4-ARC-1010 SS+3d | 100% |
| 4-MEP-1020 |  | Develop electrical model | 13d | 2026-12-07 A | 2026-12-23 A | 4-MEP-1000, 4-ARC-1010 SS+3d | 100% |
| 4-MEP-1030 |  | Develop public health model | 13d | 2026-12-07 A | 2026-12-23 A | 4-MEP-1000, 4-ARC-1010 SS+3d | 100% |
| 4-MEP-1100 |  | Develop ventilation schematic | 7d | 2026-12-14 A | 2026-12-22 A | 4-MEP-1001 | 100% |
| 4-MEP-1200 |  | Develop electrical distribution schematic | 7d | 2026-12-14 A | 2026-12-22 A | 4-MEP-1001 | 100% |
| 4-MEP-1300 |  | Develop hot and cold water schematic (TMVs) | 7d | 2026-12-14 A | 2026-12-22 A | 4-MEP-1001 | 100% |
| 4-MEP-1400 |  | Develop integration specification (connected systems) | 12d | 2026-12-14 A | 2027-01-07 A | 4-MEP-1001 | 100% |
| 4-MEP-1101 |  | Check and approve ventilation schematic | 2d | 2026-12-23 A | 2027-01-04 A | 4-MEP-1100 | 100% |
| 4-MEP-1201 |  | Check and approve electrical distribution schematic | 2d | 2026-12-23 A | 2027-01-04 A | 4-MEP-1200 | 100% |
| 4-MEP-1301 |  | Check and approve hot and cold water schematic (TMVs) | 2d | 2026-12-23 A | 2027-01-04 A | 4-MEP-1300 | 100% |
| 4-MEP-1501 |  | Check and approve building services specification | 2d | 2026-12-23 A | 2027-01-04 A | 4-MEP-1500 | 100% |
| 4-MEP-1011 |  | Check and approve mechanical model | 2d | 2027-01-04 A | 2027-01-05 A | 4-MEP-1010 | 100% |
| 4-MEP-1021 |  | Check and approve electrical model | 2d | 2027-01-04 A | 2027-01-05 A | 4-MEP-1020 | 100% |
| 4-MEP-1031 |  | Check and approve public health model | 2d | 2027-01-04 A | 2027-01-05 A | 4-MEP-1030 | 100% |
| 4-MEP-1105 |  | Issue ventilation schematic | 1d | 2027-01-05 A | 2027-01-05 A | 4-MEP-1101 | 100% |
| 4-MEP-1205 |  | Issue electrical distribution schematic | 1d | 2027-01-05 A | 2027-01-05 A | 4-MEP-1201 | 100% |
| 4-MEP-1305 |  | Issue hot and cold water schematic (TMVs) | 1d | 2027-01-05 A | 2027-01-05 A | 4-MEP-1301 | 100% |
| 4-MEP-1505 |  | Issue building services specification | 1d | 2027-01-05 A | 2027-01-05 A | 4-MEP-1501 | 100% |
| 4-MEP-1015 |  | Issue mechanical model | 1d | 2027-01-06 A | 2027-01-06 A | 4-MEP-1011 | 100% |
| 4-MEP-1025 |  | Issue electrical model | 1d | 2027-01-06 A | 2027-01-06 A | 4-MEP-1021 | 100% |
| 4-MEP-1035 |  | Issue public health model | 1d | 2027-01-06 A | 2027-01-06 A | 4-MEP-1031 | 100% |
| 4-MEP-1401 |  | Check and approve integration specification (connected systems) | 2d | 2027-01-08 A | 2027-01-11 A | 4-MEP-1400 | 100% |
| 4-MEP-1402 |  | IT/OT security review of integration specification (connected systems) | 1d | 2027-01-12 A | 2027-01-12 A | 4-MEP-1401 | 100% |
| 4-MEP-1405 |  | Issue integration specification (connected systems) | 1d | 2027-01-13 A | 2027-01-13 A | 4-MEP-1402 | 100% |

| ID | WBS | Activity | Type | Duration | Start | Finish | Predecessors | Complete |
| --- | --- | --- | --- | --- | --- | --- | --- | --- |
|  | MOD | **Module design (HXM)** |  |  | 2026-12-02 | 2026-12-23 |  |  |
| 4-MOD-1000 |  | Module grid, transport envelope and interface design |  | 5d | 2026-12-02 A | 2026-12-08 A | 4-ARC-1010 SS+2d | 100% |
| 4-MOD-1010 |  | Develop module fabrication model |  | 7d | 2026-12-09 A | 2026-12-17 A | 4-MOD-1000 | 100% |
| 4-MOD-1100 |  | Develop module layout and setting-out drawing |  | 6d | 2026-12-09 A | 2026-12-16 A | 4-MOD-1000 | 100% |
| 4-MOD-1200 |  | Develop module schedule |  | 5d | 2026-12-09 A | 2026-12-15 A | 4-MOD-1000 | 100% |
| 4-MOD-1201 |  | Check and approve module schedule |  | 2d | 2026-12-16 A | 2026-12-17 A | 4-MOD-1200 | 100% |
| 4-MOD-1101 |  | Check and approve module layout and setting-out drawing |  | 2d | 2026-12-17 A | 2026-12-18 A | 4-MOD-1100 | 100% |
| 4-MOD-1011 |  | Check and approve module fabrication model |  | 2d | 2026-12-18 A | 2026-12-21 A | 4-MOD-1010 | 100% |
| 4-MOD-1205 |  | Issue module schedule |  | 1d | 2026-12-18 A | 2026-12-18 A | 4-MOD-1201 | 100% |
| 4-MOD-1105 |  | Issue module layout and setting-out drawing |  | 1d | 2026-12-21 A | 2026-12-21 A | 4-MOD-1101 | 100% |
| 4-MOD-1015 |  | Issue module fabrication model |  | 1d | 2026-12-22 A | 2026-12-22 A | 4-MOD-1011 | 100% |
| 4-MOD-1900 |  | Module design freeze | milestone | 0d | 2026-12-23 A | 2026-12-23 A | 4-MOD-1015, 4-MOD-1105, 4-MOD-1205, 4-STR-1105 | 100% |
|  | COO | **Coordination and information management (BMC)** |  |  | 2026-11-25 | 2027-01-14 |  |  |
| 4-COO-1000 |  | Develop first contract programme |  | 10d | 2026-11-25 A | 2026-12-08 A | M-203-AW | 100% |
| 4-COO-1100 |  | Develop construction phase plan |  | 15d | 2026-11-25 A | 2026-12-15 A | M-203-AW | 100% |
| 4-COO-1001 |  | Check and approve first contract programme |  | 1d | 2026-12-09 A | 2026-12-09 A | 4-COO-1000 | 100% |
| 4-COO-2100 |  | Federate models, clash round 1 |  | 1d | 2026-12-09 A | 2026-12-09 A | 4-ARC-1010 SS+7d, 4-GEN-1020 | 100% |
| 4-COO-1005 |  | Issue first contract programme |  | 1d | 2026-12-10 A | 2026-12-10 A | 4-COO-1001 | 100% |
| 4-COO-2110 |  | Run clash detection, round 1 |  | 1d | 2026-12-10 A | 2026-12-10 A | 4-COO-2100 | 100% |
| 4-COO-2120 |  | Coordination workshop, round 1 |  | 1d | 2026-12-11 A | 2026-12-11 A | 4-COO-2110 | 100% |
| 4-COO-2130 |  | Resolve clashes, round 1 |  | 3d | 2026-12-14 A | 2026-12-16 A | 4-COO-2120 | 100% |
| 4-COO-1101 |  | Check and approve construction phase plan |  | 2d | 2026-12-16 A | 2026-12-17 A | 4-COO-1100 | 100% |
| 4-COO-2200 |  | Federate models, clash round 2 |  | 1d | 2026-12-17 A | 2026-12-17 A | 4-ARC-1010 SS+12d, 4-COO-2130 | 100% |
| 4-COO-1105 |  | Issue construction phase plan |  | 1d | 2026-12-18 A | 2026-12-18 A | 4-COO-1101 | 100% |
| 4-COO-2210 |  | Run clash detection, round 2 |  | 1d | 2026-12-18 A | 2026-12-18 A | 4-COO-2200 | 100% |
| 4-COO-2220 |  | Coordination workshop, round 2 |  | 1d | 2026-12-21 A | 2026-12-21 A | 4-COO-2210 | 100% |
| 4-COO-2230 |  | Resolve clashes, round 2 |  | 3d | 2026-12-22 A | 2027-01-04 A | 4-COO-2220 | 100% |
| 4-COO-2300 |  | Federate models, clash round 3 |  | 1d | 2027-01-05 A | 2027-01-05 A | 4-ARC-1010 SS+17d, 4-COO-2230 | 100% |
| 4-COO-2310 |  | Run clash detection, round 3 |  | 1d | 2027-01-06 A | 2027-01-06 A | 4-COO-2300 | 100% |
| 4-COO-2320 |  | Coordination workshop, round 3 |  | 1d | 2027-01-07 A | 2027-01-07 A | 4-COO-2310 | 100% |
| 4-COO-2330 |  | Resolve clashes, round 3 |  | 2d | 2027-01-08 A | 2027-01-11 A | 4-COO-2320 | 100% |
| 4-COO-3000 |  | Develop federated model (Stage 4) |  | 1d | 2027-01-12 A | 2027-01-12 A | 4-COO-2330, 4-ARC-1015, 4-STR-1015, 4-MEP-1015, 4-MEP-1025, 4-MEP-1035 | 100% |
| 4-COO-3100 |  | Develop clash detection report (Stage 4) |  | 1d | 2027-01-12 A | 2027-01-12 A | 4-COO-2330 | 100% |
| 4-COO-3001 |  | Check and approve federated model (Stage 4) |  | 1d | 2027-01-13 A | 2027-01-13 A | 4-COO-3000 | 100% |
| 4-COO-3101 |  | Check and approve clash detection report (Stage 4) |  | 1d | 2027-01-13 A | 2027-01-13 A | 4-COO-3100 | 100% |
| 4-COO-3005 |  | Issue federated model (Stage 4) |  | 1d | 2027-01-14 A | 2027-01-14 A | 4-COO-3001 | 100% |
| 4-COO-3105 |  | Issue clash detection report (Stage 4) |  | 1d | 2027-01-14 A | 2027-01-14 A | 4-COO-3101 | 100% |

| ID | WBS | Activity | Type | Duration | Start | Finish | Predecessors | Complete |
| --- | --- | --- | --- | --- | --- | --- | --- | --- |
|  | APP | **Statutory approvals** |  |  | 2026-12-21 | 2027-02-09 |  |  |
| 4-APP-1110 |  | Submit planning condition discharge: drainage and SuDS |  | 1d | 2026-12-21 A | 2026-12-21 A | 4-STR-1405 | 100% |
| 4-APP-1115 |  | Planning authority determination: drainage and SuDS |  | 25d | 2026-12-22 A | 2027-02-03 A | 4-APP-1110 | 100% |
| 4-APP-1120 |  | Submit planning condition discharge: landscaping |  | 1d | 2026-12-23 A | 2026-12-23 A | 4-ARC-2305 | 100% |
| 4-APP-1125 |  | Planning authority determination: landscaping |  | 25d | 2027-01-04 A | 2027-02-05 A | 4-APP-1120 | 100% |
| 4-APP-1100 |  | Submit planning condition discharge: materials and external appearance |  | 1d | 2027-01-05 A | 2027-01-05 A | 4-ARC-1705 | 100% |
| 4-APP-1000 |  | Building control full plans submission |  | 1d | 2027-01-06 A | 2027-01-06 A | 4-ARC-1015, 4-ARC-2205, 4-STR-1205 | 100% |
| 4-APP-1105 |  | Planning authority determination: materials and external appearance |  | 25d | 2027-01-06 A | 2027-02-09 A | 4-APP-1100 | 100% |
| 4-APP-1010 |  | Building control plan check |  | 20d | 2027-01-07 A | 2027-02-03 A | 4-APP-1000 | 100% |
| 4-APP-1200 |  | Client Stage 4 sign-off |  | 3d | 2027-01-18 A | 2027-01-20 A | M-203-S4 | 100% |
| 4-APP-1020 |  | Building control full plans approval | milestone | 0d | 2027-02-03 A | 2027-02-03 A | 4-APP-1010 | 100% |
|  | 5 | **RIBA Stage 5 Manufacturing and Construction** |  |  | 2026-12-23 | 2027-05-27 |  |  |
|  | PRC | **Procurement** |  |  | 2026-12-23 | 2027-03-24 |  |  |
| 5-PRC-1120 |  | Tender and award: External lighting |  | 10d | 2026-12-23 A | 2027-01-14 A | 4-ARC-2305 | 100% |
| 5-PRC-1000 |  | Tender and award: Air handling unit |  | 10d | 2027-01-06 A | 2027-01-19 A | 4-MEP-1105 | 100% |
| 5-PRC-1010 |  | Tender and award: Air source heat pumps |  | 10d | 2027-01-06 A | 2027-01-19 A | 4-MEP-1105 | 100% |
| 5-PRC-1020 |  | Tender and award: LV switchgear and distribution boards |  | 10d | 2027-01-06 A | 2027-01-19 A | 4-MEP-1205 | 100% |
| 5-PRC-1040 |  | Tender and award: Fire detection and alarm |  | 10d | 2027-01-06 A | 2027-01-19 A | 4-MEP-1505 | 100% |
| 5-PRC-1050 |  | Tender and award: Nurse call and assistance call |  | 10d | 2027-01-06 A | 2027-01-19 A | 4-MEP-1505 | 100% |
| 5-PRC-1060 |  | Tender and award: Emergency lighting |  | 10d | 2027-01-06 A | 2027-01-19 A | 4-MEP-1505 | 100% |
| 5-PRC-1070 |  | Tender and award: Luminaires |  | 10d | 2027-01-06 A | 2027-01-19 A | 4-MEP-1505 | 100% |
| 5-PRC-1080 |  | Tender and award: TMVs and sanitaryware |  | 10d | 2027-01-06 A | 2027-01-19 A | 4-MEP-1305 | 100% |
| 5-PRC-1090 |  | Tender and award: Roof membrane |  | 10d | 2027-01-06 A | 2027-01-19 A | 4-ARC-2105 | 100% |
| 5-PRC-1100 |  | Tender and award: Cladding junction kits |  | 10d | 2027-01-06 A | 2027-01-19 A | 4-ARC-2105 | 100% |
| 5-PRC-1110 |  | Tender and award: External doors and entrance canopy |  | 10d | 2027-01-06 A | 2027-01-19 A | 4-ARC-2105 | 100% |
| 5-PRC-1030 |  | Tender and award: BMS controls and integration gateway |  | 10d | 2027-01-14 A | 2027-01-27 A | 4-MEP-1405 | 100% |
| 5-PRC-1121 |  | Submittals and approval: External lighting |  | 5d | 2027-01-15 A | 2027-01-21 A | 5-PRC-1120 | 100% |
| 5-PRC-1001 |  | Submittals and approval: Air handling unit |  | 5d | 2027-01-20 A | 2027-01-26 A | 5-PRC-1000 | 100% |
| 5-PRC-1011 |  | Submittals and approval: Air source heat pumps |  | 5d | 2027-01-20 A | 2027-01-26 A | 5-PRC-1010 | 100% |
| 5-PRC-1021 |  | Submittals and approval: LV switchgear and distribution boards |  | 5d | 2027-01-20 A | 2027-01-26 A | 5-PRC-1020 | 100% |
| 5-PRC-1041 |  | Submittals and approval: Fire detection and alarm |  | 5d | 2027-01-20 A | 2027-01-26 A | 5-PRC-1040 | 100% |
| 5-PRC-1051 |  | Submittals and approval: Nurse call and assistance call |  | 5d | 2027-01-20 A | 2027-01-26 A | 5-PRC-1050 | 100% |
| 5-PRC-1061 |  | Submittals and approval: Emergency lighting |  | 5d | 2027-01-20 A | 2027-01-26 A | 5-PRC-1060 | 100% |
| 5-PRC-1071 |  | Submittals and approval: Luminaires |  | 5d | 2027-01-20 A | 2027-01-26 A | 5-PRC-1070 | 100% |
| 5-PRC-1081 |  | Submittals and approval: TMVs and sanitaryware |  | 5d | 2027-01-20 A | 2027-01-26 A | 5-PRC-1080 | 100% |
| 5-PRC-1091 |  | Submittals and approval: Roof membrane |  | 5d | 2027-01-20 A | 2027-01-26 A | 5-PRC-1090 | 100% |
| 5-PRC-1101 |  | Submittals and approval: Cladding junction kits |  | 5d | 2027-01-20 A | 2027-01-26 A | 5-PRC-1100 | 100% |
| 5-PRC-1111 |  | Submittals and approval: External doors and entrance canopy |  | 5d | 2027-01-20 A | 2027-01-26 A | 5-PRC-1110 | 100% |
| 5-PRC-1122 |  | Manufacture: External lighting |  | 15d | 2027-01-22 A | 2027-02-11 A | 5-PRC-1121 | 100% |
| 5-PRC-1002 |  | Manufacture: Air handling unit |  | 40d | 2027-01-27 A | 2027-03-23 A | 5-PRC-1001 | 100% |
| 5-PRC-1012 |  | Manufacture: Air source heat pumps |  | 35d | 2027-01-27 A | 2027-03-16 A | 5-PRC-1011 | 100% |
| 5-PRC-1022 |  | Manufacture: LV switchgear and distribution boards |  | 30d | 2027-01-27 A | 2027-03-09 A | 5-PRC-1021 | 100% |
| 5-PRC-1042 |  | Manufacture: Fire detection and alarm |  | 20d | 2027-01-27 A | 2027-02-23 A | 5-PRC-1041 | 100% |
| 5-PRC-1052 |  | Manufacture: Nurse call and assistance call |  | 20d | 2027-01-27 A | 2027-02-23 A | 5-PRC-1051 | 100% |
| 5-PRC-1062 |  | Manufacture: Emergency lighting |  | 15d | 2027-01-27 A | 2027-02-16 A | 5-PRC-1061 | 100% |
| 5-PRC-1072 |  | Manufacture: Luminaires |  | 15d | 2027-01-27 A | 2027-02-16 A | 5-PRC-1071 | 100% |
| 5-PRC-1082 |  | Manufacture: TMVs and sanitaryware |  | 15d | 2027-01-27 A | 2027-02-16 A | 5-PRC-1081 | 100% |
| 5-PRC-1092 |  | Manufacture: Roof membrane |  | 10d | 2027-01-27 A | 2027-02-09 A | 5-PRC-1091 | 100% |
| 5-PRC-1102 |  | Manufacture: Cladding junction kits |  | 15d | 2027-01-27 A | 2027-02-16 A | 5-PRC-1101 | 100% |
| 5-PRC-1112 |  | Manufacture: External doors and entrance canopy |  | 20d | 2027-01-27 A | 2027-02-23 A | 5-PRC-1111 | 100% |
| 5-PRC-1031 |  | Submittals and approval: BMS controls and integration gateway |  | 5d | 2027-01-28 A | 2027-02-03 A | 5-PRC-1030 | 100% |
| 5-PRC-1032 |  | Manufacture: BMS controls and integration gateway |  | 20d | 2027-02-04 A | 2027-03-03 A | 5-PRC-1031 | 100% |
| 5-PRC-1093 |  | Deliver: Roof membrane |  | 1d | 2027-02-10 A | 2027-02-10 A | 5-PRC-1092 | 100% |
| 5-PRC-1123 |  | Deliver: External lighting |  | 1d | 2027-02-12 A | 2027-02-12 A | 5-PRC-1122 | 100% |
| 5-PRC-1063 |  | Deliver: Emergency lighting |  | 1d | 2027-02-17 A | 2027-02-17 A | 5-PRC-1062 | 100% |
| 5-PRC-1073 |  | Deliver: Luminaires |  | 1d | 2027-02-17 A | 2027-02-17 A | 5-PRC-1072 | 100% |
| 5-PRC-1083 |  | Deliver: TMVs and sanitaryware |  | 1d | 2027-02-17 A | 2027-02-17 A | 5-PRC-1082 | 100% |
| 5-PRC-1103 |  | Deliver: Cladding junction kits |  | 1d | 2027-02-17 A | 2027-02-17 A | 5-PRC-1102 | 100% |
| 5-PRC-1043 |  | Deliver: Fire detection and alarm |  | 1d | 2027-02-24 A | 2027-02-24 A | 5-PRC-1042 | 100% |
| 5-PRC-1053 |  | Deliver: Nurse call and assistance call |  | 1d | 2027-02-24 A | 2027-02-24 A | 5-PRC-1052 | 100% |
| 5-PRC-1113 |  | Deliver: External doors and entrance canopy |  | 1d | 2027-02-24 A | 2027-02-24 A | 5-PRC-1112 | 100% |
| 5-PRC-1033 |  | Deliver: BMS controls and integration gateway |  | 1d | 2027-03-04 A | 2027-03-04 A | 5-PRC-1032 | 100% |
| 5-PRC-1023 |  | Deliver: LV switchgear and distribution boards |  | 1d | 2027-03-10 A | 2027-03-10 A | 5-PRC-1022 | 100% |
| 5-PRC-1013 |  | Deliver: Air source heat pumps |  | 1d | 2027-03-17 A | 2027-03-17 A | 5-PRC-1012 | 100% |
| 5-PRC-1003 |  | Deliver: Air handling unit |  | 1d | 2027-03-24 A | 2027-03-24 A | 5-PRC-1002 | 100% |

| ID | WBS | Activity | Duration | Start | Finish | Predecessors | Complete |
| --- | --- | --- | --- | --- | --- | --- | --- |
|  | FAB | **Factory production (HXM)** |  | 2027-01-04 | 2027-03-02 |  |  |
| 5-FAB-1000 |  | Factory production slot and jig set-up | 5d | 2027-01-04 A | 2027-01-08 A | 4-MOD-1900 | 100% |
| 5-FAB-1001 |  | Factory first-fix materials delivered | 3d | 2027-01-06 A | 2027-01-08 A | 4-MOD-1900, 4-MEP-1505 | 100% |
| 5-FAB-M010 |  | Module M01 (Z1): Chassis and floor cassette | 4d | 2027-01-11 A | 2027-01-14 A | 5-FAB-1000 | 100% |
| 5-FAB-M020 |  | Module M02 (Z1): Chassis and floor cassette | 4d | 2027-01-13 A | 2027-01-18 A | 5-FAB-1000, 5-FAB-M010 SS+2d | 100% |
| 5-FAB-M011 |  | Module M01 (Z1): Walls, roof and windows | 4d | 2027-01-15 A | 2027-01-20 A | 5-FAB-M010 | 100% |
| 5-FAB-M030 |  | Module M03 (Z1): Chassis and floor cassette | 4d | 2027-01-15 A | 2027-01-20 A | 5-FAB-1000, 5-FAB-M020 SS+2d | 100% |
| 5-FAB-M021 |  | Module M02 (Z1): Walls, roof and windows | 4d | 2027-01-19 A | 2027-01-22 A | 5-FAB-M020, 5-FAB-M011 SS+2d | 100% |
| 5-FAB-M040 |  | Module M04 (Z2): Chassis and floor cassette | 4d | 2027-01-19 A | 2027-01-22 A | 5-FAB-1000, 5-FAB-M030 SS+2d | 100% |
| 5-FAB-M012 |  | Module M01 (Z1): First-fix M&E and linings | 5d | 2027-01-21 A | 2027-01-27 A | 5-FAB-M011, 5-FAB-1001 | 100% |
| 5-FAB-M031 |  | Module M03 (Z1): Walls, roof and windows | 4d | 2027-01-21 A | 2027-01-26 A | 5-FAB-M030, 5-FAB-M021 SS+2d | 100% |
| 5-FAB-M050 |  | Module M05 (Z2): Chassis and floor cassette | 4d | 2027-01-21 A | 2027-01-26 A | 5-FAB-1000, 5-FAB-M040 SS+2d | 100% |
| 5-FAB-M022 |  | Module M02 (Z1): First-fix M&E and linings | 5d | 2027-01-25 A | 2027-01-29 A | 5-FAB-M021, 5-FAB-1001, 5-FAB-M012 SS+2d | 100% |
| 5-FAB-M041 |  | Module M04 (Z2): Walls, roof and windows | 4d | 2027-01-25 A | 2027-01-28 A | 5-FAB-M040, 5-FAB-M031 SS+2d | 100% |
| 5-FAB-M060 |  | Module M06 (Z2): Chassis and floor cassette | 4d | 2027-01-25 A | 2027-01-28 A | 5-FAB-1000, 5-FAB-M050 SS+2d | 100% |
| 5-FAB-M032 |  | Module M03 (Z1): First-fix M&E and linings | 5d | 2027-01-27 A | 2027-02-02 A | 5-FAB-M031, 5-FAB-1001, 5-FAB-M022 SS+2d | 100% |
| 5-FAB-M051 |  | Module M05 (Z2): Walls, roof and windows | 4d | 2027-01-27 A | 2027-02-01 A | 5-FAB-M050, 5-FAB-M041 SS+2d | 100% |
| 5-FAB-M070 |  | Module M07 (Z2): Chassis and floor cassette | 4d | 2027-01-27 A | 2027-02-01 A | 5-FAB-1000, 5-FAB-M060 SS+2d | 100% |
| 5-FAB-M013 |  | Module M01 (Z1): Factory QA inspection and ready to dispatch | 2d | 2027-01-28 A | 2027-01-29 A | 5-FAB-M012 | 100% |
| 5-FAB-M042 |  | Module M04 (Z2): First-fix M&E and linings | 5d | 2027-01-29 A | 2027-02-04 A | 5-FAB-M041, 5-FAB-1001, 5-FAB-M032 SS+2d | 100% |
| 5-FAB-M061 |  | Module M06 (Z2): Walls, roof and windows | 4d | 2027-01-29 A | 2027-02-03 A | 5-FAB-M060, 5-FAB-M051 SS+2d | 100% |
| 5-FAB-M080 |  | Module M08 (Z2): Chassis and floor cassette | 4d | 2027-01-29 A | 2027-02-03 A | 5-FAB-1000, 5-FAB-M070 SS+2d | 100% |
| 5-FAB-M023 |  | Module M02 (Z1): Factory QA inspection and ready to dispatch | 2d | 2027-02-01 A | 2027-02-02 A | 5-FAB-M022, 5-FAB-M013 SS+2d | 100% |
| 5-FAB-M052 |  | Module M05 (Z2): First-fix M&E and linings | 5d | 2027-02-02 A | 2027-02-08 A | 5-FAB-M051, 5-FAB-1001, 5-FAB-M042 SS+2d | 100% |
| 5-FAB-M071 |  | Module M07 (Z2): Walls, roof and windows | 4d | 2027-02-02 A | 2027-02-05 A | 5-FAB-M070, 5-FAB-M061 SS+2d | 100% |
| 5-FAB-M090 |  | Module M09 (Z2): Chassis and floor cassette | 4d | 2027-02-02 A | 2027-02-05 A | 5-FAB-1000, 5-FAB-M080 SS+2d | 100% |
| 5-FAB-M033 |  | Module M03 (Z1): Factory QA inspection and ready to dispatch | 2d | 2027-02-03 A | 2027-02-04 A | 5-FAB-M032, 5-FAB-M023 SS+2d | 100% |
| 5-FAB-M062 |  | Module M06 (Z2): First-fix M&E and linings | 5d | 2027-02-04 A | 2027-02-10 A | 5-FAB-M061, 5-FAB-1001, 5-FAB-M052 SS+2d | 100% |
| 5-FAB-M081 |  | Module M08 (Z2): Walls, roof and windows | 4d | 2027-02-04 A | 2027-02-09 A | 5-FAB-M080, 5-FAB-M071 SS+2d | 100% |
| 5-FAB-M100 |  | Module M10 (Z3): Chassis and floor cassette | 4d | 2027-02-04 A | 2027-02-09 A | 5-FAB-1000, 5-FAB-M090 SS+2d | 100% |
| 5-FAB-M043 |  | Module M04 (Z2): Factory QA inspection and ready to dispatch | 2d | 2027-02-05 A | 2027-02-08 A | 5-FAB-M042, 5-FAB-M033 SS+2d | 100% |
| 5-FAB-M072 |  | Module M07 (Z2): First-fix M&E and linings | 5d | 2027-02-08 A | 2027-02-12 A | 5-FAB-M071, 5-FAB-1001, 5-FAB-M062 SS+2d | 100% |
| 5-FAB-M091 |  | Module M09 (Z2): Walls, roof and windows | 4d | 2027-02-08 A | 2027-02-11 A | 5-FAB-M090, 5-FAB-M081 SS+2d | 100% |
| 5-FAB-M110 |  | Module M11 (Z3): Chassis and floor cassette | 4d | 2027-02-08 A | 2027-02-11 A | 5-FAB-1000, 5-FAB-M100 SS+2d | 100% |
| 5-FAB-M053 |  | Module M05 (Z2): Factory QA inspection and ready to dispatch | 2d | 2027-02-09 A | 2027-02-10 A | 5-FAB-M052, 5-FAB-M043 SS+2d | 100% |
| 5-FAB-M082 |  | Module M08 (Z2): First-fix M&E and linings | 5d | 2027-02-10 A | 2027-02-16 A | 5-FAB-M081, 5-FAB-1001, 5-FAB-M072 SS+2d | 100% |
| 5-FAB-M101 |  | Module M10 (Z3): Walls, roof and windows | 4d | 2027-02-10 A | 2027-02-15 A | 5-FAB-M100, 5-FAB-M091 SS+2d | 100% |
| 5-FAB-M120 |  | Module M12 (Z4): Chassis and floor cassette | 4d | 2027-02-10 A | 2027-02-15 A | 5-FAB-1000, 5-FAB-M110 SS+2d | 100% |
| 5-FAB-M063 |  | Module M06 (Z2): Factory QA inspection and ready to dispatch | 2d | 2027-02-11 A | 2027-02-12 A | 5-FAB-M062, 5-FAB-M053 SS+2d | 100% |
| 5-FAB-M092 |  | Module M09 (Z2): First-fix M&E and linings | 5d | 2027-02-12 A | 2027-02-18 A | 5-FAB-M091, 5-FAB-1001, 5-FAB-M082 SS+2d | 100% |
| 5-FAB-M111 |  | Module M11 (Z3): Walls, roof and windows | 4d | 2027-02-12 A | 2027-02-17 A | 5-FAB-M110, 5-FAB-M101 SS+2d | 100% |
| 5-FAB-M073 |  | Module M07 (Z2): Factory QA inspection and ready to dispatch | 2d | 2027-02-15 A | 2027-02-16 A | 5-FAB-M072, 5-FAB-M063 SS+2d | 100% |
| 5-FAB-M102 |  | Module M10 (Z3): First-fix M&E and linings | 5d | 2027-02-16 A | 2027-02-22 A | 5-FAB-M101, 5-FAB-1001, 5-FAB-M092 SS+2d | 100% |
| 5-FAB-M121 |  | Module M12 (Z4): Walls, roof and windows | 4d | 2027-02-16 A | 2027-02-19 A | 5-FAB-M120, 5-FAB-M111 SS+2d | 100% |
| 5-FAB-M083 |  | Module M08 (Z2): Factory QA inspection and ready to dispatch | 2d | 2027-02-17 A | 2027-02-18 A | 5-FAB-M082, 5-FAB-M073 SS+2d | 100% |
| 5-FAB-M112 |  | Module M11 (Z3): First-fix M&E and linings | 5d | 2027-02-18 A | 2027-02-24 A | 5-FAB-M111, 5-FAB-1001, 5-FAB-M102 SS+2d | 100% |
| 5-FAB-M093 |  | Module M09 (Z2): Factory QA inspection and ready to dispatch | 2d | 2027-02-19 A | 2027-02-22 A | 5-FAB-M092, 5-FAB-M083 SS+2d | 100% |
| 5-FAB-M122 |  | Module M12 (Z4): First-fix M&E and linings | 5d | 2027-02-22 A | 2027-02-26 A | 5-FAB-M121, 5-FAB-1001, 5-FAB-M112 SS+2d | 100% |
| 5-FAB-M103 |  | Module M10 (Z3): Factory QA inspection and ready to dispatch | 2d | 2027-02-23 A | 2027-02-24 A | 5-FAB-M102, 5-FAB-M093 SS+2d | 100% |
| 5-FAB-M113 |  | Module M11 (Z3): Factory QA inspection and ready to dispatch | 2d | 2027-02-25 A | 2027-02-26 A | 5-FAB-M112, 5-FAB-M103 SS+2d | 100% |
| 5-FAB-M123 |  | Module M12 (Z4): Factory QA inspection and ready to dispatch | 2d | 2027-03-01 A | 2027-03-02 A | 5-FAB-M122, 5-FAB-M113 SS+2d | 100% |

| ID | WBS | Activity | Duration | Start | Finish | Predecessors | Complete | Constraint |
| --- | --- | --- | --- | --- | --- | --- | --- | --- |
|  | ENB | **Enabling works** |  | 2027-01-04 | 2027-01-22 |  |  |  |
| 5-ENB-1000 |  | Site set-up and welfare | 5d | 2027-01-04 A | 2027-01-08 A | 4-COO-1105 | 100% | start on or after 2027-01-04 |
| 5-ENB-1010 |  | Hoarding and site security | 3d | 2027-01-05 A | 2027-01-07 A | 5-ENB-1000 SS+1d | 100% |  |
| 5-ENB-1020 |  | Temporary services | 4d | 2027-01-06 A | 2027-01-11 A | 5-ENB-1000 SS+2d | 100% |  |
| 5-ENB-1030 |  | Setting out from survey control SP-01 | 2d | 2027-01-11 A | 2027-01-12 A | 5-ENB-1000 | 100% |  |
| 5-ENB-1040 |  | Utilities diversions within the plot | 8d | 2027-01-13 A | 2027-01-22 A | 5-ENB-1030 | 100% |  |
| 5-ENB-1050 |  | Haul road and crane hardstanding | 4d | 2027-01-13 A | 2027-01-18 A | 5-ENB-1030 | 100% |  |
|  | SUB | **Substructure and below-ground drainage** |  | 2027-01-13 | 2027-02-23 |  |  |  |
| 5-SUB-1000 |  | Excavate foundations, Z1 | 5d | 2027-01-13 A | 2027-01-19 A | 5-ENB-1030, 4-STR-1105, 5-ENB-1010, 5-ENB-1020 | 100% |  |
| 5-SUB-1100 |  | Excavate foundations, Z2 | 5d | 2027-01-18 A | 2027-01-22 A | 5-ENB-1030, 4-STR-1105, 5-SUB-1000 SS+3d | 100% |  |
| 5-SUB-1010 |  | Pad foundations and ground beams, Z1 | 10d | 2027-01-20 A | 2027-02-02 A | 5-SUB-1000 | 100% |  |
| 5-SUB-1200 |  | Excavate foundations, Z3 | 5d | 2027-01-21 A | 2027-01-27 A | 5-ENB-1030, 4-STR-1105, 5-SUB-1100 SS+3d | 100% |  |
| 5-SUB-1110 |  | Pad foundations and ground beams, Z2 | 10d | 2027-01-25 A | 2027-02-05 A | 5-SUB-1100 | 100% |  |
| 5-SUB-1600 |  | Below-ground drainage | 20d | 2027-01-25 A | 2027-02-19 A | 5-ENB-1040, 4-STR-1305 | 100% |  |
| 5-SUB-1300 |  | Excavate foundations, Z4 | 5d | 2027-01-26 A | 2027-02-01 A | 5-ENB-1030, 4-STR-1105, 5-SUB-1200 SS+3d | 100% |  |
| 5-SUB-1210 |  | Pad foundations and ground beams, Z3 | 10d | 2027-01-28 A | 2027-02-10 A | 5-SUB-1200 | 100% |  |
| 5-SUB-1610 |  | Service ducts and building entry points | 5d | 2027-01-29 A | 2027-02-04 A | 5-SUB-1600 SS+4d | 100% |  |
| 5-SUB-1310 |  | Pad foundations and ground beams, Z4 | 10d | 2027-02-02 A | 2027-02-15 A | 5-SUB-1300 | 100% |  |
| 5-SUB-1020 |  | Backfill and module bearing check, Z1 | 2d | 2027-02-03 A | 2027-02-04 A | 5-SUB-1010 | 100% |  |
| 5-SUB-1120 |  | Backfill and module bearing check, Z2 | 2d | 2027-02-08 A | 2027-02-09 A | 5-SUB-1110 | 100% |  |
| 5-SUB-1220 |  | Backfill and module bearing check, Z3 | 2d | 2027-02-11 A | 2027-02-12 A | 5-SUB-1210 | 100% |  |
| 5-SUB-1320 |  | Backfill and module bearing check, Z4 | 2d | 2027-02-16 A | 2027-02-17 A | 5-SUB-1310 | 100% |  |
| 5-SUB-1500 |  | Plant base and roof plant support steelwork | 4d | 2027-02-16 A | 2027-02-19 A | 5-SUB-1310 | 100% |  |
| 5-SUB-1620 |  | Drainage CCTV survey | 2d | 2027-02-22 A | 2027-02-23 A | 5-SUB-1600 | 100% |  |

| ID | WBS | Activity | Type | Duration | Start | Finish | Predecessors | Complete | Constraint |
| --- | --- | --- | --- | --- | --- | --- | --- | --- | --- |
|  | MOD | **Module delivery and installation** |  |  | 2027-03-04 | 2027-03-25 |  |  |  |
| 5-MOD-1000 |  | Crane mobilisation and lift plan |  | 2d | 2027-03-04 A | 2027-03-05 A | 5-ENB-1050, 5-SUB-1020, 5-SUB-1120, 5-SUB-1220, 5-SUB-1320, 4-APP-1020, 4-APP-1105, 4-APP-1115, 4-APP-1125, 4-APP-1200 | 100% | start on or after 2027-03-04 |
| 5-MOD-M010 |  | Deliver and set module M01 (Z1) |  | 1d | 2027-03-08 A | 2027-03-08 A | 5-MOD-1000, 5-FAB-M013 | 100% |  |
| 5-MOD-M011 |  | Structural connections and seal joints, module M01 |  | 1d | 2027-03-09 A | 2027-03-09 A | 5-MOD-M010 | 100% |  |
| 5-MOD-M020 |  | Deliver and set module M02 (Z1) |  | 1d | 2027-03-09 A | 2027-03-09 A | 5-MOD-M010, 5-FAB-M023 | 100% |  |
| 5-MOD-M021 |  | Structural connections and seal joints, module M02 |  | 1d | 2027-03-10 A | 2027-03-10 A | 5-MOD-M020 | 100% |  |
| 5-MOD-M030 |  | Deliver and set module M03 (Z1) |  | 1d | 2027-03-10 A | 2027-03-10 A | 5-MOD-M020, 5-FAB-M033 | 100% |  |
| 5-MOD-M031 |  | Structural connections and seal joints, module M03 |  | 1d | 2027-03-11 A | 2027-03-11 A | 5-MOD-M030 | 100% |  |
| 5-MOD-M040 |  | Deliver and set module M04 (Z2) |  | 1d | 2027-03-11 A | 2027-03-11 A | 5-MOD-M030, 5-FAB-M043 | 100% |  |
| 5-MOD-M041 |  | Structural connections and seal joints, module M04 |  | 1d | 2027-03-12 A | 2027-03-12 A | 5-MOD-M040 | 100% |  |
| 5-MOD-M050 |  | Deliver and set module M05 (Z2) |  | 1d | 2027-03-12 A | 2027-03-12 A | 5-MOD-M040, 5-FAB-M053 | 100% |  |
| 5-MOD-M051 |  | Structural connections and seal joints, module M05 |  | 1d | 2027-03-15 A | 2027-03-15 A | 5-MOD-M050 | 100% |  |
| 5-MOD-M060 |  | Deliver and set module M06 (Z2) |  | 1d | 2027-03-15 A | 2027-03-15 A | 5-MOD-M050, 5-FAB-M063 | 100% |  |
| 5-MOD-M061 |  | Structural connections and seal joints, module M06 |  | 1d | 2027-03-16 A | 2027-03-16 A | 5-MOD-M060 | 100% |  |
| 5-MOD-M070 |  | Deliver and set module M07 (Z2) |  | 1d | 2027-03-16 A | 2027-03-16 A | 5-MOD-M060, 5-FAB-M073 | 100% |  |
| 5-MOD-M071 |  | Structural connections and seal joints, module M07 |  | 1d | 2027-03-17 A | 2027-03-17 A | 5-MOD-M070 | 100% |  |
| 5-MOD-M080 |  | Deliver and set module M08 (Z2) |  | 1d | 2027-03-17 A | 2027-03-17 A | 5-MOD-M070, 5-FAB-M083 | 100% |  |
| 5-MOD-M081 |  | Structural connections and seal joints, module M08 |  | 1d | 2027-03-18 A | 2027-03-18 A | 5-MOD-M080 | 100% |  |
| 5-MOD-M090 |  | Deliver and set module M09 (Z2) |  | 1d | 2027-03-18 A | 2027-03-18 A | 5-MOD-M080, 5-FAB-M093 | 100% |  |
| 5-MOD-M091 |  | Structural connections and seal joints, module M09 |  | 1d | 2027-03-19 A | 2027-03-19 A | 5-MOD-M090 | 100% |  |
| 5-MOD-M100 |  | Deliver and set module M10 (Z3) |  | 1d | 2027-03-19 A | 2027-03-19 A | 5-MOD-M090, 5-FAB-M103 | 100% |  |
| 5-MOD-M101 |  | Structural connections and seal joints, module M10 |  | 1d | 2027-03-22 A | 2027-03-22 A | 5-MOD-M100 | 100% |  |
| 5-MOD-M110 |  | Deliver and set module M11 (Z3) |  | 1d | 2027-03-22 A | 2027-03-22 A | 5-MOD-M100, 5-FAB-M113 | 100% |  |
| 5-MOD-M111 |  | Structural connections and seal joints, module M11 |  | 1d | 2027-03-23 A | 2027-03-23 A | 5-MOD-M110 | 100% |  |
| 5-MOD-M120 |  | Deliver and set module M12 (Z4) |  | 1d | 2027-03-23 A | 2027-03-23 A | 5-MOD-M110, 5-FAB-M123 | 100% |  |
| 5-MOD-M121 |  | Structural connections and seal joints, module M12 |  | 1d | 2027-03-24 A | 2027-03-24 A | 5-MOD-M120 | 100% |  |
| 5-MOD-1910 |  | Modules weathertight | milestone | 0d | 2027-03-24 A | 2027-03-24 A | 5-MOD-M121 | 100% |  |
| 5-MOD-1900 |  | Crane demobilisation |  | 1d | 2027-03-25 A | 2027-03-25 A | 5-MOD-M121 | 100% |  |

| ID | WBS | Activity | Duration | Start | Finish | Predecessors | Complete | Remaining | Total float |
| --- | --- | --- | --- | --- | --- | --- | --- | --- | --- |
|  | ENV | **Roof and envelope completion** |  | 2027-03-12 | 2027-04-06 |  |  |  |  |
| 5-ENV-1000 |  | Roof membrane over modules, Z1 | 4d | 2027-03-12 A | 2027-03-17 A | 5-MOD-M031, 5-PRC-1093, 5-MOD-M011, 5-MOD-M021 | 100% |  |  |
| 5-ENV-1010 |  | Cladding junctions and module joint covers, Z1 | 4d | 2027-03-12 A | 2027-03-17 A | 5-MOD-M031, 5-PRC-1103 | 100% |  |  |
| 5-ENV-1520 |  | External doors and entrance canopy | 4d | 2027-03-18 A | 2027-03-23 A | 5-ENV-1010, 5-PRC-1113 | 100% |  |  |
| 5-ENV-1100 |  | Roof membrane over modules, Z2 | 4d | 2027-03-22 A | 2027-03-25 A | 5-MOD-M091, 5-PRC-1093, 5-MOD-M041, 5-MOD-M051, 5-MOD-M061, 5-MOD-M071, 5-MOD-M081 | 100% |  |  |
| 5-ENV-1110 |  | Cladding junctions and module joint covers, Z2 | 4d | 2027-03-22 A | 2027-03-25 A | 5-MOD-M091, 5-PRC-1103 | 100% |  |  |
| 5-ENV-1200 |  | Roof membrane over modules, Z3 | 4d | 2027-03-24 A | 2027-03-31 A | 5-MOD-M111, 5-PRC-1093, 5-MOD-M101 | 100% |  |  |
| 5-ENV-1210 |  | Cladding junctions and module joint covers, Z3 | 4d | 2027-03-24 A | 2027-03-31 A | 5-MOD-M111, 5-PRC-1103 | 100% |  |  |
| 5-ENV-1300 |  | Roof membrane over modules, Z4 | 4d | 2027-03-25 A | 2027-04-01 A | 5-MOD-M121, 5-PRC-1093 | 100% |  |  |
| 5-ENV-1310 |  | Cladding junctions and module joint covers, Z4 | 4d | 2027-03-25 A | 2027-04-01 A | 5-MOD-M121, 5-PRC-1103 | 100% |  |  |
| 5-ENV-1500 |  | Roof plant platform and guarding | 3d | 2027-04-02 A | 2027-04-06 A | 5-ENV-1300, 5-SUB-1500 | 100% |  |  |
| 5-ENV-1510 |  | Rainwater goods | 3d | 2027-04-02 A | 2027-04-06 A | 5-ENV-1300 | 100% |  |  |
|  | INT | **Internal completion by zone** |  | 2027-03-25 | 2027-05-10 |  |  |  |  |
| 5-INT-1000 |  | Make good module joints, Z1 | 6d | 2027-03-25 A | 2027-04-05 A | 5-MOD-M121, 5-ENV-1000 | 100% |  |  |
| 5-INT-1400 |  | Make good module joints, corridor | 6d | 2027-03-25 A | 2027-04-05 A | 5-MOD-M121 | 100% |  |  |
| 5-INT-1100 |  | Make good module joints, Z2 | 6d | 2027-03-30 A | 2027-04-06 A | 5-MOD-M121, 5-ENV-1100 | 100% |  |  |
| 5-INT-1200 |  | Make good module joints, Z3 | 6d | 2027-04-01 A | 2027-04-08 A | 5-MOD-M121, 5-ENV-1200 | 100% |  |  |
| 5-INT-1300 |  | Make good module joints, Z4 | 6d | 2027-04-02 A | 2027-04-09 A | 5-MOD-M121, 5-ENV-1300 | 100% |  |  |
| 5-INT-1010 |  | Second-fix M&E connections, Z1 | 10d | 2027-04-06 A | 2027-04-19 A | 5-INT-1000, 5-MEP-1060 SS+3d | 100% |  |  |
| 5-INT-1410 |  | Second-fix M&E connections, corridor | 10d | 2027-04-06 A | 2027-04-19 A | 5-INT-1400, 5-MEP-1060 SS+3d | 100% |  |  |
| 5-INT-1110 |  | Second-fix M&E connections, Z2 | 10d | 2027-04-07 A | 2027-04-20 A | 5-INT-1100, 5-MEP-1060 SS+3d | 100% |  |  |
| 5-INT-1210 |  | Second-fix M&E connections, Z3 | 10d | 2027-04-09 A | 2027-04-22 A | 5-INT-1200, 5-MEP-1060 SS+3d | 100% |  |  |
| 5-INT-1310 |  | Second-fix M&E connections, Z4 | 10d | 2027-04-12 A | 2027-04-23 A | 5-INT-1300, 5-MEP-1060 SS+3d | 100% |  |  |
| 5-INT-1020 |  | Finishes at joints and floor coverings, Z1 | 8d | 2027-04-20 A | 2027-04-29 A | 5-INT-1010 | 100% |  |  |
| 5-INT-1420 |  | Finishes at joints and floor coverings, corridor | 8d | 2027-04-20 A | 2027-04-29 A | 5-INT-1410 | 100% |  |  |
| 5-INT-1120 |  | Finishes at joints and floor coverings, Z2 | 8d | 2027-04-21 A | 2027-04-30 A | 5-INT-1110 | 100% |  |  |
| 5-INT-1220 |  | Finishes at joints and floor coverings, Z3 | 8d | 2027-04-23 A | 2027-05-05 | 5-INT-1210 | 75% | 2d | 10d |
| 5-INT-1320 |  | Finishes at joints and floor coverings, Z4 | 8d | 2027-04-26 A | 2027-05-06 | 5-INT-1310 | 62% | 3d | 9d |
| 5-INT-1030 |  | Install sanitaryware and TMVs, Z1 | 3d | 2027-04-30 A | 2027-05-05 | 5-INT-1020, 5-PRC-1083 | 33% | 2d | 10d |
| 5-INT-1440 |  | Builder's clean, corridor | 2d | 2027-04-30 A | 2027-05-04 | 5-INT-1420 | 50% | 1d | 13d |
| 5-INT-1130 |  | Install sanitaryware and TMVs, Z2 | 3d | 2027-05-04 | 2027-05-06 | 5-INT-1120, 5-PRC-1083 |  |  | 2d |
| 5-INT-1040 |  | Builder's clean, Z1 | 2d | 2027-05-06 | 2027-05-07 | 5-INT-1030 |  |  | 10d |
| 5-INT-1240 |  | Builder's clean, Z3 | 2d | 2027-05-06 | 2027-05-07 | 5-INT-1220 |  |  | 10d |
| 5-INT-1140 |  | Builder's clean, Z2 | 2d | 2027-05-07 | 2027-05-10 | 5-INT-1130 |  |  | 9d |
| 5-INT-1340 |  | Builder's clean, Z4 | 2d | 2027-05-07 | 2027-05-10 | 5-INT-1320 |  |  | 9d |

| ID | WBS | Activity | Duration | Start | Finish | Predecessors | Complete | Remaining | Total float | Calendar |
| --- | --- | --- | --- | --- | --- | --- | --- | --- | --- | --- |
|  | MEP | **Building services installation** |  | 2027-02-05 | 2027-04-23 |  |  |  |  |  |
| 5-MEP-1070 |  | Water supply connection and meter | 2d | 2027-02-05 A | 2027-02-08 A | 5-SUB-1610 | 100% |  |  |  |
| 5-MEP-1010 |  | LV switchgear and distribution boards | 5d | 2027-03-25 A | 2027-04-02 A | 5-PRC-1023, 5-MOD-M121 | 100% |  |  |  |
| 5-MEP-1020 |  | Plant room fit-out | 15d | 2027-03-25 A | 2027-04-16 A | 5-MOD-M121 | 100% |  |  |  |
| 5-MEP-1060 |  | Pipework connections between modules | 12d | 2027-03-25 A | 2027-04-13 A | 5-MOD-M121, 5-SUB-1610 | 100% |  |  |  |
| 5-MEP-1090 |  | Fire detection and alarm installation | 8d | 2027-03-25 A | 2027-04-07 A | 5-PRC-1043, 5-MOD-M121 | 100% |  |  |  |
| 5-MEP-1100 |  | Nurse call and assistance call installation | 5d | 2027-03-25 A | 2027-04-02 A | 5-PRC-1053, 5-MOD-M121 | 100% |  |  |  |
| 5-MEP-1110 |  | Emergency lighting installation | 5d | 2027-03-25 A | 2027-04-02 A | 5-PRC-1063, 5-MOD-M121 | 100% |  |  |  |
| 5-MEP-1120 |  | Luminaire installation | 4d | 2027-03-25 A | 2027-04-01 A | 5-PRC-1073, 5-MOD-M121 | 100% |  |  |  |
| 5-MEP-1080 |  | BMS installation and integration gateway | 15d | 2027-04-01 A | 2027-04-21 A | 5-PRC-1033, 5-MEP-1020 SS+3d | 100% |  |  |  |
| 5-MEP-1000 |  | Incoming LV supply connection from campus network | 3d | 2027-04-06 A | 2027-04-08 A | M-204-EN, 5-SUB-1610 | 100% |  |  |  |
| 5-MEP-1030 |  | AHU installation | 3d | 2027-04-07 A | 2027-04-09 A | 5-PRC-1003, 5-ENV-1500 | 100% |  |  |  |
| 5-MEP-1040 |  | Air source heat pump installation | 3d | 2027-04-07 A | 2027-04-09 A | 5-PRC-1013, 5-ENV-1500 | 100% |  |  |  |
| 5-MEP-1050 |  | Ductwork connections between modules | 12d | 2027-04-08 A | 2027-04-23 A | 5-MOD-M121, 5-MEP-1030 SS+1d | 100% |  |  |  |
| 5-MEP-1130 |  | External lighting installation | 3d | 2027-04-09 A | 2027-04-13 A | 5-PRC-1123, 5-EXT-1010 | 100% |  |  |  |
|  | EXT | **External works** |  | 2027-02-24 | 2027-04-30 |  |  |  |  |  |
| 5-EXT-1000 |  | Drainage connections to campus network | 5d | 2027-02-24 A | 2027-03-02 A | 5-SUB-1620 | 100% |  |  |  |
| 5-EXT-1010 |  | Car park and path sub-base | 8d | 2027-03-30 A | 2027-04-08 A | 5-SUB-1600, 5-MOD-1900 | 100% |  |  |  |
| 5-EXT-1020 |  | Car park surfacing | 5d | 2027-04-09 A | 2027-04-15 A | 5-EXT-1010 | 100% |  |  |  |
| 5-EXT-1050 |  | Fencing and gates | 5d | 2027-04-09 A | 2027-04-15 A | 5-EXT-1010 | 100% |  |  |  |
| 5-EXT-1030 |  | Paths and paving | 6d | 2027-04-13 A | 2027-04-20 A | 5-EXT-1020 SS+2d | 100% |  |  |  |
| 5-EXT-1060 |  | Line marking and signage | 1d | 2027-04-16 A | 2027-04-16 A | 5-EXT-1020 | 100% |  |  |  |
| 5-EXT-1040 |  | Soft landscaping | 8d | 2027-04-21 A | 2027-04-30 A | 5-EXT-1030 | 100% |  |  |  |
|  | COM | **Testing and commissioning** |  | 2027-04-20 | 2027-05-27 |  |  |  |  |  |
| 5-COM-1000 |  | LV electrical testing and certification | 4d | 2027-04-20 A | 2027-04-23 A | 5-MEP-1000, 5-MEP-1010, 5-INT-1410, 5-MEP-1120 | 100% |  |  |  |
| 5-COM-1010 |  | Emergency lighting test (3-hour duration) | 2d | 2027-04-26 A | 2027-04-27 A | 5-COM-1000, 5-MEP-1110 | 100% |  |  |  |
| 5-COM-1020 |  | Fire alarm commissioning | 4d | 2027-04-26 A | 2027-04-29 A | 5-COM-1000, 5-MEP-1090 | 100% |  |  |  |
| 5-COM-1030 |  | Nurse call and assistance call commissioning | 3d | 2027-04-26 A | 2027-04-28 A | 5-COM-1000, 5-MEP-1100 | 100% |  |  |  |
| 5-COM-1040 |  | Ventilation commissioning and air balancing | 5d | 2027-04-26 A | 2027-04-30 A | 5-COM-1000, 5-MEP-1050, 5-MEP-1030 | 100% |  |  |  |
| 5-COM-1050 |  | Heat pump and heating commissioning | 4d | 2027-04-26 A | 2027-04-29 A | 5-COM-1000, 5-MEP-1040, 5-MEP-1060 | 100% |  |  |  |
| 5-COM-1021 |  | Fire alarm cause and effect witness test | 1d | 2027-04-30 A | 2027-04-30 A | 5-COM-1020 | 100% |  |  |  |
| 5-COM-1080 |  | Fire damper drop tests | 2d | 2027-04-30 A | 2027-05-04 | 5-MEP-1050, 5-COM-1020 | 50% | 1d | 17d |  |
| 5-COM-1090 |  | BMS commissioning | 8d | 2027-05-04 | 2027-05-13 | 5-MEP-1080, 5-COM-1040, 5-COM-1050 |  |  | 2d |  |
| 5-COM-1060 |  | Water system flush and chlorination | 3d | 2027-05-07 | 2027-05-11 | 5-MEP-1070, 5-INT-1130 |  |  | 2d |  |
| 5-COM-1100 |  | Point-to-point test of all BMS and metering points | 5d | 2027-05-07 | 2027-05-13 | 5-COM-1090 SS+3d |  |  | 2d |  |
| 5-COM-1130 |  | Air tightness test | 1d | 2027-05-11 | 2027-05-11 | 5-ENV-1520, 5-INT-1040, 5-INT-1140, 5-ENV-1010, 5-ENV-1110, 5-ENV-1210, 5-ENV-1310 |  |  | 12d |  |
| 5-COM-1140 |  | Acoustic testing (consulting rooms) | 2d | 2027-05-11 | 2027-05-12 | 5-INT-1140 |  |  | 15d |  |
| 5-COM-1061 |  | Water sampling and laboratory results | 10d | 2027-05-12 | 2027-05-25 | 5-COM-1060 |  |  | 2d |  |
| 5-COM-1070 |  | TMV commissioning and temperature tests | 3d | 2027-05-12 | 2027-05-14 | 5-COM-1060, 5-COM-1050 |  |  | 9d |  |
| 5-COM-1150 |  | Building control completion inspection | 1d | 2027-05-12 | 2027-05-12 | 5-COM-1021, 5-COM-1010, 5-COM-1130 |  |  | 12d |  |
| 5-COM-1120 |  | 14-day data soak test | 14d | 2027-05-14 | 2027-05-27 | 5-COM-1100 |  |  | 4d | LRHC 7-day (continuous tests) |
| 5-COM-1110 |  | End-to-end alarm test (TMV over-temperature to CAFM work order) | 1d | 2027-05-17 | 2027-05-17 | 5-COM-1100, 5-COM-1070 |  |  | 12d |  |

| ID | WBS | Activity | Duration | Start | Finish | Predecessors | Complete | Remaining | Total float |
| --- | --- | --- | --- | --- | --- | --- | --- | --- | --- |
|  | INF | **Construction information** |  | 2027-03-03 | 2027-04-15 |  |  |  |  |
| 5-INF-1000 |  | Develop factory inspection and test records | 3d | 2027-03-03 A | 2027-03-05 A | 5-FAB-M123 | 100% |  |  |
| 5-INF-1001 |  | Check and approve factory inspection and test records | 2d | 2027-03-08 A | 2027-03-09 A | 5-INF-1000 | 100% |  |  |
| 5-INF-1005 |  | Issue factory inspection and test records | 1d | 2027-03-10 A | 2027-03-10 A | 5-INF-1001 | 100% |  |  |
| 5-INF-1100 |  | Develop commissioning plan | 8d | 2027-03-25 A | 2027-04-07 A | 5-MOD-1910 | 100% |  |  |
| 5-INF-1300 |  | Develop COBie (draft) | 9d | 2027-03-31 A | 2027-04-12 A | 5-INT-1100 SS+1d | 100% |  |  |
| 5-INF-1200 |  | Develop points schedule (draft) | 6d | 2027-04-05 A | 2027-04-12 A | 5-MEP-1080 SS+2d, 4-MEP-1405 | 100% |  |  |
| 5-INF-1101 |  | Check and approve commissioning plan | 2d | 2027-04-08 A | 2027-04-09 A | 5-INF-1100 | 100% |  |  |
| 5-INF-1105 |  | Issue commissioning plan | 1d | 2027-04-12 A | 2027-04-12 A | 5-INF-1101 | 100% |  |  |
| 5-INF-1201 |  | Check and approve points schedule (draft) | 2d | 2027-04-13 A | 2027-04-14 A | 5-INF-1200 | 100% |  |  |
| 5-INF-1301 |  | Check and approve COBie (draft) | 2d | 2027-04-13 A | 2027-04-14 A | 5-INF-1300 | 100% |  |  |
| 5-INF-1205 |  | Issue points schedule (draft) | 1d | 2027-04-15 A | 2027-04-15 A | 5-INF-1201 | 100% |  |  |
| 5-INF-1305 |  | Issue COBie (draft) | 1d | 2027-04-15 A | 2027-04-15 A | 5-INF-1301 | 100% |  |  |
|  | 6 | **RIBA Stage 6 Handover** |  | 2027-04-20 | 2027-06-23 |  |  |  |  |
|  | INF | **Handover information (IE3)** |  | 2027-04-20 | 2027-06-03 |  |  |  |  |
| 6-INF-1700 |  | Develop as-constructed federated model | 15d | 2027-04-20 A | 2027-05-11 | 5-MOD-1910, 5-COM-1000 SS | 60% | 6d | 14d |
| 6-INF-1800 |  | Develop O&M manual | 20d | 2027-04-20 A | 2027-05-18 | 5-COM-1000 SS | 45% | 11d | 8d |
| 6-INF-1900 |  | Develop health and safety file | 18d | 2027-04-20 A | 2027-05-14 | 5-COM-1000 SS | 50% | 9d | 11d |
| 6-INF-1500 |  | Develop electrical and emergency lighting test certificates | 2d | 2027-04-28 A | 2027-04-29 A | 5-COM-1000, 5-COM-1010 | 100% |  |  |
| 6-INF-1501 |  | Check and approve electrical and emergency lighting test certificates | 2d | 2027-04-30 A | 2027-05-04 | 6-INF-1500 | 50% | 1d | 21d |
| 6-INF-1600 |  | Develop COBie (handover) | 10d | 2027-05-04 | 2027-05-17 | 5-INF-1305, 5-COM-1090 SS, M-203-IE2 |  |  | 10d |
| 6-INF-1400 |  | Develop fire damper drop-test report | 2d | 2027-05-05 | 2027-05-06 | 5-COM-1080 |  |  | 17d |
| 6-INF-1505 |  | Issue electrical and emergency lighting test certificates | 1d | 2027-05-05 | 2027-05-05 | 6-INF-1501 |  |  | 21d |
| 6-INF-1401 |  | Check and approve fire damper drop-test report | 2d | 2027-05-07 | 2027-05-10 | 6-INF-1400 |  |  | 17d |
| 6-INF-1405 |  | Issue fire damper drop-test report | 1d | 2027-05-11 | 2027-05-11 | 6-INF-1401 |  |  | 17d |
| 6-INF-1701 |  | Check and approve as-constructed federated model | 2d | 2027-05-12 | 2027-05-13 | 6-INF-1700 |  |  | 14d |
| 6-INF-1000 |  | Develop points schedule (final) | 3d | 2027-05-14 | 2027-05-18 | 5-COM-1100, 5-INF-1205 |  |  | 9d |
| 6-INF-1200 |  | Develop network and device schedule | 3d | 2027-05-14 | 2027-05-18 | 5-COM-1090 |  |  | 9d |
| 6-INF-1705 |  | Issue as-constructed federated model | 1d | 2027-05-14 | 2027-05-14 | 6-INF-1701 |  |  | 14d |
| 6-INF-1901 |  | Check and approve health and safety file | 2d | 2027-05-17 | 2027-05-18 | 6-INF-1900 |  |  | 11d |
| 6-INF-1601 |  | Check and approve COBie (handover) | 2d | 2027-05-18 | 2027-05-19 | 6-INF-1600 |  |  | 10d |
| 6-INF-1001 |  | Check and approve points schedule (final) | 2d | 2027-05-19 | 2027-05-20 | 6-INF-1000 |  |  | 9d |
| 6-INF-1201 |  | Check and approve network and device schedule | 2d | 2027-05-19 | 2027-05-20 | 6-INF-1200 |  |  | 9d |
| 6-INF-1801 |  | Check and approve O&M manual | 3d | 2027-05-19 | 2027-05-21 | 6-INF-1800 |  |  | 8d |
| 6-INF-1905 |  | Issue health and safety file | 1d | 2027-05-19 | 2027-05-19 | 6-INF-1901 |  |  | 11d |
| 6-INF-1605 |  | Issue COBie (handover) | 1d | 2027-05-20 | 2027-05-20 | 6-INF-1601 |  |  | 10d |
| 6-INF-1005 |  | Issue points schedule (final) | 1d | 2027-05-21 | 2027-05-21 | 6-INF-1001 |  |  | 9d |
| 6-INF-1205 |  | Issue network and device schedule | 1d | 2027-05-21 | 2027-05-21 | 6-INF-1201 |  |  | 9d |
| 6-INF-1805 |  | Issue O&M manual | 1d | 2027-05-24 | 2027-05-24 | 6-INF-1801 |  |  | 8d |
| 6-INF-1300 |  | Develop TMV commissioning report | 2d | 2027-05-26 | 2027-05-27 | 5-COM-1070, 5-COM-1061 |  |  | 2d |
| 6-INF-1100 |  | Develop data soak test report | 2d | 2027-05-28 | 2027-06-01 | 5-COM-1120 |  |  | 1d |
| 6-INF-1301 |  | Check and approve TMV commissioning report | 2d | 2027-05-28 | 2027-06-01 | 6-INF-1300 |  |  | 2d |
| 6-INF-1101 |  | Check and approve data soak test report | 1d | 2027-06-02 | 2027-06-02 | 6-INF-1100 |  |  | 1d |
| 6-INF-1305 |  | Issue TMV commissioning report | 1d | 2027-06-02 | 2027-06-02 | 6-INF-1301 |  |  | 2d |
| 6-INF-1105 |  | Issue data soak test report | 1d | 2027-06-03 | 2027-06-03 | 6-INF-1101 |  |  | 1d |

| ID | WBS | Activity | Duration | Start | Finish | Predecessors | Total float |
| --- | --- | --- | --- | --- | --- | --- | --- |
|  | HND | **Handover and practical completion** |  | 2027-05-11 | 2027-06-07 |  |  |
| 6-HND-1010 |  | Pre-completion snagging inspection | 3d | 2027-05-11 | 2027-05-13 | 5-INT-1040, 5-INT-1140, 5-INT-1240, 5-ENV-1510, 5-INT-1340, 5-INT-1440 | 9d |
| 6-HND-1030 |  | Building control completion certificate | 3d | 2027-05-13 | 2027-05-17 | 5-COM-1150 | 12d |
| 6-HND-1000 |  | Client and FM training | 5d | 2027-05-14 | 2027-05-20 | 5-COM-1090, 5-COM-1030 | 10d |
| 6-HND-1020 |  | Snag rectification | 5d | 2027-05-14 | 2027-05-20 | 6-HND-1010 | 9d |
| 6-HND-1040 |  | Practical completion inspection | 1d | 2027-05-21 | 2027-05-21 | 6-HND-1020, 6-HND-1030, 5-COM-1110, 5-EXT-1040, 5-EXT-1060, 5-COM-1140, 5-COM-1021, 5-MEP-1130, 5-EXT-1000, 5-EXT-1050 | 9d |
| 6-HND-1050 |  | Handover of keys, access cards and BMS credentials (to IT/OT security) | 1d | 2027-06-07 | 2027-06-07 | M-203-PC | 19d |
|  | REC | **Record information (IE4)** |  | 2027-06-07 | 2027-06-23 |  |  |
| 6-REC-1000 |  | Develop COBie (record) | 8d | 2027-06-07 | 2027-06-16 | M-203-PC | 9d |
| 6-REC-1100 |  | Develop as-constructed federated model (record) | 10d | 2027-06-07 | 2027-06-18 | M-203-PC | 7d |
| 6-REC-1200 |  | Develop O&M manual (record) | 8d | 2027-06-07 | 2027-06-16 | M-203-PC | 9d |
| 6-REC-1001 |  | Check and approve COBie (record) | 2d | 2027-06-17 | 2027-06-18 | 6-REC-1000 | 9d |
| 6-REC-1201 |  | Check and approve O&M manual (record) | 2d | 2027-06-17 | 2027-06-18 | 6-REC-1200 | 9d |
| 6-REC-1005 |  | Issue COBie (record) | 1d | 2027-06-21 | 2027-06-21 | 6-REC-1001 | 9d |
| 6-REC-1101 |  | Check and approve as-constructed federated model (record) | 2d | 2027-06-21 | 2027-06-22 | 6-REC-1100 | 7d |
| 6-REC-1205 |  | Issue O&M manual (record) | 1d | 2027-06-21 | 2027-06-21 | 6-REC-1201 | 9d |
| 6-REC-1105 |  | Issue as-constructed federated model (record) | 1d | 2027-06-23 | 2027-06-23 | 6-REC-1101 | 7d |
