project,data_date,activity_id,activity_name,wbs_code,wbs_name,stage,activity_type,calendar,original_duration_d,remaining_duration_d,status,pct_complete,planned_start,planned_finish,start,finish,actual_start,actual_finish,late_start,late_finish,total_float_d,constraint_type,constraint_date
LRHC-UP06,2027-05-01 00:00,M-203-AW,Contract award and start on site possession date,LRHC.KEY,Key dates and milestones,,Start milestone,"LRHC 5-day (England, Christmas shutdown)",0,0,Completed,100,2026-11-25 08:00,2026-11-25 08:00,2026-11-25 08:00,2026-11-25 08:00,2026-11-25 08:00,2026-11-25 08:00,2026-11-26 08:00,2026-11-26 08:00,1,CS_MSOA,2026-11-25 08:00
LRHC-UP06,2027-05-01 00:00,4-GEN-1010,Design kick-off and Stage 3 design review,LRHC.4.GEN,Design management,4,Task,"LRHC 5-day (England, Christmas shutdown)",3,0,Completed,100,2026-11-25 08:00,2026-11-27 17:00,2026-11-25 08:00,2026-11-27 17:00,2026-11-25 08:00,2026-11-27 17:00,2026-11-26 08:00,2026-11-30 17:00,1,,
LRHC-UP06,2027-05-01 00:00,4-GEN-1020,Confirm BEP and design responsibility matrix,LRHC.4.GEN,Design management,4,Task,"LRHC 5-day (England, Christmas shutdown)",5,0,Completed,100,2026-11-25 08:00,2026-12-01 17:00,2026-11-25 08:00,2026-12-01 17:00,2026-11-25 08:00,2026-12-01 17:00,2026-12-03 08:00,2026-12-09 17:00,6,,
LRHC-UP06,2027-05-01 00:00,4-GEN-1030,Site investigation and survey review,LRHC.4.GEN,Design management,4,Task,"LRHC 5-day (England, Christmas shutdown)",3,0,Completed,100,2026-11-25 08:00,2026-11-27 17:00,2026-11-25 08:00,2026-11-27 17:00,2026-11-25 08:00,2026-11-27 17:00,2026-12-10 08:00,2026-12-14 17:00,11,,
LRHC-UP06,2027-05-01 00:00,4-ARC-1010,Develop architectural model (Stage 4),LRHC.4.ARC,Architecture (FLD),4,Task,"LRHC 5-day (England, Christmas shutdown)",13,0,Completed,100,2026-11-30 08:00,2026-12-16 17:00,2026-11-30 08:00,2026-12-16 17:00,2026-11-30 08:00,2026-12-16 17:00,2026-12-01 08:00,2026-12-17 17:00,1,,
LRHC-UP06,2027-05-01 00:00,4-ARC-1011,Check and approve architectural model (Stage 4),LRHC.4.ARC,Architecture (FLD),4,Task,"LRHC 5-day (England, Christmas shutdown)",2,0,Completed,100,2026-12-17 08:00,2026-12-18 17:00,2026-12-17 08:00,2026-12-18 17:00,2026-12-17 08:00,2026-12-18 17:00,2027-01-08 08:00,2027-01-11 17:00,9,,
LRHC-UP06,2027-05-01 00:00,4-ARC-1015,Issue architectural model (Stage 4),LRHC.4.ARC,Architecture (FLD),4,Task,"LRHC 5-day (England, Christmas shutdown)",1,0,Completed,100,2026-12-21 08:00,2026-12-21 17:00,2026-12-21 08:00,2026-12-21 17:00,2026-12-21 08:00,2026-12-21 17:00,2027-01-12 08:00,2027-01-12 17:00,9,,
LRHC-UP06,2027-05-01 00:00,4-ARC-1100,"Develop GA plan, public zone",LRHC.4.ARC,Architecture (FLD),4,Task,"LRHC 5-day (England, Christmas shutdown)",11,0,Completed,100,2026-12-04 08:00,2026-12-18 17:00,2026-12-04 08:00,2026-12-18 17:00,2026-12-04 08:00,2026-12-18 17:00,2026-12-17 08:00,2027-01-11 17:00,9,,
LRHC-UP06,2027-05-01 00:00,4-ARC-1101,"Check and approve GA plan, public zone",LRHC.4.ARC,Architecture (FLD),4,Task,"LRHC 5-day (England, Christmas shutdown)",2,0,Completed,100,2026-12-21 08:00,2026-12-22 17:00,2026-12-21 08:00,2026-12-22 17:00,2026-12-21 08:00,2026-12-22 17:00,2027-01-12 08:00,2027-01-13 17:00,9,,
LRHC-UP06,2027-05-01 00:00,4-ARC-1102,"Client review of GA plan, public zone",LRHC.4.ARC,Architecture (FLD),4,Task,"LRHC 5-day (England, Christmas shutdown)",1,0,Completed,100,2026-12-23 08:00,2026-12-23 17:00,2026-12-23 08:00,2026-12-23 17:00,2026-12-23 08:00,2026-12-23 17:00,2027-01-14 08:00,2027-01-14 17:00,9,,
LRHC-UP06,2027-05-01 00:00,4-ARC-1105,"Issue GA plan, public zone",LRHC.4.ARC,Architecture (FLD),4,Task,"LRHC 5-day (England, Christmas shutdown)",1,0,Completed,100,2027-01-04 08:00,2027-01-04 17:00,2027-01-04 08:00,2027-01-04 17:00,2027-01-04 08:00,2027-01-04 17:00,2027-01-15 08:00,2027-01-15 17:00,9,,
LRHC-UP06,2027-05-01 00:00,4-ARC-1200,"Develop GA plan, clinical zone",LRHC.4.ARC,Architecture (FLD),4,Task,"LRHC 5-day (England, Christmas shutdown)",11,0,Completed,100,2026-12-07 08:00,2026-12-21 17:00,2026-12-07 08:00,2026-12-21 17:00,2026-12-07 08:00,2026-12-21 17:00,2026-12-16 08:00,2027-01-08 17:00,7,,
LRHC-UP06,2027-05-01 00:00,4-ARC-1201,"Check and approve GA plan, clinical zone",LRHC.4.ARC,Architecture (FLD),4,Task,"LRHC 5-day (England, Christmas shutdown)",2,0,Completed,100,2026-12-22 08:00,2026-12-23 17:00,2026-12-22 08:00,2026-12-23 17:00,2026-12-22 08:00,2026-12-23 17:00,2027-01-12 08:00,2027-01-13 17:00,8,,
LRHC-UP06,2027-05-01 00:00,4-ARC-1202,"Client review of GA plan, clinical zone",LRHC.4.ARC,Architecture (FLD),4,Task,"LRHC 5-day (England, Christmas shutdown)",1,0,Completed,100,2027-01-04 08:00,2027-01-04 17:00,2027-01-04 08:00,2027-01-04 17:00,2027-01-04 08:00,2027-01-04 17:00,2027-01-14 08:00,2027-01-14 17:00,8,,
LRHC-UP06,2027-05-01 00:00,4-ARC-1205,"Issue GA plan, clinical zone",LRHC.4.ARC,Architecture (FLD),4,Task,"LRHC 5-day (England, Christmas shutdown)",1,0,Completed,100,2027-01-05 08:00,2027-01-05 17:00,2027-01-05 08:00,2027-01-05 17:00,2027-01-05 08:00,2027-01-05 17:00,2027-01-15 08:00,2027-01-15 17:00,8,,
LRHC-UP06,2027-05-01 00:00,4-ARC-1300,"Develop GA plan, staff and support zone",LRHC.4.ARC,Architecture (FLD),4,Task,"LRHC 5-day (England, Christmas shutdown)",11,0,Completed,100,2026-12-08 08:00,2026-12-22 17:00,2026-12-08 08:00,2026-12-22 17:00,2026-12-08 08:00,2026-12-22 17:00,2026-12-17 08:00,2027-01-11 17:00,7,,
LRHC-UP06,2027-05-01 00:00,4-ARC-1301,"Check and approve GA plan, staff and support zone",LRHC.4.ARC,Architecture (FLD),4,Task,"LRHC 5-day (England, Christmas shutdown)",2,0,Completed,100,2026-12-23 08:00,2027-01-04 17:00,2026-12-23 08:00,2027-01-04 17:00,2026-12-23 08:00,2027-01-04 17:00,2027-01-12 08:00,2027-01-13 17:00,7,,
LRHC-UP06,2027-05-01 00:00,4-ARC-1302,"Client review of GA plan, staff and support zone",LRHC.4.ARC,Architecture (FLD),4,Task,"LRHC 5-day (England, Christmas shutdown)",1,0,Completed,100,2027-01-05 08:00,2027-01-05 17:00,2027-01-05 08:00,2027-01-05 17:00,2027-01-05 08:00,2027-01-05 17:00,2027-01-14 08:00,2027-01-14 17:00,7,,
LRHC-UP06,2027-05-01 00:00,4-ARC-1305,"Issue GA plan, staff and support zone",LRHC.4.ARC,Architecture (FLD),4,Task,"LRHC 5-day (England, Christmas shutdown)",1,0,Completed,100,2027-01-06 08:00,2027-01-06 17:00,2027-01-06 08:00,2027-01-06 17:00,2027-01-06 08:00,2027-01-06 17:00,2027-01-15 08:00,2027-01-15 17:00,7,,
LRHC-UP06,2027-05-01 00:00,4-ARC-1400,"Develop GA plan, plant zone",LRHC.4.ARC,Architecture (FLD),4,Task,"LRHC 5-day (England, Christmas shutdown)",11,0,Completed,100,2026-12-09 08:00,2026-12-23 17:00,2026-12-09 08:00,2026-12-23 17:00,2026-12-09 08:00,2026-12-23 17:00,2026-12-17 08:00,2027-01-11 17:00,6,,
LRHC-UP06,2027-05-01 00:00,4-ARC-1401,"Check and approve GA plan, plant zone",LRHC.4.ARC,Architecture (FLD),4,Task,"LRHC 5-day (England, Christmas shutdown)",2,0,Completed,100,2027-01-04 08:00,2027-01-05 17:00,2027-01-04 08:00,2027-01-05 17:00,2027-01-04 08:00,2027-01-05 17:00,2027-01-12 08:00,2027-01-13 17:00,6,,
LRHC-UP06,2027-05-01 00:00,4-ARC-1402,"Client review of GA plan, plant zone",LRHC.4.ARC,Architecture (FLD),4,Task,"LRHC 5-day (England, Christmas shutdown)",1,0,Completed,100,2027-01-06 08:00,2027-01-06 17:00,2027-01-06 08:00,2027-01-06 17:00,2027-01-06 08:00,2027-01-06 17:00,2027-01-14 08:00,2027-01-14 17:00,6,,
LRHC-UP06,2027-05-01 00:00,4-ARC-1405,"Issue GA plan, plant zone",LRHC.4.ARC,Architecture (FLD),4,Task,"LRHC 5-day (England, Christmas shutdown)",1,0,Completed,100,2027-01-07 08:00,2027-01-07 17:00,2027-01-07 08:00,2027-01-07 17:00,2027-01-07 08:00,2027-01-07 17:00,2027-01-15 08:00,2027-01-15 17:00,6,,
LRHC-UP06,2027-05-01 00:00,4-ARC-1600,Develop roof plan,LRHC.4.ARC,Architecture (FLD),4,Task,"LRHC 5-day (England, Christmas shutdown)",9,0,Completed,100,2026-12-08 08:00,2026-12-18 17:00,2026-12-08 08:00,2026-12-18 17:00,2026-12-08 08:00,2026-12-18 17:00,2026-12-22 08:00,2027-01-12 17:00,10,,
LRHC-UP06,2027-05-01 00:00,4-ARC-1601,Check and approve roof plan,LRHC.4.ARC,Architecture (FLD),4,Task,"LRHC 5-day (England, Christmas shutdown)",2,0,Completed,100,2026-12-21 08:00,2026-12-22 17:00,2026-12-21 08:00,2026-12-22 17:00,2026-12-21 08:00,2026-12-22 17:00,2027-01-13 08:00,2027-01-14 17:00,10,,
LRHC-UP06,2027-05-01 00:00,4-ARC-1605,Issue roof plan,LRHC.4.ARC,Architecture (FLD),4,Task,"LRHC 5-day (England, Christmas shutdown)",1,0,Completed,100,2026-12-23 08:00,2026-12-23 17:00,2026-12-23 08:00,2026-12-23 17:00,2026-12-23 08:00,2026-12-23 17:00,2027-01-15 08:00,2027-01-15 17:00,10,,
LRHC-UP06,2027-05-01 00:00,4-ARC-1700,Develop elevations,LRHC.4.ARC,Architecture (FLD),4,Task,"LRHC 5-day (England, Christmas shutdown)",9,0,Completed,100,2026-12-09 08:00,2026-12-21 17:00,2026-12-09 08:00,2026-12-21 17:00,2026-12-09 08:00,2026-12-21 17:00,2026-12-22 08:00,2027-01-12 17:00,9,,
LRHC-UP06,2027-05-01 00:00,4-ARC-1701,Check and approve elevations,LRHC.4.ARC,Architecture (FLD),4,Task,"LRHC 5-day (England, Christmas shutdown)",2,0,Completed,100,2026-12-22 08:00,2026-12-23 17:00,2026-12-22 08:00,2026-12-23 17:00,2026-12-22 08:00,2026-12-23 17:00,2027-01-13 08:00,2027-01-14 17:00,9,,
LRHC-UP06,2027-05-01 00:00,4-ARC-1705,Issue elevations,LRHC.4.ARC,Architecture (FLD),4,Task,"LRHC 5-day (England, Christmas shutdown)",1,0,Completed,100,2027-01-04 08:00,2027-01-04 17:00,2027-01-04 08:00,2027-01-04 17:00,2027-01-04 08:00,2027-01-04 17:00,2027-01-15 08:00,2027-01-15 17:00,9,,
LRHC-UP06,2027-05-01 00:00,4-ARC-1800,Develop sections,LRHC.4.ARC,Architecture (FLD),4,Task,"LRHC 5-day (England, Christmas shutdown)",9,0,Completed,100,2026-12-10 08:00,2026-12-22 17:00,2026-12-10 08:00,2026-12-22 17:00,2026-12-10 08:00,2026-12-22 17:00,2026-12-22 08:00,2027-01-12 17:00,8,,
LRHC-UP06,2027-05-01 00:00,4-ARC-1801,Check and approve sections,LRHC.4.ARC,Architecture (FLD),4,Task,"LRHC 5-day (England, Christmas shutdown)",2,0,Completed,100,2026-12-23 08:00,2027-01-04 17:00,2026-12-23 08:00,2027-01-04 17:00,2026-12-23 08:00,2027-01-04 17:00,2027-01-13 08:00,2027-01-14 17:00,8,,
LRHC-UP06,2027-05-01 00:00,4-ARC-1805,Issue sections,LRHC.4.ARC,Architecture (FLD),4,Task,"LRHC 5-day (England, Christmas shutdown)",1,0,Completed,100,2027-01-05 08:00,2027-01-05 17:00,2027-01-05 08:00,2027-01-05 17:00,2027-01-05 08:00,2027-01-05 17:00,2027-01-15 08:00,2027-01-15 17:00,8,,
LRHC-UP06,2027-05-01 00:00,4-ARC-1900,"Develop room data sheets, clinical zone",LRHC.4.ARC,Architecture (FLD),4,Task,"LRHC 5-day (England, Christmas shutdown)",10,0,Completed,100,2026-12-10 08:00,2026-12-23 17:00,2026-12-10 08:00,2026-12-23 17:00,2026-12-10 08:00,2026-12-23 17:00,2026-12-21 08:00,2027-01-12 17:00,7,,
LRHC-UP06,2027-05-01 00:00,4-ARC-1901,"Check and approve room data sheets, clinical zone",LRHC.4.ARC,Architecture (FLD),4,Task,"LRHC 5-day (England, Christmas shutdown)",2,0,Completed,100,2027-01-04 08:00,2027-01-05 17:00,2027-01-04 08:00,2027-01-05 17:00,2027-01-04 08:00,2027-01-05 17:00,2027-01-13 08:00,2027-01-14 17:00,7,,
LRHC-UP06,2027-05-01 00:00,4-ARC-1905,"Issue room data sheets, clinical zone",LRHC.4.ARC,Architecture (FLD),4,Task,"LRHC 5-day (England, Christmas shutdown)",1,0,Completed,100,2027-01-06 08:00,2027-01-06 17:00,2027-01-06 08:00,2027-01-06 17:00,2027-01-06 08:00,2027-01-06 17:00,2027-01-15 08:00,2027-01-15 17:00,7,,
LRHC-UP06,2027-05-01 00:00,4-ARC-2000,Develop door schedule,LRHC.4.ARC,Architecture (FLD),4,Task,"LRHC 5-day (England, Christmas shutdown)",9,0,Completed,100,2026-12-10 08:00,2026-12-22 17:00,2026-12-10 08:00,2026-12-22 17:00,2026-12-10 08:00,2026-12-22 17:00,2026-12-22 08:00,2027-01-12 17:00,8,,
LRHC-UP06,2027-05-01 00:00,4-ARC-2001,Check and approve door schedule,LRHC.4.ARC,Architecture (FLD),4,Task,"LRHC 5-day (England, Christmas shutdown)",2,0,Completed,100,2026-12-23 08:00,2027-01-04 17:00,2026-12-23 08:00,2027-01-04 17:00,2026-12-23 08:00,2027-01-04 17:00,2027-01-13 08:00,2027-01-14 17:00,8,,
LRHC-UP06,2027-05-01 00:00,4-ARC-2005,Issue door schedule,LRHC.4.ARC,Architecture (FLD),4,Task,"LRHC 5-day (England, Christmas shutdown)",1,0,Completed,100,2027-01-05 08:00,2027-01-05 17:00,2027-01-05 08:00,2027-01-05 17:00,2027-01-05 08:00,2027-01-05 17:00,2027-01-15 08:00,2027-01-15 17:00,8,,
LRHC-UP06,2027-05-01 00:00,4-ARC-2100,Develop architectural specification,LRHC.4.ARC,Architecture (FLD),4,Task,"LRHC 5-day (England, Christmas shutdown)",16,0,Completed,100,2026-12-01 08:00,2026-12-22 17:00,2026-12-01 08:00,2026-12-22 17:00,2026-12-01 08:00,2026-12-22 17:00,2026-12-11 08:00,2027-01-12 17:00,8,,
LRHC-UP06,2027-05-01 00:00,4-ARC-2101,Check and approve architectural specification,LRHC.4.ARC,Architecture (FLD),4,Task,"LRHC 5-day (England, Christmas shutdown)",2,0,Completed,100,2026-12-23 08:00,2027-01-04 17:00,2026-12-23 08:00,2027-01-04 17:00,2026-12-23 08:00,2027-01-04 17:00,2027-01-13 08:00,2027-01-14 17:00,8,,
LRHC-UP06,2027-05-01 00:00,4-ARC-2105,Issue architectural specification,LRHC.4.ARC,Architecture (FLD),4,Task,"LRHC 5-day (England, Christmas shutdown)",1,0,Completed,100,2027-01-05 08:00,2027-01-05 17:00,2027-01-05 08:00,2027-01-05 17:00,2027-01-05 08:00,2027-01-05 17:00,2027-01-15 08:00,2027-01-15 17:00,8,,
LRHC-UP06,2027-05-01 00:00,4-ARC-2200,Develop fire strategy report,LRHC.4.ARC,Architecture (FLD),4,Task,"LRHC 5-day (England, Christmas shutdown)",11,0,Completed,100,2026-12-03 08:00,2026-12-17 17:00,2026-12-03 08:00,2026-12-17 17:00,2026-12-03 08:00,2026-12-17 17:00,2026-12-18 08:00,2027-01-12 17:00,11,,
LRHC-UP06,2027-05-01 00:00,4-ARC-2201,Check and approve fire strategy report,LRHC.4.ARC,Architecture (FLD),4,Task,"LRHC 5-day (England, Christmas shutdown)",2,0,Completed,100,2026-12-18 08:00,2026-12-21 17:00,2026-12-18 08:00,2026-12-21 17:00,2026-12-18 08:00,2026-12-21 17:00,2027-01-13 08:00,2027-01-14 17:00,11,,
LRHC-UP06,2027-05-01 00:00,4-ARC-2205,Issue fire strategy report,LRHC.4.ARC,Architecture (FLD),4,Task,"LRHC 5-day (England, Christmas shutdown)",1,0,Completed,100,2026-12-22 08:00,2026-12-22 17:00,2026-12-22 08:00,2026-12-22 17:00,2026-12-22 08:00,2026-12-22 17:00,2027-01-15 08:00,2027-01-15 17:00,11,,
LRHC-UP06,2027-05-01 00:00,4-ARC-2300,Develop external works and landscape layout,LRHC.4.ARC,Architecture (FLD),4,Task,"LRHC 5-day (England, Christmas shutdown)",14,0,Completed,100,2026-11-30 08:00,2026-12-17 17:00,2026-11-30 08:00,2026-12-17 17:00,2026-11-30 08:00,2026-12-17 17:00,2026-12-15 08:00,2027-01-12 17:00,11,,
LRHC-UP06,2027-05-01 00:00,4-ARC-2301,Check and approve external works and landscape layout,LRHC.4.ARC,Architecture (FLD),4,Task,"LRHC 5-day (England, Christmas shutdown)",2,0,Completed,100,2026-12-18 08:00,2026-12-21 17:00,2026-12-18 08:00,2026-12-21 17:00,2026-12-18 08:00,2026-12-21 17:00,2027-01-13 08:00,2027-01-14 17:00,11,,
LRHC-UP06,2027-05-01 00:00,4-ARC-2305,Issue external works and landscape layout,LRHC.4.ARC,Architecture (FLD),4,Task,"LRHC 5-day (England, Christmas shutdown)",1,0,Completed,100,2026-12-22 08:00,2026-12-22 17:00,2026-12-22 08:00,2026-12-22 17:00,2026-12-22 08:00,2026-12-22 17:00,2027-01-15 08:00,2027-01-15 17:00,11,,
LRHC-UP06,2027-05-01 00:00,4-STR-1010,Develop structural model (foundations and module interfaces),LRHC.4.STR,Structure and civils (CKE),4,Task,"LRHC 5-day (England, Christmas shutdown)",11,0,Completed,100,2026-12-03 08:00,2026-12-17 17:00,2026-12-03 08:00,2026-12-17 17:00,2026-12-03 08:00,2026-12-17 17:00,2026-12-15 08:00,2027-01-07 17:00,8,,
LRHC-UP06,2027-05-01 00:00,4-STR-1011,Check and approve structural model (foundations and module interfaces),LRHC.4.STR,Structure and civils (CKE),4,Task,"LRHC 5-day (England, Christmas shutdown)",2,0,Completed,100,2026-12-18 08:00,2026-12-21 17:00,2026-12-18 08:00,2026-12-21 17:00,2026-12-18 08:00,2026-12-21 17:00,2027-01-08 08:00,2027-01-11 17:00,8,,
LRHC-UP06,2027-05-01 00:00,4-STR-1015,Issue structural model (foundations and module interfaces),LRHC.4.STR,Structure and civils (CKE),4,Task,"LRHC 5-day (England, Christmas shutdown)",1,0,Completed,100,2026-12-22 08:00,2026-12-22 17:00,2026-12-22 08:00,2026-12-22 17:00,2026-12-22 08:00,2026-12-22 17:00,2027-01-12 08:00,2027-01-12 17:00,8,,
LRHC-UP06,2027-05-01 00:00,4-STR-1100,Develop foundation layout,LRHC.4.STR,Structure and civils (CKE),4,Task,"LRHC 5-day (England, Christmas shutdown)",9,0,Completed,100,2026-12-08 08:00,2026-12-18 17:00,2026-12-08 08:00,2026-12-18 17:00,2026-12-08 08:00,2026-12-18 17:00,2026-12-22 08:00,2027-01-12 17:00,10,,
LRHC-UP06,2027-05-01 00:00,4-STR-1101,Check and approve foundation layout,LRHC.4.STR,Structure and civils (CKE),4,Task,"LRHC 5-day (England, Christmas shutdown)",2,0,Completed,100,2026-12-21 08:00,2026-12-22 17:00,2026-12-21 08:00,2026-12-22 17:00,2026-12-21 08:00,2026-12-22 17:00,2027-01-13 08:00,2027-01-14 17:00,10,,
LRHC-UP06,2027-05-01 00:00,4-STR-1105,Issue foundation layout,LRHC.4.STR,Structure and civils (CKE),4,Task,"LRHC 5-day (England, Christmas shutdown)",1,0,Completed,100,2026-12-23 08:00,2026-12-23 17:00,2026-12-23 08:00,2026-12-23 17:00,2026-12-23 08:00,2026-12-23 17:00,2027-01-15 08:00,2027-01-15 17:00,10,,
LRHC-UP06,2027-05-01 00:00,4-STR-1200,Develop structural calculations,LRHC.4.STR,Structure and civils (CKE),4,Task,"LRHC 5-day (England, Christmas shutdown)",12,0,Completed,100,2026-12-07 08:00,2026-12-22 17:00,2026-12-07 08:00,2026-12-22 17:00,2026-12-07 08:00,2026-12-22 17:00,2026-12-17 08:00,2027-01-12 17:00,8,,
LRHC-UP06,2027-05-01 00:00,4-STR-1201,Check and approve structural calculations,LRHC.4.STR,Structure and civils (CKE),4,Task,"LRHC 5-day (England, Christmas shutdown)",2,0,Completed,100,2026-12-23 08:00,2027-01-04 17:00,2026-12-23 08:00,2027-01-04 17:00,2026-12-23 08:00,2027-01-04 17:00,2027-01-13 08:00,2027-01-14 17:00,8,,
LRHC-UP06,2027-05-01 00:00,4-STR-1205,Issue structural calculations,LRHC.4.STR,Structure and civils (CKE),4,Task,"LRHC 5-day (England, Christmas shutdown)",1,0,Completed,100,2027-01-05 08:00,2027-01-05 17:00,2027-01-05 08:00,2027-01-05 17:00,2027-01-05 08:00,2027-01-05 17:00,2027-01-15 08:00,2027-01-15 17:00,8,,
LRHC-UP06,2027-05-01 00:00,4-STR-1300,Develop below-ground drainage layout,LRHC.4.STR,Structure and civils (CKE),4,Task,"LRHC 5-day (England, Christmas shutdown)",12,0,Completed,100,2026-11-30 08:00,2026-12-15 17:00,2026-11-30 08:00,2026-12-15 17:00,2026-11-30 08:00,2026-12-15 17:00,2026-12-17 08:00,2027-01-12 17:00,13,,
LRHC-UP06,2027-05-01 00:00,4-STR-1301,Check and approve below-ground drainage layout,LRHC.4.STR,Structure and civils (CKE),4,Task,"LRHC 5-day (England, Christmas shutdown)",2,0,Completed,100,2026-12-16 08:00,2026-12-17 17:00,2026-12-16 08:00,2026-12-17 17:00,2026-12-16 08:00,2026-12-17 17:00,2027-01-13 08:00,2027-01-14 17:00,13,,
LRHC-UP06,2027-05-01 00:00,4-STR-1305,Issue below-ground drainage layout,LRHC.4.STR,Structure and civils (CKE),4,Task,"LRHC 5-day (England, Christmas shutdown)",1,0,Completed,100,2026-12-18 08:00,2026-12-18 17:00,2026-12-18 08:00,2026-12-18 17:00,2026-12-18 08:00,2026-12-18 17:00,2027-01-15 08:00,2027-01-15 17:00,13,,
LRHC-UP06,2027-05-01 00:00,4-STR-1400,Develop drainage and SuDS calculations,LRHC.4.STR,Structure and civils (CKE),4,Task,"LRHC 5-day (England, Christmas shutdown)",10,0,Completed,100,2026-12-02 08:00,2026-12-15 17:00,2026-12-02 08:00,2026-12-15 17:00,2026-12-02 08:00,2026-12-15 17:00,2026-12-21 08:00,2027-01-12 17:00,13,,
LRHC-UP06,2027-05-01 00:00,4-STR-1401,Check and approve drainage and SuDS calculations,LRHC.4.STR,Structure and civils (CKE),4,Task,"LRHC 5-day (England, Christmas shutdown)",2,0,Completed,100,2026-12-16 08:00,2026-12-17 17:00,2026-12-16 08:00,2026-12-17 17:00,2026-12-16 08:00,2026-12-17 17:00,2027-01-13 08:00,2027-01-14 17:00,13,,
LRHC-UP06,2027-05-01 00:00,4-STR-1405,Issue drainage and SuDS calculations,LRHC.4.STR,Structure and civils (CKE),4,Task,"LRHC 5-day (England, Christmas shutdown)",1,0,Completed,100,2026-12-18 08:00,2026-12-18 17:00,2026-12-18 08:00,2026-12-18 17:00,2026-12-18 08:00,2026-12-18 17:00,2027-01-15 08:00,2027-01-15 17:00,13,,
LRHC-UP06,2027-05-01 00:00,4-MEP-1000,"Heating, cooling and ventilation load calculations",LRHC.4.MEP,Building services (KBS),4,Task,"LRHC 5-day (England, Christmas shutdown)",5,0,Completed,100,2026-11-30 08:00,2026-12-04 17:00,2026-11-30 08:00,2026-12-04 17:00,2026-11-30 08:00,2026-12-04 17:00,2026-12-02 08:00,2026-12-08 17:00,2,,
LRHC-UP06,2027-05-01 00:00,4-MEP-1001,"Plant selection (AHU, air source heat pumps, LV switchgear)",LRHC.4.MEP,Building services (KBS),4,Task,"LRHC 5-day (England, Christmas shutdown)",5,0,Completed,100,2026-12-07 08:00,2026-12-11 17:00,2026-12-07 08:00,2026-12-11 17:00,2026-12-07 08:00,2026-12-11 17:00,2026-12-09 08:00,2026-12-15 17:00,2,,
LRHC-UP06,2027-05-01 00:00,4-MEP-1010,Develop mechanical model,LRHC.4.MEP,Building services (KBS),4,Task,"LRHC 5-day (England, Christmas shutdown)",13,0,Completed,100,2026-12-07 08:00,2026-12-23 17:00,2026-12-07 08:00,2026-12-23 17:00,2026-12-07 08:00,2026-12-23 17:00,2026-12-11 08:00,2027-01-07 17:00,4,,
LRHC-UP06,2027-05-01 00:00,4-MEP-1011,Check and approve mechanical model,LRHC.4.MEP,Building services (KBS),4,Task,"LRHC 5-day (England, Christmas shutdown)",2,0,Completed,100,2027-01-04 08:00,2027-01-05 17:00,2027-01-04 08:00,2027-01-05 17:00,2027-01-04 08:00,2027-01-05 17:00,2027-01-08 08:00,2027-01-11 17:00,4,,
LRHC-UP06,2027-05-01 00:00,4-MEP-1015,Issue mechanical model,LRHC.4.MEP,Building services (KBS),4,Task,"LRHC 5-day (England, Christmas shutdown)",1,0,Completed,100,2027-01-06 08:00,2027-01-06 17:00,2027-01-06 08:00,2027-01-06 17:00,2027-01-06 08:00,2027-01-06 17:00,2027-01-12 08:00,2027-01-12 17:00,4,,
LRHC-UP06,2027-05-01 00:00,4-MEP-1020,Develop electrical model,LRHC.4.MEP,Building services (KBS),4,Task,"LRHC 5-day (England, Christmas shutdown)",13,0,Completed,100,2026-12-07 08:00,2026-12-23 17:00,2026-12-07 08:00,2026-12-23 17:00,2026-12-07 08:00,2026-12-23 17:00,2026-12-11 08:00,2027-01-07 17:00,4,,
LRHC-UP06,2027-05-01 00:00,4-MEP-1021,Check and approve electrical model,LRHC.4.MEP,Building services (KBS),4,Task,"LRHC 5-day (England, Christmas shutdown)",2,0,Completed,100,2027-01-04 08:00,2027-01-05 17:00,2027-01-04 08:00,2027-01-05 17:00,2027-01-04 08:00,2027-01-05 17:00,2027-01-08 08:00,2027-01-11 17:00,4,,
LRHC-UP06,2027-05-01 00:00,4-MEP-1025,Issue electrical model,LRHC.4.MEP,Building services (KBS),4,Task,"LRHC 5-day (England, Christmas shutdown)",1,0,Completed,100,2027-01-06 08:00,2027-01-06 17:00,2027-01-06 08:00,2027-01-06 17:00,2027-01-06 08:00,2027-01-06 17:00,2027-01-12 08:00,2027-01-12 17:00,4,,
LRHC-UP06,2027-05-01 00:00,4-MEP-1030,Develop public health model,LRHC.4.MEP,Building services (KBS),4,Task,"LRHC 5-day (England, Christmas shutdown)",13,0,Completed,100,2026-12-07 08:00,2026-12-23 17:00,2026-12-07 08:00,2026-12-23 17:00,2026-12-07 08:00,2026-12-23 17:00,2026-12-11 08:00,2027-01-07 17:00,4,,
LRHC-UP06,2027-05-01 00:00,4-MEP-1031,Check and approve public health model,LRHC.4.MEP,Building services (KBS),4,Task,"LRHC 5-day (England, Christmas shutdown)",2,0,Completed,100,2027-01-04 08:00,2027-01-05 17:00,2027-01-04 08:00,2027-01-05 17:00,2027-01-04 08:00,2027-01-05 17:00,2027-01-08 08:00,2027-01-11 17:00,4,,
LRHC-UP06,2027-05-01 00:00,4-MEP-1035,Issue public health model,LRHC.4.MEP,Building services (KBS),4,Task,"LRHC 5-day (England, Christmas shutdown)",1,0,Completed,100,2027-01-06 08:00,2027-01-06 17:00,2027-01-06 08:00,2027-01-06 17:00,2027-01-06 08:00,2027-01-06 17:00,2027-01-12 08:00,2027-01-12 17:00,4,,
LRHC-UP06,2027-05-01 00:00,4-MEP-1100,Develop ventilation schematic,LRHC.4.MEP,Building services (KBS),4,Task,"LRHC 5-day (England, Christmas shutdown)",7,0,Completed,100,2026-12-14 08:00,2026-12-22 17:00,2026-12-14 08:00,2026-12-22 17:00,2026-12-14 08:00,2026-12-22 17:00,2027-01-04 08:00,2027-01-12 17:00,8,,
LRHC-UP06,2027-05-01 00:00,4-MEP-1101,Check and approve ventilation schematic,LRHC.4.MEP,Building services (KBS),4,Task,"LRHC 5-day (England, Christmas shutdown)",2,0,Completed,100,2026-12-23 08:00,2027-01-04 17:00,2026-12-23 08:00,2027-01-04 17:00,2026-12-23 08:00,2027-01-04 17:00,2027-01-13 08:00,2027-01-14 17:00,8,,
LRHC-UP06,2027-05-01 00:00,4-MEP-1105,Issue ventilation schematic,LRHC.4.MEP,Building services (KBS),4,Task,"LRHC 5-day (England, Christmas shutdown)",1,0,Completed,100,2027-01-05 08:00,2027-01-05 17:00,2027-01-05 08:00,2027-01-05 17:00,2027-01-05 08:00,2027-01-05 17:00,2027-01-15 08:00,2027-01-15 17:00,8,,
LRHC-UP06,2027-05-01 00:00,4-MEP-1200,Develop electrical distribution schematic,LRHC.4.MEP,Building services (KBS),4,Task,"LRHC 5-day (England, Christmas shutdown)",7,0,Completed,100,2026-12-14 08:00,2026-12-22 17:00,2026-12-14 08:00,2026-12-22 17:00,2026-12-14 08:00,2026-12-22 17:00,2027-01-04 08:00,2027-01-12 17:00,8,,
LRHC-UP06,2027-05-01 00:00,4-MEP-1201,Check and approve electrical distribution schematic,LRHC.4.MEP,Building services (KBS),4,Task,"LRHC 5-day (England, Christmas shutdown)",2,0,Completed,100,2026-12-23 08:00,2027-01-04 17:00,2026-12-23 08:00,2027-01-04 17:00,2026-12-23 08:00,2027-01-04 17:00,2027-01-13 08:00,2027-01-14 17:00,8,,
LRHC-UP06,2027-05-01 00:00,4-MEP-1205,Issue electrical distribution schematic,LRHC.4.MEP,Building services (KBS),4,Task,"LRHC 5-day (England, Christmas shutdown)",1,0,Completed,100,2027-01-05 08:00,2027-01-05 17:00,2027-01-05 08:00,2027-01-05 17:00,2027-01-05 08:00,2027-01-05 17:00,2027-01-15 08:00,2027-01-15 17:00,8,,
LRHC-UP06,2027-05-01 00:00,4-MEP-1300,Develop hot and cold water schematic (TMVs),LRHC.4.MEP,Building services (KBS),4,Task,"LRHC 5-day (England, Christmas shutdown)",7,0,Completed,100,2026-12-14 08:00,2026-12-22 17:00,2026-12-14 08:00,2026-12-22 17:00,2026-12-14 08:00,2026-12-22 17:00,2027-01-04 08:00,2027-01-12 17:00,8,,
LRHC-UP06,2027-05-01 00:00,4-MEP-1301,Check and approve hot and cold water schematic (TMVs),LRHC.4.MEP,Building services (KBS),4,Task,"LRHC 5-day (England, Christmas shutdown)",2,0,Completed,100,2026-12-23 08:00,2027-01-04 17:00,2026-12-23 08:00,2027-01-04 17:00,2026-12-23 08:00,2027-01-04 17:00,2027-01-13 08:00,2027-01-14 17:00,8,,
LRHC-UP06,2027-05-01 00:00,4-MEP-1305,Issue hot and cold water schematic (TMVs),LRHC.4.MEP,Building services (KBS),4,Task,"LRHC 5-day (England, Christmas shutdown)",1,0,Completed,100,2027-01-05 08:00,2027-01-05 17:00,2027-01-05 08:00,2027-01-05 17:00,2027-01-05 08:00,2027-01-05 17:00,2027-01-15 08:00,2027-01-15 17:00,8,,
LRHC-UP06,2027-05-01 00:00,4-MEP-1400,Develop integration specification (connected systems),LRHC.4.MEP,Building services (KBS),4,Task,"LRHC 5-day (England, Christmas shutdown)",12,0,Completed,100,2026-12-14 08:00,2027-01-07 17:00,2026-12-14 08:00,2027-01-07 17:00,2026-12-14 08:00,2027-01-07 17:00,2026-12-16 08:00,2027-01-11 17:00,2,,
LRHC-UP06,2027-05-01 00:00,4-MEP-1401,Check and approve integration specification (connected systems),LRHC.4.MEP,Building services (KBS),4,Task,"LRHC 5-day (England, Christmas shutdown)",2,0,Completed,100,2027-01-08 08:00,2027-01-11 17:00,2027-01-08 08:00,2027-01-11 17:00,2027-01-08 08:00,2027-01-11 17:00,2027-01-12 08:00,2027-01-13 17:00,2,,
LRHC-UP06,2027-05-01 00:00,4-MEP-1402,IT/OT security review of integration specification (connected systems),LRHC.4.MEP,Building services (KBS),4,Task,"LRHC 5-day (England, Christmas shutdown)",1,0,Completed,100,2027-01-12 08:00,2027-01-12 17:00,2027-01-12 08:00,2027-01-12 17:00,2027-01-12 08:00,2027-01-12 17:00,2027-01-14 08:00,2027-01-14 17:00,2,,
LRHC-UP06,2027-05-01 00:00,4-MEP-1405,Issue integration specification (connected systems),LRHC.4.MEP,Building services (KBS),4,Task,"LRHC 5-day (England, Christmas shutdown)",1,0,Completed,100,2027-01-13 08:00,2027-01-13 17:00,2027-01-13 08:00,2027-01-13 17:00,2027-01-13 08:00,2027-01-13 17:00,2027-01-15 08:00,2027-01-15 17:00,2,,
LRHC-UP06,2027-05-01 00:00,4-MEP-1500,Develop building services specification,LRHC.4.MEP,Building services (KBS),4,Task,"LRHC 5-day (England, Christmas shutdown)",15,0,Completed,100,2026-12-02 08:00,2026-12-22 17:00,2026-12-02 08:00,2026-12-22 17:00,2026-12-02 08:00,2026-12-22 17:00,2026-12-14 08:00,2027-01-12 17:00,8,,
LRHC-UP06,2027-05-01 00:00,4-MEP-1501,Check and approve building services specification,LRHC.4.MEP,Building services (KBS),4,Task,"LRHC 5-day (England, Christmas shutdown)",2,0,Completed,100,2026-12-23 08:00,2027-01-04 17:00,2026-12-23 08:00,2027-01-04 17:00,2026-12-23 08:00,2027-01-04 17:00,2027-01-13 08:00,2027-01-14 17:00,8,,
LRHC-UP06,2027-05-01 00:00,4-MEP-1505,Issue building services specification,LRHC.4.MEP,Building services (KBS),4,Task,"LRHC 5-day (England, Christmas shutdown)",1,0,Completed,100,2027-01-05 08:00,2027-01-05 17:00,2027-01-05 08:00,2027-01-05 17:00,2027-01-05 08:00,2027-01-05 17:00,2027-01-15 08:00,2027-01-15 17:00,8,,
LRHC-UP06,2027-05-01 00:00,4-MOD-1000,"Module grid, transport envelope and interface design",LRHC.4.MOD,Module design (HXM),4,Task,"LRHC 5-day (England, Christmas shutdown)",5,0,Completed,100,2026-12-02 08:00,2026-12-08 17:00,2026-12-02 08:00,2026-12-08 17:00,2026-12-02 08:00,2026-12-08 17:00,2026-12-17 08:00,2026-12-23 17:00,11,,
LRHC-UP06,2027-05-01 00:00,4-MOD-1010,Develop module fabrication model,LRHC.4.MOD,Module design (HXM),4,Task,"LRHC 5-day (England, Christmas shutdown)",7,0,Completed,100,2026-12-09 08:00,2026-12-17 17:00,2026-12-09 08:00,2026-12-17 17:00,2026-12-09 08:00,2026-12-17 17:00,2027-01-04 08:00,2027-01-12 17:00,11,,
LRHC-UP06,2027-05-01 00:00,4-MOD-1011,Check and approve module fabrication model,LRHC.4.MOD,Module design (HXM),4,Task,"LRHC 5-day (England, Christmas shutdown)",2,0,Completed,100,2026-12-18 08:00,2026-12-21 17:00,2026-12-18 08:00,2026-12-21 17:00,2026-12-18 08:00,2026-12-21 17:00,2027-01-13 08:00,2027-01-14 17:00,11,,
LRHC-UP06,2027-05-01 00:00,4-MOD-1015,Issue module fabrication model,LRHC.4.MOD,Module design (HXM),4,Task,"LRHC 5-day (England, Christmas shutdown)",1,0,Completed,100,2026-12-22 08:00,2026-12-22 17:00,2026-12-22 08:00,2026-12-22 17:00,2026-12-22 08:00,2026-12-22 17:00,2027-01-15 08:00,2027-01-15 17:00,11,,
LRHC-UP06,2027-05-01 00:00,4-MOD-1100,Develop module layout and setting-out drawing,LRHC.4.MOD,Module design (HXM),4,Task,"LRHC 5-day (England, Christmas shutdown)",6,0,Completed,100,2026-12-09 08:00,2026-12-16 17:00,2026-12-09 08:00,2026-12-16 17:00,2026-12-09 08:00,2026-12-16 17:00,2027-01-05 08:00,2027-01-12 17:00,12,,
LRHC-UP06,2027-05-01 00:00,4-MOD-1101,Check and approve module layout and setting-out drawing,LRHC.4.MOD,Module design (HXM),4,Task,"LRHC 5-day (England, Christmas shutdown)",2,0,Completed,100,2026-12-17 08:00,2026-12-18 17:00,2026-12-17 08:00,2026-12-18 17:00,2026-12-17 08:00,2026-12-18 17:00,2027-01-13 08:00,2027-01-14 17:00,12,,
LRHC-UP06,2027-05-01 00:00,4-MOD-1105,Issue module layout and setting-out drawing,LRHC.4.MOD,Module design (HXM),4,Task,"LRHC 5-day (England, Christmas shutdown)",1,0,Completed,100,2026-12-21 08:00,2026-12-21 17:00,2026-12-21 08:00,2026-12-21 17:00,2026-12-21 08:00,2026-12-21 17:00,2027-01-15 08:00,2027-01-15 17:00,12,,
LRHC-UP06,2027-05-01 00:00,4-MOD-1200,Develop module schedule,LRHC.4.MOD,Module design (HXM),4,Task,"LRHC 5-day (England, Christmas shutdown)",5,0,Completed,100,2026-12-09 08:00,2026-12-15 17:00,2026-12-09 08:00,2026-12-15 17:00,2026-12-09 08:00,2026-12-15 17:00,2027-01-06 08:00,2027-01-12 17:00,13,,
LRHC-UP06,2027-05-01 00:00,4-MOD-1201,Check and approve module schedule,LRHC.4.MOD,Module design (HXM),4,Task,"LRHC 5-day (England, Christmas shutdown)",2,0,Completed,100,2026-12-16 08:00,2026-12-17 17:00,2026-12-16 08:00,2026-12-17 17:00,2026-12-16 08:00,2026-12-17 17:00,2027-01-13 08:00,2027-01-14 17:00,13,,
LRHC-UP06,2027-05-01 00:00,4-MOD-1205,Issue module schedule,LRHC.4.MOD,Module design (HXM),4,Task,"LRHC 5-day (England, Christmas shutdown)",1,0,Completed,100,2026-12-18 08:00,2026-12-18 17:00,2026-12-18 08:00,2026-12-18 17:00,2026-12-18 08:00,2026-12-18 17:00,2027-01-15 08:00,2027-01-15 17:00,13,,
LRHC-UP06,2027-05-01 00:00,4-MOD-1900,Module design freeze,LRHC.4.MOD,Module design (HXM),4,Finish milestone,"LRHC 5-day (England, Christmas shutdown)",0,0,Completed,100,2026-12-23 17:00,2026-12-23 17:00,2026-12-23 17:00,2026-12-23 17:00,2026-12-23 17:00,2026-12-23 17:00,2027-01-22 17:00,2027-01-22 17:00,15,,
LRHC-UP06,2027-05-01 00:00,4-COO-1000,Develop first contract programme,LRHC.4.COO,Coordination and information management (BMC),4,Task,"LRHC 5-day (England, Christmas shutdown)",10,0,Completed,100,2026-11-25 08:00,2026-12-08 17:00,2026-11-25 08:00,2026-12-08 17:00,2026-11-25 08:00,2026-12-08 17:00,2026-12-22 08:00,2027-01-13 17:00,19,,
LRHC-UP06,2027-05-01 00:00,4-COO-1001,Check and approve first contract programme,LRHC.4.COO,Coordination and information management (BMC),4,Task,"LRHC 5-day (England, Christmas shutdown)",1,0,Completed,100,2026-12-09 08:00,2026-12-09 17:00,2026-12-09 08:00,2026-12-09 17:00,2026-12-09 08:00,2026-12-09 17:00,2027-01-14 08:00,2027-01-14 17:00,19,,
LRHC-UP06,2027-05-01 00:00,4-COO-1005,Issue first contract programme,LRHC.4.COO,Coordination and information management (BMC),4,Task,"LRHC 5-day (England, Christmas shutdown)",1,0,Completed,100,2026-12-10 08:00,2026-12-10 17:00,2026-12-10 08:00,2026-12-10 17:00,2026-12-10 08:00,2026-12-10 17:00,2027-01-15 08:00,2027-01-15 17:00,19,,
LRHC-UP06,2027-05-01 00:00,4-COO-1100,Develop construction phase plan,LRHC.4.COO,Coordination and information management (BMC),4,Task,"LRHC 5-day (England, Christmas shutdown)",15,0,Completed,100,2026-11-25 08:00,2026-12-15 17:00,2026-11-25 08:00,2026-12-15 17:00,2026-11-25 08:00,2026-12-15 17:00,2026-12-14 08:00,2027-01-12 17:00,13,,
LRHC-UP06,2027-05-01 00:00,4-COO-1101,Check and approve construction phase plan,LRHC.4.COO,Coordination and information management (BMC),4,Task,"LRHC 5-day (England, Christmas shutdown)",2,0,Completed,100,2026-12-16 08:00,2026-12-17 17:00,2026-12-16 08:00,2026-12-17 17:00,2026-12-16 08:00,2026-12-17 17:00,2027-01-13 08:00,2027-01-14 17:00,13,,
LRHC-UP06,2027-05-01 00:00,4-COO-1105,Issue construction phase plan,LRHC.4.COO,Coordination and information management (BMC),4,Task,"LRHC 5-day (England, Christmas shutdown)",1,0,Completed,100,2026-12-18 08:00,2026-12-18 17:00,2026-12-18 08:00,2026-12-18 17:00,2026-12-18 08:00,2026-12-18 17:00,2027-01-15 08:00,2027-01-15 17:00,13,,
LRHC-UP06,2027-05-01 00:00,4-COO-2100,"Federate models, clash round 1",LRHC.4.COO,Coordination and information management (BMC),4,Task,"LRHC 5-day (England, Christmas shutdown)",1,0,Completed,100,2026-12-09 08:00,2026-12-09 17:00,2026-12-09 08:00,2026-12-09 17:00,2026-12-09 08:00,2026-12-09 17:00,2026-12-10 08:00,2026-12-10 17:00,1,,
LRHC-UP06,2027-05-01 00:00,4-COO-2110,"Run clash detection, round 1",LRHC.4.COO,Coordination and information management (BMC),4,Task,"LRHC 5-day (England, Christmas shutdown)",1,0,Completed,100,2026-12-10 08:00,2026-12-10 17:00,2026-12-10 08:00,2026-12-10 17:00,2026-12-10 08:00,2026-12-10 17:00,2026-12-11 08:00,2026-12-11 17:00,1,,
LRHC-UP06,2027-05-01 00:00,4-COO-2120,"Coordination workshop, round 1",LRHC.4.COO,Coordination and information management (BMC),4,Task,"LRHC 5-day (England, Christmas shutdown)",1,0,Completed,100,2026-12-11 08:00,2026-12-11 17:00,2026-12-11 08:00,2026-12-11 17:00,2026-12-11 08:00,2026-12-11 17:00,2026-12-14 08:00,2026-12-14 17:00,1,,
LRHC-UP06,2027-05-01 00:00,4-COO-2130,"Resolve clashes, round 1",LRHC.4.COO,Coordination and information management (BMC),4,Task,"LRHC 5-day (England, Christmas shutdown)",3,0,Completed,100,2026-12-14 08:00,2026-12-16 17:00,2026-12-14 08:00,2026-12-16 17:00,2026-12-14 08:00,2026-12-16 17:00,2026-12-15 08:00,2026-12-17 17:00,1,,
LRHC-UP06,2027-05-01 00:00,4-COO-2200,"Federate models, clash round 2",LRHC.4.COO,Coordination and information management (BMC),4,Task,"LRHC 5-day (England, Christmas shutdown)",1,0,Completed,100,2026-12-17 08:00,2026-12-17 17:00,2026-12-17 08:00,2026-12-17 17:00,2026-12-17 08:00,2026-12-17 17:00,2026-12-18 08:00,2026-12-18 17:00,1,,
LRHC-UP06,2027-05-01 00:00,4-COO-2210,"Run clash detection, round 2",LRHC.4.COO,Coordination and information management (BMC),4,Task,"LRHC 5-day (England, Christmas shutdown)",1,0,Completed,100,2026-12-18 08:00,2026-12-18 17:00,2026-12-18 08:00,2026-12-18 17:00,2026-12-18 08:00,2026-12-18 17:00,2026-12-21 08:00,2026-12-21 17:00,1,,
LRHC-UP06,2027-05-01 00:00,4-COO-2220,"Coordination workshop, round 2",LRHC.4.COO,Coordination and information management (BMC),4,Task,"LRHC 5-day (England, Christmas shutdown)",1,0,Completed,100,2026-12-21 08:00,2026-12-21 17:00,2026-12-21 08:00,2026-12-21 17:00,2026-12-21 08:00,2026-12-21 17:00,2026-12-22 08:00,2026-12-22 17:00,1,,
LRHC-UP06,2027-05-01 00:00,4-COO-2230,"Resolve clashes, round 2",LRHC.4.COO,Coordination and information management (BMC),4,Task,"LRHC 5-day (England, Christmas shutdown)",3,0,Completed,100,2026-12-22 08:00,2027-01-04 17:00,2026-12-22 08:00,2027-01-04 17:00,2026-12-22 08:00,2027-01-04 17:00,2026-12-23 08:00,2027-01-05 17:00,1,,
LRHC-UP06,2027-05-01 00:00,4-COO-2300,"Federate models, clash round 3",LRHC.4.COO,Coordination and information management (BMC),4,Task,"LRHC 5-day (England, Christmas shutdown)",1,0,Completed,100,2027-01-05 08:00,2027-01-05 17:00,2027-01-05 08:00,2027-01-05 17:00,2027-01-05 08:00,2027-01-05 17:00,2027-01-06 08:00,2027-01-06 17:00,1,,
LRHC-UP06,2027-05-01 00:00,4-COO-2310,"Run clash detection, round 3",LRHC.4.COO,Coordination and information management (BMC),4,Task,"LRHC 5-day (England, Christmas shutdown)",1,0,Completed,100,2027-01-06 08:00,2027-01-06 17:00,2027-01-06 08:00,2027-01-06 17:00,2027-01-06 08:00,2027-01-06 17:00,2027-01-07 08:00,2027-01-07 17:00,1,,
LRHC-UP06,2027-05-01 00:00,4-COO-2320,"Coordination workshop, round 3",LRHC.4.COO,Coordination and information management (BMC),4,Task,"LRHC 5-day (England, Christmas shutdown)",1,0,Completed,100,2027-01-07 08:00,2027-01-07 17:00,2027-01-07 08:00,2027-01-07 17:00,2027-01-07 08:00,2027-01-07 17:00,2027-01-08 08:00,2027-01-08 17:00,1,,
LRHC-UP06,2027-05-01 00:00,4-COO-2330,"Resolve clashes, round 3",LRHC.4.COO,Coordination and information management (BMC),4,Task,"LRHC 5-day (England, Christmas shutdown)",2,0,Completed,100,2027-01-08 08:00,2027-01-11 17:00,2027-01-08 08:00,2027-01-11 17:00,2027-01-08 08:00,2027-01-11 17:00,2027-01-11 08:00,2027-01-12 17:00,1,,
LRHC-UP06,2027-05-01 00:00,4-COO-3000,Develop federated model (Stage 4),LRHC.4.COO,Coordination and information management (BMC),4,Task,"LRHC 5-day (England, Christmas shutdown)",1,0,Completed,100,2027-01-12 08:00,2027-01-12 17:00,2027-01-12 08:00,2027-01-12 17:00,2027-01-12 08:00,2027-01-12 17:00,2027-01-13 08:00,2027-01-13 17:00,1,,
LRHC-UP06,2027-05-01 00:00,4-COO-3001,Check and approve federated model (Stage 4),LRHC.4.COO,Coordination and information management (BMC),4,Task,"LRHC 5-day (England, Christmas shutdown)",1,0,Completed,100,2027-01-13 08:00,2027-01-13 17:00,2027-01-13 08:00,2027-01-13 17:00,2027-01-13 08:00,2027-01-13 17:00,2027-01-14 08:00,2027-01-14 17:00,1,,
LRHC-UP06,2027-05-01 00:00,4-COO-3005,Issue federated model (Stage 4),LRHC.4.COO,Coordination and information management (BMC),4,Task,"LRHC 5-day (England, Christmas shutdown)",1,0,Completed,100,2027-01-14 08:00,2027-01-14 17:00,2027-01-14 08:00,2027-01-14 17:00,2027-01-14 08:00,2027-01-14 17:00,2027-01-15 08:00,2027-01-15 17:00,1,,
LRHC-UP06,2027-05-01 00:00,4-COO-3100,Develop clash detection report (Stage 4),LRHC.4.COO,Coordination and information management (BMC),4,Task,"LRHC 5-day (England, Christmas shutdown)",1,0,Completed,100,2027-01-12 08:00,2027-01-12 17:00,2027-01-12 08:00,2027-01-12 17:00,2027-01-12 08:00,2027-01-12 17:00,2027-01-13 08:00,2027-01-13 17:00,1,,
LRHC-UP06,2027-05-01 00:00,4-COO-3101,Check and approve clash detection report (Stage 4),LRHC.4.COO,Coordination and information management (BMC),4,Task,"LRHC 5-day (England, Christmas shutdown)",1,0,Completed,100,2027-01-13 08:00,2027-01-13 17:00,2027-01-13 08:00,2027-01-13 17:00,2027-01-13 08:00,2027-01-13 17:00,2027-01-14 08:00,2027-01-14 17:00,1,,
LRHC-UP06,2027-05-01 00:00,4-COO-3105,Issue clash detection report (Stage 4),LRHC.4.COO,Coordination and information management (BMC),4,Task,"LRHC 5-day (England, Christmas shutdown)",1,0,Completed,100,2027-01-14 08:00,2027-01-14 17:00,2027-01-14 08:00,2027-01-14 17:00,2027-01-14 08:00,2027-01-14 17:00,2027-01-15 08:00,2027-01-15 17:00,1,,
LRHC-UP06,2027-05-01 00:00,4-APP-1000,Building control full plans submission,LRHC.4.APP,Statutory approvals,4,Task,"LRHC 5-day (England, Christmas shutdown)",1,0,Completed,100,2027-01-06 08:00,2027-01-06 17:00,2027-01-06 08:00,2027-01-06 17:00,2027-01-06 08:00,2027-01-06 17:00,2027-02-04 08:00,2027-02-04 17:00,21,,
LRHC-UP06,2027-05-01 00:00,4-APP-1010,Building control plan check,LRHC.4.APP,Statutory approvals,4,Task,"LRHC 5-day (England, Christmas shutdown)",20,0,Completed,100,2027-01-07 08:00,2027-02-03 17:00,2027-01-07 08:00,2027-02-03 17:00,2027-01-07 08:00,2027-02-03 17:00,2027-02-05 08:00,2027-03-04 17:00,21,,
LRHC-UP06,2027-05-01 00:00,4-APP-1020,Building control full plans approval,LRHC.4.APP,Statutory approvals,4,Finish milestone,"LRHC 5-day (England, Christmas shutdown)",0,0,Completed,100,2027-02-03 17:00,2027-02-03 17:00,2027-02-03 17:00,2027-02-03 17:00,2027-02-03 17:00,2027-02-03 17:00,2027-03-04 17:00,2027-03-04 17:00,21,,
LRHC-UP06,2027-05-01 00:00,4-APP-1100,Submit planning condition discharge: materials and external appearance,LRHC.4.APP,Statutory approvals,4,Task,"LRHC 5-day (England, Christmas shutdown)",1,0,Completed,100,2027-01-05 08:00,2027-01-05 17:00,2027-01-05 08:00,2027-01-05 17:00,2027-01-05 08:00,2027-01-05 17:00,2027-01-28 08:00,2027-01-28 17:00,17,,
LRHC-UP06,2027-05-01 00:00,4-APP-1105,Planning authority determination: materials and external appearance,LRHC.4.APP,Statutory approvals,4,Task,"LRHC 5-day (England, Christmas shutdown)",25,0,Completed,100,2027-01-06 08:00,2027-02-09 17:00,2027-01-06 08:00,2027-02-09 17:00,2027-01-06 08:00,2027-02-09 17:00,2027-01-29 08:00,2027-03-04 17:00,17,,
LRHC-UP06,2027-05-01 00:00,4-APP-1110,Submit planning condition discharge: drainage and SuDS,LRHC.4.APP,Statutory approvals,4,Task,"LRHC 5-day (England, Christmas shutdown)",1,0,Completed,100,2026-12-21 08:00,2026-12-21 17:00,2026-12-21 08:00,2026-12-21 17:00,2026-12-21 08:00,2026-12-21 17:00,2027-01-28 08:00,2027-01-28 17:00,21,,
LRHC-UP06,2027-05-01 00:00,4-APP-1115,Planning authority determination: drainage and SuDS,LRHC.4.APP,Statutory approvals,4,Task,"LRHC 5-day (England, Christmas shutdown)",25,0,Completed,100,2026-12-22 08:00,2027-02-03 17:00,2026-12-22 08:00,2027-02-03 17:00,2026-12-22 08:00,2027-02-03 17:00,2027-01-29 08:00,2027-03-04 17:00,21,,
LRHC-UP06,2027-05-01 00:00,4-APP-1120,Submit planning condition discharge: landscaping,LRHC.4.APP,Statutory approvals,4,Task,"LRHC 5-day (England, Christmas shutdown)",1,0,Completed,100,2026-12-23 08:00,2026-12-23 17:00,2026-12-23 08:00,2026-12-23 17:00,2026-12-23 08:00,2026-12-23 17:00,2027-01-28 08:00,2027-01-28 17:00,19,,
LRHC-UP06,2027-05-01 00:00,4-APP-1125,Planning authority determination: landscaping,LRHC.4.APP,Statutory approvals,4,Task,"LRHC 5-day (England, Christmas shutdown)",25,0,Completed,100,2027-01-04 08:00,2027-02-05 17:00,2027-01-04 08:00,2027-02-05 17:00,2027-01-04 08:00,2027-02-05 17:00,2027-01-29 08:00,2027-03-04 17:00,19,,
LRHC-UP06,2027-05-01 00:00,4-APP-1200,Client Stage 4 sign-off,LRHC.4.APP,Statutory approvals,4,Task,"LRHC 5-day (England, Christmas shutdown)",3,0,Completed,100,2027-01-18 08:00,2027-01-20 17:00,2027-01-18 08:00,2027-01-20 17:00,2027-01-18 08:00,2027-01-20 17:00,2027-03-02 08:00,2027-03-04 17:00,31,,
LRHC-UP06,2027-05-01 00:00,M-203-S4,M-203-S4 Stage 4 technical design complete (IE1),LRHC.KEY,Key dates and milestones,,Finish milestone,"LRHC 5-day (England, Christmas shutdown)",0,0,Completed,100,2027-01-15 17:00,2027-01-15 17:00,2027-01-15 17:00,2027-01-15 17:00,2027-01-15 17:00,2027-01-15 17:00,2027-01-15 17:00,2027-01-15 17:00,0,CS_MEO,2027-01-15 17:00
LRHC-UP06,2027-05-01 00:00,5-PRC-1000,Tender and award: Air handling unit,LRHC.5.PRC,Procurement,5,Task,"LRHC 5-day (England, Christmas shutdown)",10,0,Completed,100,2027-01-06 08:00,2027-01-19 17:00,2027-01-06 08:00,2027-01-19 17:00,2027-01-06 08:00,2027-01-19 17:00,2027-01-19 08:00,2027-02-01 17:00,9,,
LRHC-UP06,2027-05-01 00:00,5-PRC-1001,Submittals and approval: Air handling unit,LRHC.5.PRC,Procurement,5,Task,"LRHC 5-day (England, Christmas shutdown)",5,0,Completed,100,2027-01-20 08:00,2027-01-26 17:00,2027-01-20 08:00,2027-01-26 17:00,2027-01-20 08:00,2027-01-26 17:00,2027-02-02 08:00,2027-02-08 17:00,9,,
LRHC-UP06,2027-05-01 00:00,5-PRC-1002,Manufacture: Air handling unit,LRHC.5.PRC,Procurement,5,Task,"LRHC 5-day (England, Christmas shutdown)",40,0,Completed,100,2027-01-27 08:00,2027-03-23 17:00,2027-01-27 08:00,2027-03-23 17:00,2027-01-27 08:00,2027-03-23 17:00,2027-02-09 08:00,2027-04-07 17:00,9,,
LRHC-UP06,2027-05-01 00:00,5-PRC-1003,Deliver: Air handling unit,LRHC.5.PRC,Procurement,5,Task,"LRHC 5-day (England, Christmas shutdown)",1,0,Completed,100,2027-03-24 08:00,2027-03-24 17:00,2027-03-24 08:00,2027-03-24 17:00,2027-03-24 08:00,2027-03-24 17:00,2027-04-08 08:00,2027-04-08 17:00,9,,
LRHC-UP06,2027-05-01 00:00,5-PRC-1010,Tender and award: Air source heat pumps,LRHC.5.PRC,Procurement,5,Task,"LRHC 5-day (England, Christmas shutdown)",10,0,Completed,100,2027-01-06 08:00,2027-01-19 17:00,2027-01-06 08:00,2027-01-19 17:00,2027-01-06 08:00,2027-01-19 17:00,2027-02-10 08:00,2027-02-23 17:00,25,,
LRHC-UP06,2027-05-01 00:00,5-PRC-1011,Submittals and approval: Air source heat pumps,LRHC.5.PRC,Procurement,5,Task,"LRHC 5-day (England, Christmas shutdown)",5,0,Completed,100,2027-01-20 08:00,2027-01-26 17:00,2027-01-20 08:00,2027-01-26 17:00,2027-01-20 08:00,2027-01-26 17:00,2027-02-24 08:00,2027-03-02 17:00,25,,
LRHC-UP06,2027-05-01 00:00,5-PRC-1012,Manufacture: Air source heat pumps,LRHC.5.PRC,Procurement,5,Task,"LRHC 5-day (England, Christmas shutdown)",35,0,Completed,100,2027-01-27 08:00,2027-03-16 17:00,2027-01-27 08:00,2027-03-16 17:00,2027-01-27 08:00,2027-03-16 17:00,2027-03-03 08:00,2027-04-22 17:00,25,,
LRHC-UP06,2027-05-01 00:00,5-PRC-1013,Deliver: Air source heat pumps,LRHC.5.PRC,Procurement,5,Task,"LRHC 5-day (England, Christmas shutdown)",1,0,Completed,100,2027-03-17 08:00,2027-03-17 17:00,2027-03-17 08:00,2027-03-17 17:00,2027-03-17 08:00,2027-03-17 17:00,2027-04-23 08:00,2027-04-23 17:00,25,,
LRHC-UP06,2027-05-01 00:00,5-PRC-1020,Tender and award: LV switchgear and distribution boards,LRHC.5.PRC,Procurement,5,Task,"LRHC 5-day (England, Christmas shutdown)",10,0,Completed,100,2027-01-06 08:00,2027-01-19 17:00,2027-01-06 08:00,2027-01-19 17:00,2027-01-06 08:00,2027-01-19 17:00,2027-02-08 08:00,2027-02-19 17:00,23,,
LRHC-UP06,2027-05-01 00:00,5-PRC-1021,Submittals and approval: LV switchgear and distribution boards,LRHC.5.PRC,Procurement,5,Task,"LRHC 5-day (England, Christmas shutdown)",5,0,Completed,100,2027-01-20 08:00,2027-01-26 17:00,2027-01-20 08:00,2027-01-26 17:00,2027-01-20 08:00,2027-01-26 17:00,2027-02-22 08:00,2027-02-26 17:00,23,,
LRHC-UP06,2027-05-01 00:00,5-PRC-1022,Manufacture: LV switchgear and distribution boards,LRHC.5.PRC,Procurement,5,Task,"LRHC 5-day (England, Christmas shutdown)",30,0,Completed,100,2027-01-27 08:00,2027-03-09 17:00,2027-01-27 08:00,2027-03-09 17:00,2027-01-27 08:00,2027-03-09 17:00,2027-03-01 08:00,2027-04-13 17:00,23,,
LRHC-UP06,2027-05-01 00:00,5-PRC-1023,Deliver: LV switchgear and distribution boards,LRHC.5.PRC,Procurement,5,Task,"LRHC 5-day (England, Christmas shutdown)",1,0,Completed,100,2027-03-10 08:00,2027-03-10 17:00,2027-03-10 08:00,2027-03-10 17:00,2027-03-10 08:00,2027-03-10 17:00,2027-04-14 08:00,2027-04-14 17:00,23,,
LRHC-UP06,2027-05-01 00:00,5-PRC-1030,Tender and award: BMS controls and integration gateway,LRHC.5.PRC,Procurement,5,Task,"LRHC 5-day (England, Christmas shutdown)",10,0,Completed,100,2027-01-14 08:00,2027-01-27 17:00,2027-01-14 08:00,2027-01-27 17:00,2027-01-14 08:00,2027-01-27 17:00,2027-02-09 08:00,2027-02-22 17:00,18,,
LRHC-UP06,2027-05-01 00:00,5-PRC-1031,Submittals and approval: BMS controls and integration gateway,LRHC.5.PRC,Procurement,5,Task,"LRHC 5-day (England, Christmas shutdown)",5,0,Completed,100,2027-01-28 08:00,2027-02-03 17:00,2027-01-28 08:00,2027-02-03 17:00,2027-01-28 08:00,2027-02-03 17:00,2027-02-23 08:00,2027-03-01 17:00,18,,
LRHC-UP06,2027-05-01 00:00,5-PRC-1032,Manufacture: BMS controls and integration gateway,LRHC.5.PRC,Procurement,5,Task,"LRHC 5-day (England, Christmas shutdown)",20,0,Completed,100,2027-02-04 08:00,2027-03-03 17:00,2027-02-04 08:00,2027-03-03 17:00,2027-02-04 08:00,2027-03-03 17:00,2027-03-02 08:00,2027-03-31 17:00,18,,
LRHC-UP06,2027-05-01 00:00,5-PRC-1033,Deliver: BMS controls and integration gateway,LRHC.5.PRC,Procurement,5,Task,"LRHC 5-day (England, Christmas shutdown)",1,0,Completed,100,2027-03-04 08:00,2027-03-04 17:00,2027-03-04 08:00,2027-03-04 17:00,2027-03-04 08:00,2027-03-04 17:00,2027-04-01 08:00,2027-04-01 17:00,18,,
LRHC-UP06,2027-05-01 00:00,5-PRC-1040,Tender and award: Fire detection and alarm,LRHC.5.PRC,Procurement,5,Task,"LRHC 5-day (England, Christmas shutdown)",10,0,Completed,100,2027-01-06 08:00,2027-01-19 17:00,2027-01-06 08:00,2027-01-19 17:00,2027-01-06 08:00,2027-01-19 17:00,2027-03-16 08:00,2027-03-31 17:00,49,,
LRHC-UP06,2027-05-01 00:00,5-PRC-1041,Submittals and approval: Fire detection and alarm,LRHC.5.PRC,Procurement,5,Task,"LRHC 5-day (England, Christmas shutdown)",5,0,Completed,100,2027-01-20 08:00,2027-01-26 17:00,2027-01-20 08:00,2027-01-26 17:00,2027-01-20 08:00,2027-01-26 17:00,2027-04-01 08:00,2027-04-07 17:00,49,,
LRHC-UP06,2027-05-01 00:00,5-PRC-1042,Manufacture: Fire detection and alarm,LRHC.5.PRC,Procurement,5,Task,"LRHC 5-day (England, Christmas shutdown)",20,0,Completed,100,2027-01-27 08:00,2027-02-23 17:00,2027-01-27 08:00,2027-02-23 17:00,2027-01-27 08:00,2027-02-23 17:00,2027-04-08 08:00,2027-05-06 17:00,49,,
LRHC-UP06,2027-05-01 00:00,5-PRC-1043,Deliver: Fire detection and alarm,LRHC.5.PRC,Procurement,5,Task,"LRHC 5-day (England, Christmas shutdown)",1,0,Completed,100,2027-02-24 08:00,2027-02-24 17:00,2027-02-24 08:00,2027-02-24 17:00,2027-02-24 08:00,2027-02-24 17:00,2027-05-07 08:00,2027-05-07 17:00,49,,
LRHC-UP06,2027-05-01 00:00,5-PRC-1050,Tender and award: Nurse call and assistance call,LRHC.5.PRC,Procurement,5,Task,"LRHC 5-day (England, Christmas shutdown)",10,0,Completed,100,2027-01-06 08:00,2027-01-19 17:00,2027-01-06 08:00,2027-01-19 17:00,2027-01-06 08:00,2027-01-19 17:00,2027-03-24 08:00,2027-04-08 17:00,55,,
LRHC-UP06,2027-05-01 00:00,5-PRC-1051,Submittals and approval: Nurse call and assistance call,LRHC.5.PRC,Procurement,5,Task,"LRHC 5-day (England, Christmas shutdown)",5,0,Completed,100,2027-01-20 08:00,2027-01-26 17:00,2027-01-20 08:00,2027-01-26 17:00,2027-01-20 08:00,2027-01-26 17:00,2027-04-09 08:00,2027-04-15 17:00,55,,
LRHC-UP06,2027-05-01 00:00,5-PRC-1052,Manufacture: Nurse call and assistance call,LRHC.5.PRC,Procurement,5,Task,"LRHC 5-day (England, Christmas shutdown)",20,0,Completed,100,2027-01-27 08:00,2027-02-23 17:00,2027-01-27 08:00,2027-02-23 17:00,2027-01-27 08:00,2027-02-23 17:00,2027-04-16 08:00,2027-05-14 17:00,55,,
LRHC-UP06,2027-05-01 00:00,5-PRC-1053,Deliver: Nurse call and assistance call,LRHC.5.PRC,Procurement,5,Task,"LRHC 5-day (England, Christmas shutdown)",1,0,Completed,100,2027-02-24 08:00,2027-02-24 17:00,2027-02-24 08:00,2027-02-24 17:00,2027-02-24 08:00,2027-02-24 17:00,2027-05-17 08:00,2027-05-17 17:00,55,,
LRHC-UP06,2027-05-01 00:00,5-PRC-1060,Tender and award: Emergency lighting,LRHC.5.PRC,Procurement,5,Task,"LRHC 5-day (England, Christmas shutdown)",10,0,Completed,100,2027-01-06 08:00,2027-01-19 17:00,2027-01-06 08:00,2027-01-19 17:00,2027-01-06 08:00,2027-01-19 17:00,2027-04-05 08:00,2027-04-16 17:00,61,,
LRHC-UP06,2027-05-01 00:00,5-PRC-1061,Submittals and approval: Emergency lighting,LRHC.5.PRC,Procurement,5,Task,"LRHC 5-day (England, Christmas shutdown)",5,0,Completed,100,2027-01-20 08:00,2027-01-26 17:00,2027-01-20 08:00,2027-01-26 17:00,2027-01-20 08:00,2027-01-26 17:00,2027-04-19 08:00,2027-04-23 17:00,61,,
LRHC-UP06,2027-05-01 00:00,5-PRC-1062,Manufacture: Emergency lighting,LRHC.5.PRC,Procurement,5,Task,"LRHC 5-day (England, Christmas shutdown)",15,0,Completed,100,2027-01-27 08:00,2027-02-16 17:00,2027-01-27 08:00,2027-02-16 17:00,2027-01-27 08:00,2027-02-16 17:00,2027-04-26 08:00,2027-05-17 17:00,61,,
LRHC-UP06,2027-05-01 00:00,5-PRC-1063,Deliver: Emergency lighting,LRHC.5.PRC,Procurement,5,Task,"LRHC 5-day (England, Christmas shutdown)",1,0,Completed,100,2027-02-17 08:00,2027-02-17 17:00,2027-02-17 08:00,2027-02-17 17:00,2027-02-17 08:00,2027-02-17 17:00,2027-05-18 08:00,2027-05-18 17:00,61,,
LRHC-UP06,2027-05-01 00:00,5-PRC-1070,Tender and award: Luminaires,LRHC.5.PRC,Procurement,5,Task,"LRHC 5-day (England, Christmas shutdown)",10,0,Completed,100,2027-01-06 08:00,2027-01-19 17:00,2027-01-06 08:00,2027-01-19 17:00,2027-01-06 08:00,2027-01-19 17:00,2027-03-02 08:00,2027-03-15 17:00,39,,
LRHC-UP06,2027-05-01 00:00,5-PRC-1071,Submittals and approval: Luminaires,LRHC.5.PRC,Procurement,5,Task,"LRHC 5-day (England, Christmas shutdown)",5,0,Completed,100,2027-01-20 08:00,2027-01-26 17:00,2027-01-20 08:00,2027-01-26 17:00,2027-01-20 08:00,2027-01-26 17:00,2027-03-16 08:00,2027-03-22 17:00,39,,
LRHC-UP06,2027-05-01 00:00,5-PRC-1072,Manufacture: Luminaires,LRHC.5.PRC,Procurement,5,Task,"LRHC 5-day (England, Christmas shutdown)",15,0,Completed,100,2027-01-27 08:00,2027-02-16 17:00,2027-01-27 08:00,2027-02-16 17:00,2027-01-27 08:00,2027-02-16 17:00,2027-03-23 08:00,2027-04-14 17:00,39,,
LRHC-UP06,2027-05-01 00:00,5-PRC-1073,Deliver: Luminaires,LRHC.5.PRC,Procurement,5,Task,"LRHC 5-day (England, Christmas shutdown)",1,0,Completed,100,2027-02-17 08:00,2027-02-17 17:00,2027-02-17 08:00,2027-02-17 17:00,2027-02-17 08:00,2027-02-17 17:00,2027-04-15 08:00,2027-04-15 17:00,39,,
LRHC-UP06,2027-05-01 00:00,5-PRC-1080,Tender and award: TMVs and sanitaryware,LRHC.5.PRC,Procurement,5,Task,"LRHC 5-day (England, Christmas shutdown)",10,0,Completed,100,2027-01-06 08:00,2027-01-19 17:00,2027-01-06 08:00,2027-01-19 17:00,2027-01-06 08:00,2027-01-19 17:00,2027-03-19 08:00,2027-04-05 17:00,52,,
LRHC-UP06,2027-05-01 00:00,5-PRC-1081,Submittals and approval: TMVs and sanitaryware,LRHC.5.PRC,Procurement,5,Task,"LRHC 5-day (England, Christmas shutdown)",5,0,Completed,100,2027-01-20 08:00,2027-01-26 17:00,2027-01-20 08:00,2027-01-26 17:00,2027-01-20 08:00,2027-01-26 17:00,2027-04-06 08:00,2027-04-12 17:00,52,,
LRHC-UP06,2027-05-01 00:00,5-PRC-1082,Manufacture: TMVs and sanitaryware,LRHC.5.PRC,Procurement,5,Task,"LRHC 5-day (England, Christmas shutdown)",15,0,Completed,100,2027-01-27 08:00,2027-02-16 17:00,2027-01-27 08:00,2027-02-16 17:00,2027-01-27 08:00,2027-02-16 17:00,2027-04-13 08:00,2027-05-04 17:00,52,,
LRHC-UP06,2027-05-01 00:00,5-PRC-1083,Deliver: TMVs and sanitaryware,LRHC.5.PRC,Procurement,5,Task,"LRHC 5-day (England, Christmas shutdown)",1,0,Completed,100,2027-02-17 08:00,2027-02-17 17:00,2027-02-17 08:00,2027-02-17 17:00,2027-02-17 08:00,2027-02-17 17:00,2027-05-05 08:00,2027-05-05 17:00,52,,
LRHC-UP06,2027-05-01 00:00,5-PRC-1090,Tender and award: Roof membrane,LRHC.5.PRC,Procurement,5,Task,"LRHC 5-day (England, Christmas shutdown)",10,0,Completed,100,2027-01-06 08:00,2027-01-19 17:00,2027-01-06 08:00,2027-01-19 17:00,2027-01-06 08:00,2027-01-19 17:00,2027-02-15 08:00,2027-02-26 17:00,28,,
LRHC-UP06,2027-05-01 00:00,5-PRC-1091,Submittals and approval: Roof membrane,LRHC.5.PRC,Procurement,5,Task,"LRHC 5-day (England, Christmas shutdown)",5,0,Completed,100,2027-01-20 08:00,2027-01-26 17:00,2027-01-20 08:00,2027-01-26 17:00,2027-01-20 08:00,2027-01-26 17:00,2027-03-01 08:00,2027-03-05 17:00,28,,
LRHC-UP06,2027-05-01 00:00,5-PRC-1092,Manufacture: Roof membrane,LRHC.5.PRC,Procurement,5,Task,"LRHC 5-day (England, Christmas shutdown)",10,0,Completed,100,2027-01-27 08:00,2027-02-09 17:00,2027-01-27 08:00,2027-02-09 17:00,2027-01-27 08:00,2027-02-09 17:00,2027-03-08 08:00,2027-03-19 17:00,28,,
LRHC-UP06,2027-05-01 00:00,5-PRC-1093,Deliver: Roof membrane,LRHC.5.PRC,Procurement,5,Task,"LRHC 5-day (England, Christmas shutdown)",1,0,Completed,100,2027-02-10 08:00,2027-02-10 17:00,2027-02-10 08:00,2027-02-10 17:00,2027-02-10 08:00,2027-02-10 17:00,2027-03-22 08:00,2027-03-22 17:00,28,,
LRHC-UP06,2027-05-01 00:00,5-PRC-1100,Tender and award: Cladding junction kits,LRHC.5.PRC,Procurement,5,Task,"LRHC 5-day (England, Christmas shutdown)",10,0,Completed,100,2027-01-06 08:00,2027-01-19 17:00,2027-01-06 08:00,2027-01-19 17:00,2027-01-06 08:00,2027-01-19 17:00,2027-04-01 08:00,2027-04-14 17:00,59,,
LRHC-UP06,2027-05-01 00:00,5-PRC-1101,Submittals and approval: Cladding junction kits,LRHC.5.PRC,Procurement,5,Task,"LRHC 5-day (England, Christmas shutdown)",5,0,Completed,100,2027-01-20 08:00,2027-01-26 17:00,2027-01-20 08:00,2027-01-26 17:00,2027-01-20 08:00,2027-01-26 17:00,2027-04-15 08:00,2027-04-21 17:00,59,,
LRHC-UP06,2027-05-01 00:00,5-PRC-1102,Manufacture: Cladding junction kits,LRHC.5.PRC,Procurement,5,Task,"LRHC 5-day (England, Christmas shutdown)",15,0,Completed,100,2027-01-27 08:00,2027-02-16 17:00,2027-01-27 08:00,2027-02-16 17:00,2027-01-27 08:00,2027-02-16 17:00,2027-04-22 08:00,2027-05-13 17:00,59,,
LRHC-UP06,2027-05-01 00:00,5-PRC-1103,Deliver: Cladding junction kits,LRHC.5.PRC,Procurement,5,Task,"LRHC 5-day (England, Christmas shutdown)",1,0,Completed,100,2027-02-17 08:00,2027-02-17 17:00,2027-02-17 08:00,2027-02-17 17:00,2027-02-17 08:00,2027-02-17 17:00,2027-05-14 08:00,2027-05-14 17:00,59,,
LRHC-UP06,2027-05-01 00:00,5-PRC-1110,Tender and award: External doors and entrance canopy,LRHC.5.PRC,Procurement,5,Task,"LRHC 5-day (England, Christmas shutdown)",10,0,Completed,100,2027-01-06 08:00,2027-01-19 17:00,2027-01-06 08:00,2027-01-19 17:00,2027-01-06 08:00,2027-01-19 17:00,2027-03-31 08:00,2027-04-13 17:00,58,,
LRHC-UP06,2027-05-01 00:00,5-PRC-1111,Submittals and approval: External doors and entrance canopy,LRHC.5.PRC,Procurement,5,Task,"LRHC 5-day (England, Christmas shutdown)",5,0,Completed,100,2027-01-20 08:00,2027-01-26 17:00,2027-01-20 08:00,2027-01-26 17:00,2027-01-20 08:00,2027-01-26 17:00,2027-04-14 08:00,2027-04-20 17:00,58,,
LRHC-UP06,2027-05-01 00:00,5-PRC-1112,Manufacture: External doors and entrance canopy,LRHC.5.PRC,Procurement,5,Task,"LRHC 5-day (England, Christmas shutdown)",20,0,Completed,100,2027-01-27 08:00,2027-02-23 17:00,2027-01-27 08:00,2027-02-23 17:00,2027-01-27 08:00,2027-02-23 17:00,2027-04-21 08:00,2027-05-19 17:00,58,,
LRHC-UP06,2027-05-01 00:00,5-PRC-1113,Deliver: External doors and entrance canopy,LRHC.5.PRC,Procurement,5,Task,"LRHC 5-day (England, Christmas shutdown)",1,0,Completed,100,2027-02-24 08:00,2027-02-24 17:00,2027-02-24 08:00,2027-02-24 17:00,2027-02-24 08:00,2027-02-24 17:00,2027-05-20 08:00,2027-05-20 17:00,58,,
LRHC-UP06,2027-05-01 00:00,5-PRC-1120,Tender and award: External lighting,LRHC.5.PRC,Procurement,5,Task,"LRHC 5-day (England, Christmas shutdown)",10,0,Completed,100,2026-12-23 08:00,2027-01-14 17:00,2026-12-23 08:00,2027-01-14 17:00,2026-12-23 08:00,2027-01-14 17:00,2027-04-15 08:00,2027-04-28 17:00,72,,
LRHC-UP06,2027-05-01 00:00,5-PRC-1121,Submittals and approval: External lighting,LRHC.5.PRC,Procurement,5,Task,"LRHC 5-day (England, Christmas shutdown)",5,0,Completed,100,2027-01-15 08:00,2027-01-21 17:00,2027-01-15 08:00,2027-01-21 17:00,2027-01-15 08:00,2027-01-21 17:00,2027-04-29 08:00,2027-05-06 17:00,72,,
LRHC-UP06,2027-05-01 00:00,5-PRC-1122,Manufacture: External lighting,LRHC.5.PRC,Procurement,5,Task,"LRHC 5-day (England, Christmas shutdown)",15,0,Completed,100,2027-01-22 08:00,2027-02-11 17:00,2027-01-22 08:00,2027-02-11 17:00,2027-01-22 08:00,2027-02-11 17:00,2027-05-07 08:00,2027-05-27 17:00,72,,
LRHC-UP06,2027-05-01 00:00,5-PRC-1123,Deliver: External lighting,LRHC.5.PRC,Procurement,5,Task,"LRHC 5-day (England, Christmas shutdown)",1,0,Completed,100,2027-02-12 08:00,2027-02-12 17:00,2027-02-12 08:00,2027-02-12 17:00,2027-02-12 08:00,2027-02-12 17:00,2027-05-28 08:00,2027-05-28 17:00,72,,
LRHC-UP06,2027-05-01 00:00,5-FAB-1000,Factory production slot and jig set-up,LRHC.5.FAB,Factory production (HXM),5,Task,"LRHC 5-day (England, Christmas shutdown)",5,0,Completed,100,2027-01-04 08:00,2027-01-08 17:00,2027-01-04 08:00,2027-01-08 17:00,2027-01-04 08:00,2027-01-08 17:00,2027-01-25 08:00,2027-01-29 17:00,15,,
LRHC-UP06,2027-05-01 00:00,5-FAB-1001,Factory first-fix materials delivered,LRHC.5.FAB,Factory production (HXM),5,Task,"LRHC 5-day (England, Christmas shutdown)",3,0,Completed,100,2027-01-06 08:00,2027-01-08 17:00,2027-01-06 08:00,2027-01-08 17:00,2027-01-06 08:00,2027-01-08 17:00,2027-02-08 08:00,2027-02-10 17:00,23,,
LRHC-UP06,2027-05-01 00:00,5-FAB-M010,Module M01 (Z1): Chassis and floor cassette,LRHC.5.FAB,Factory production (HXM),5,Task,"LRHC 5-day (England, Christmas shutdown)",4,0,Completed,100,2027-01-11 08:00,2027-01-14 17:00,2027-01-11 08:00,2027-01-14 17:00,2027-01-11 08:00,2027-01-14 17:00,2027-02-01 08:00,2027-02-04 17:00,15,,
LRHC-UP06,2027-05-01 00:00,5-FAB-M011,"Module M01 (Z1): Walls, roof and windows",LRHC.5.FAB,Factory production (HXM),5,Task,"LRHC 5-day (England, Christmas shutdown)",4,0,Completed,100,2027-01-15 08:00,2027-01-20 17:00,2027-01-15 08:00,2027-01-20 17:00,2027-01-15 08:00,2027-01-20 17:00,2027-02-05 08:00,2027-02-10 17:00,15,,
LRHC-UP06,2027-05-01 00:00,5-FAB-M012,Module M01 (Z1): First-fix M&E and linings,LRHC.5.FAB,Factory production (HXM),5,Task,"LRHC 5-day (England, Christmas shutdown)",5,0,Completed,100,2027-01-21 08:00,2027-01-27 17:00,2027-01-21 08:00,2027-01-27 17:00,2027-01-21 08:00,2027-01-27 17:00,2027-02-11 08:00,2027-02-17 17:00,15,,
LRHC-UP06,2027-05-01 00:00,5-FAB-M013,Module M01 (Z1): Factory QA inspection and ready to dispatch,LRHC.5.FAB,Factory production (HXM),5,Task,"LRHC 5-day (England, Christmas shutdown)",2,0,Completed,100,2027-01-28 08:00,2027-01-29 17:00,2027-01-28 08:00,2027-01-29 17:00,2027-01-28 08:00,2027-01-29 17:00,2027-02-18 08:00,2027-02-19 17:00,15,,
LRHC-UP06,2027-05-01 00:00,5-FAB-M020,Module M02 (Z1): Chassis and floor cassette,LRHC.5.FAB,Factory production (HXM),5,Task,"LRHC 5-day (England, Christmas shutdown)",4,0,Completed,100,2027-01-13 08:00,2027-01-18 17:00,2027-01-13 08:00,2027-01-18 17:00,2027-01-13 08:00,2027-01-18 17:00,2027-02-03 08:00,2027-02-08 17:00,15,,
LRHC-UP06,2027-05-01 00:00,5-FAB-M021,"Module M02 (Z1): Walls, roof and windows",LRHC.5.FAB,Factory production (HXM),5,Task,"LRHC 5-day (England, Christmas shutdown)",4,0,Completed,100,2027-01-19 08:00,2027-01-22 17:00,2027-01-19 08:00,2027-01-22 17:00,2027-01-19 08:00,2027-01-22 17:00,2027-02-09 08:00,2027-02-12 17:00,15,,
LRHC-UP06,2027-05-01 00:00,5-FAB-M022,Module M02 (Z1): First-fix M&E and linings,LRHC.5.FAB,Factory production (HXM),5,Task,"LRHC 5-day (England, Christmas shutdown)",5,0,Completed,100,2027-01-25 08:00,2027-01-29 17:00,2027-01-25 08:00,2027-01-29 17:00,2027-01-25 08:00,2027-01-29 17:00,2027-02-15 08:00,2027-02-19 17:00,15,,
LRHC-UP06,2027-05-01 00:00,5-FAB-M023,Module M02 (Z1): Factory QA inspection and ready to dispatch,LRHC.5.FAB,Factory production (HXM),5,Task,"LRHC 5-day (England, Christmas shutdown)",2,0,Completed,100,2027-02-01 08:00,2027-02-02 17:00,2027-02-01 08:00,2027-02-02 17:00,2027-02-01 08:00,2027-02-02 17:00,2027-02-22 08:00,2027-02-23 17:00,15,,
LRHC-UP06,2027-05-01 00:00,5-FAB-M030,Module M03 (Z1): Chassis and floor cassette,LRHC.5.FAB,Factory production (HXM),5,Task,"LRHC 5-day (England, Christmas shutdown)",4,0,Completed,100,2027-01-15 08:00,2027-01-20 17:00,2027-01-15 08:00,2027-01-20 17:00,2027-01-15 08:00,2027-01-20 17:00,2027-02-05 08:00,2027-02-10 17:00,15,,
LRHC-UP06,2027-05-01 00:00,5-FAB-M031,"Module M03 (Z1): Walls, roof and windows",LRHC.5.FAB,Factory production (HXM),5,Task,"LRHC 5-day (England, Christmas shutdown)",4,0,Completed,100,2027-01-21 08:00,2027-01-26 17:00,2027-01-21 08:00,2027-01-26 17:00,2027-01-21 08:00,2027-01-26 17:00,2027-02-11 08:00,2027-02-16 17:00,15,,
LRHC-UP06,2027-05-01 00:00,5-FAB-M032,Module M03 (Z1): First-fix M&E and linings,LRHC.5.FAB,Factory production (HXM),5,Task,"LRHC 5-day (England, Christmas shutdown)",5,0,Completed,100,2027-01-27 08:00,2027-02-02 17:00,2027-01-27 08:00,2027-02-02 17:00,2027-01-27 08:00,2027-02-02 17:00,2027-02-17 08:00,2027-02-23 17:00,15,,
LRHC-UP06,2027-05-01 00:00,5-FAB-M033,Module M03 (Z1): Factory QA inspection and ready to dispatch,LRHC.5.FAB,Factory production (HXM),5,Task,"LRHC 5-day (England, Christmas shutdown)",2,0,Completed,100,2027-02-03 08:00,2027-02-04 17:00,2027-02-03 08:00,2027-02-04 17:00,2027-02-03 08:00,2027-02-04 17:00,2027-02-24 08:00,2027-02-25 17:00,15,,
LRHC-UP06,2027-05-01 00:00,5-FAB-M040,Module M04 (Z2): Chassis and floor cassette,LRHC.5.FAB,Factory production (HXM),5,Task,"LRHC 5-day (England, Christmas shutdown)",4,0,Completed,100,2027-01-19 08:00,2027-01-22 17:00,2027-01-19 08:00,2027-01-22 17:00,2027-01-19 08:00,2027-01-22 17:00,2027-02-09 08:00,2027-02-12 17:00,15,,
LRHC-UP06,2027-05-01 00:00,5-FAB-M041,"Module M04 (Z2): Walls, roof and windows",LRHC.5.FAB,Factory production (HXM),5,Task,"LRHC 5-day (England, Christmas shutdown)",4,0,Completed,100,2027-01-25 08:00,2027-01-28 17:00,2027-01-25 08:00,2027-01-28 17:00,2027-01-25 08:00,2027-01-28 17:00,2027-02-15 08:00,2027-02-18 17:00,15,,
LRHC-UP06,2027-05-01 00:00,5-FAB-M042,Module M04 (Z2): First-fix M&E and linings,LRHC.5.FAB,Factory production (HXM),5,Task,"LRHC 5-day (England, Christmas shutdown)",5,0,Completed,100,2027-01-29 08:00,2027-02-04 17:00,2027-01-29 08:00,2027-02-04 17:00,2027-01-29 08:00,2027-02-04 17:00,2027-02-19 08:00,2027-02-25 17:00,15,,
LRHC-UP06,2027-05-01 00:00,5-FAB-M043,Module M04 (Z2): Factory QA inspection and ready to dispatch,LRHC.5.FAB,Factory production (HXM),5,Task,"LRHC 5-day (England, Christmas shutdown)",2,0,Completed,100,2027-02-05 08:00,2027-02-08 17:00,2027-02-05 08:00,2027-02-08 17:00,2027-02-05 08:00,2027-02-08 17:00,2027-02-26 08:00,2027-03-01 17:00,15,,
LRHC-UP06,2027-05-01 00:00,5-FAB-M050,Module M05 (Z2): Chassis and floor cassette,LRHC.5.FAB,Factory production (HXM),5,Task,"LRHC 5-day (England, Christmas shutdown)",4,0,Completed,100,2027-01-21 08:00,2027-01-26 17:00,2027-01-21 08:00,2027-01-26 17:00,2027-01-21 08:00,2027-01-26 17:00,2027-02-11 08:00,2027-02-16 17:00,15,,
LRHC-UP06,2027-05-01 00:00,5-FAB-M051,"Module M05 (Z2): Walls, roof and windows",LRHC.5.FAB,Factory production (HXM),5,Task,"LRHC 5-day (England, Christmas shutdown)",4,0,Completed,100,2027-01-27 08:00,2027-02-01 17:00,2027-01-27 08:00,2027-02-01 17:00,2027-01-27 08:00,2027-02-01 17:00,2027-02-17 08:00,2027-02-22 17:00,15,,
LRHC-UP06,2027-05-01 00:00,5-FAB-M052,Module M05 (Z2): First-fix M&E and linings,LRHC.5.FAB,Factory production (HXM),5,Task,"LRHC 5-day (England, Christmas shutdown)",5,0,Completed,100,2027-02-02 08:00,2027-02-08 17:00,2027-02-02 08:00,2027-02-08 17:00,2027-02-02 08:00,2027-02-08 17:00,2027-02-23 08:00,2027-03-01 17:00,15,,
LRHC-UP06,2027-05-01 00:00,5-FAB-M053,Module M05 (Z2): Factory QA inspection and ready to dispatch,LRHC.5.FAB,Factory production (HXM),5,Task,"LRHC 5-day (England, Christmas shutdown)",2,0,Completed,100,2027-02-09 08:00,2027-02-10 17:00,2027-02-09 08:00,2027-02-10 17:00,2027-02-09 08:00,2027-02-10 17:00,2027-03-02 08:00,2027-03-03 17:00,15,,
LRHC-UP06,2027-05-01 00:00,5-FAB-M060,Module M06 (Z2): Chassis and floor cassette,LRHC.5.FAB,Factory production (HXM),5,Task,"LRHC 5-day (England, Christmas shutdown)",4,0,Completed,100,2027-01-25 08:00,2027-01-28 17:00,2027-01-25 08:00,2027-01-28 17:00,2027-01-25 08:00,2027-01-28 17:00,2027-02-15 08:00,2027-02-18 17:00,15,,
LRHC-UP06,2027-05-01 00:00,5-FAB-M061,"Module M06 (Z2): Walls, roof and windows",LRHC.5.FAB,Factory production (HXM),5,Task,"LRHC 5-day (England, Christmas shutdown)",4,0,Completed,100,2027-01-29 08:00,2027-02-03 17:00,2027-01-29 08:00,2027-02-03 17:00,2027-01-29 08:00,2027-02-03 17:00,2027-02-19 08:00,2027-02-24 17:00,15,,
LRHC-UP06,2027-05-01 00:00,5-FAB-M062,Module M06 (Z2): First-fix M&E and linings,LRHC.5.FAB,Factory production (HXM),5,Task,"LRHC 5-day (England, Christmas shutdown)",5,0,Completed,100,2027-02-04 08:00,2027-02-10 17:00,2027-02-04 08:00,2027-02-10 17:00,2027-02-04 08:00,2027-02-10 17:00,2027-02-25 08:00,2027-03-03 17:00,15,,
LRHC-UP06,2027-05-01 00:00,5-FAB-M063,Module M06 (Z2): Factory QA inspection and ready to dispatch,LRHC.5.FAB,Factory production (HXM),5,Task,"LRHC 5-day (England, Christmas shutdown)",2,0,Completed,100,2027-02-11 08:00,2027-02-12 17:00,2027-02-11 08:00,2027-02-12 17:00,2027-02-11 08:00,2027-02-12 17:00,2027-03-04 08:00,2027-03-05 17:00,15,,
LRHC-UP06,2027-05-01 00:00,5-FAB-M070,Module M07 (Z2): Chassis and floor cassette,LRHC.5.FAB,Factory production (HXM),5,Task,"LRHC 5-day (England, Christmas shutdown)",4,0,Completed,100,2027-01-27 08:00,2027-02-01 17:00,2027-01-27 08:00,2027-02-01 17:00,2027-01-27 08:00,2027-02-01 17:00,2027-02-17 08:00,2027-02-22 17:00,15,,
LRHC-UP06,2027-05-01 00:00,5-FAB-M071,"Module M07 (Z2): Walls, roof and windows",LRHC.5.FAB,Factory production (HXM),5,Task,"LRHC 5-day (England, Christmas shutdown)",4,0,Completed,100,2027-02-02 08:00,2027-02-05 17:00,2027-02-02 08:00,2027-02-05 17:00,2027-02-02 08:00,2027-02-05 17:00,2027-02-23 08:00,2027-02-26 17:00,15,,
LRHC-UP06,2027-05-01 00:00,5-FAB-M072,Module M07 (Z2): First-fix M&E and linings,LRHC.5.FAB,Factory production (HXM),5,Task,"LRHC 5-day (England, Christmas shutdown)",5,0,Completed,100,2027-02-08 08:00,2027-02-12 17:00,2027-02-08 08:00,2027-02-12 17:00,2027-02-08 08:00,2027-02-12 17:00,2027-03-01 08:00,2027-03-05 17:00,15,,
LRHC-UP06,2027-05-01 00:00,5-FAB-M073,Module M07 (Z2): Factory QA inspection and ready to dispatch,LRHC.5.FAB,Factory production (HXM),5,Task,"LRHC 5-day (England, Christmas shutdown)",2,0,Completed,100,2027-02-15 08:00,2027-02-16 17:00,2027-02-15 08:00,2027-02-16 17:00,2027-02-15 08:00,2027-02-16 17:00,2027-03-08 08:00,2027-03-09 17:00,15,,
LRHC-UP06,2027-05-01 00:00,5-FAB-M080,Module M08 (Z2): Chassis and floor cassette,LRHC.5.FAB,Factory production (HXM),5,Task,"LRHC 5-day (England, Christmas shutdown)",4,0,Completed,100,2027-01-29 08:00,2027-02-03 17:00,2027-01-29 08:00,2027-02-03 17:00,2027-01-29 08:00,2027-02-03 17:00,2027-02-19 08:00,2027-02-24 17:00,15,,
LRHC-UP06,2027-05-01 00:00,5-FAB-M081,"Module M08 (Z2): Walls, roof and windows",LRHC.5.FAB,Factory production (HXM),5,Task,"LRHC 5-day (England, Christmas shutdown)",4,0,Completed,100,2027-02-04 08:00,2027-02-09 17:00,2027-02-04 08:00,2027-02-09 17:00,2027-02-04 08:00,2027-02-09 17:00,2027-02-25 08:00,2027-03-02 17:00,15,,
LRHC-UP06,2027-05-01 00:00,5-FAB-M082,Module M08 (Z2): First-fix M&E and linings,LRHC.5.FAB,Factory production (HXM),5,Task,"LRHC 5-day (England, Christmas shutdown)",5,0,Completed,100,2027-02-10 08:00,2027-02-16 17:00,2027-02-10 08:00,2027-02-16 17:00,2027-02-10 08:00,2027-02-16 17:00,2027-03-03 08:00,2027-03-09 17:00,15,,
LRHC-UP06,2027-05-01 00:00,5-FAB-M083,Module M08 (Z2): Factory QA inspection and ready to dispatch,LRHC.5.FAB,Factory production (HXM),5,Task,"LRHC 5-day (England, Christmas shutdown)",2,0,Completed,100,2027-02-17 08:00,2027-02-18 17:00,2027-02-17 08:00,2027-02-18 17:00,2027-02-17 08:00,2027-02-18 17:00,2027-03-10 08:00,2027-03-11 17:00,15,,
LRHC-UP06,2027-05-01 00:00,5-FAB-M090,Module M09 (Z2): Chassis and floor cassette,LRHC.5.FAB,Factory production (HXM),5,Task,"LRHC 5-day (England, Christmas shutdown)",4,0,Completed,100,2027-02-02 08:00,2027-02-05 17:00,2027-02-02 08:00,2027-02-05 17:00,2027-02-02 08:00,2027-02-05 17:00,2027-02-23 08:00,2027-02-26 17:00,15,,
LRHC-UP06,2027-05-01 00:00,5-FAB-M091,"Module M09 (Z2): Walls, roof and windows",LRHC.5.FAB,Factory production (HXM),5,Task,"LRHC 5-day (England, Christmas shutdown)",4,0,Completed,100,2027-02-08 08:00,2027-02-11 17:00,2027-02-08 08:00,2027-02-11 17:00,2027-02-08 08:00,2027-02-11 17:00,2027-03-01 08:00,2027-03-04 17:00,15,,
LRHC-UP06,2027-05-01 00:00,5-FAB-M092,Module M09 (Z2): First-fix M&E and linings,LRHC.5.FAB,Factory production (HXM),5,Task,"LRHC 5-day (England, Christmas shutdown)",5,0,Completed,100,2027-02-12 08:00,2027-02-18 17:00,2027-02-12 08:00,2027-02-18 17:00,2027-02-12 08:00,2027-02-18 17:00,2027-03-05 08:00,2027-03-11 17:00,15,,
LRHC-UP06,2027-05-01 00:00,5-FAB-M093,Module M09 (Z2): Factory QA inspection and ready to dispatch,LRHC.5.FAB,Factory production (HXM),5,Task,"LRHC 5-day (England, Christmas shutdown)",2,0,Completed,100,2027-02-19 08:00,2027-02-22 17:00,2027-02-19 08:00,2027-02-22 17:00,2027-02-19 08:00,2027-02-22 17:00,2027-03-12 08:00,2027-03-15 17:00,15,,
LRHC-UP06,2027-05-01 00:00,5-FAB-M100,Module M10 (Z3): Chassis and floor cassette,LRHC.5.FAB,Factory production (HXM),5,Task,"LRHC 5-day (England, Christmas shutdown)",4,0,Completed,100,2027-02-04 08:00,2027-02-09 17:00,2027-02-04 08:00,2027-02-09 17:00,2027-02-04 08:00,2027-02-09 17:00,2027-02-25 08:00,2027-03-02 17:00,15,,
LRHC-UP06,2027-05-01 00:00,5-FAB-M101,"Module M10 (Z3): Walls, roof and windows",LRHC.5.FAB,Factory production (HXM),5,Task,"LRHC 5-day (England, Christmas shutdown)",4,0,Completed,100,2027-02-10 08:00,2027-02-15 17:00,2027-02-10 08:00,2027-02-15 17:00,2027-02-10 08:00,2027-02-15 17:00,2027-03-03 08:00,2027-03-08 17:00,15,,
LRHC-UP06,2027-05-01 00:00,5-FAB-M102,Module M10 (Z3): First-fix M&E and linings,LRHC.5.FAB,Factory production (HXM),5,Task,"LRHC 5-day (England, Christmas shutdown)",5,0,Completed,100,2027-02-16 08:00,2027-02-22 17:00,2027-02-16 08:00,2027-02-22 17:00,2027-02-16 08:00,2027-02-22 17:00,2027-03-09 08:00,2027-03-15 17:00,15,,
LRHC-UP06,2027-05-01 00:00,5-FAB-M103,Module M10 (Z3): Factory QA inspection and ready to dispatch,LRHC.5.FAB,Factory production (HXM),5,Task,"LRHC 5-day (England, Christmas shutdown)",2,0,Completed,100,2027-02-23 08:00,2027-02-24 17:00,2027-02-23 08:00,2027-02-24 17:00,2027-02-23 08:00,2027-02-24 17:00,2027-03-16 08:00,2027-03-17 17:00,15,,
LRHC-UP06,2027-05-01 00:00,5-FAB-M110,Module M11 (Z3): Chassis and floor cassette,LRHC.5.FAB,Factory production (HXM),5,Task,"LRHC 5-day (England, Christmas shutdown)",4,0,Completed,100,2027-02-08 08:00,2027-02-11 17:00,2027-02-08 08:00,2027-02-11 17:00,2027-02-08 08:00,2027-02-11 17:00,2027-03-01 08:00,2027-03-04 17:00,15,,
LRHC-UP06,2027-05-01 00:00,5-FAB-M111,"Module M11 (Z3): Walls, roof and windows",LRHC.5.FAB,Factory production (HXM),5,Task,"LRHC 5-day (England, Christmas shutdown)",4,0,Completed,100,2027-02-12 08:00,2027-02-17 17:00,2027-02-12 08:00,2027-02-17 17:00,2027-02-12 08:00,2027-02-17 17:00,2027-03-05 08:00,2027-03-10 17:00,15,,
LRHC-UP06,2027-05-01 00:00,5-FAB-M112,Module M11 (Z3): First-fix M&E and linings,LRHC.5.FAB,Factory production (HXM),5,Task,"LRHC 5-day (England, Christmas shutdown)",5,0,Completed,100,2027-02-18 08:00,2027-02-24 17:00,2027-02-18 08:00,2027-02-24 17:00,2027-02-18 08:00,2027-02-24 17:00,2027-03-11 08:00,2027-03-17 17:00,15,,
LRHC-UP06,2027-05-01 00:00,5-FAB-M113,Module M11 (Z3): Factory QA inspection and ready to dispatch,LRHC.5.FAB,Factory production (HXM),5,Task,"LRHC 5-day (England, Christmas shutdown)",2,0,Completed,100,2027-02-25 08:00,2027-02-26 17:00,2027-02-25 08:00,2027-02-26 17:00,2027-02-25 08:00,2027-02-26 17:00,2027-03-18 08:00,2027-03-19 17:00,15,,
LRHC-UP06,2027-05-01 00:00,5-FAB-M120,Module M12 (Z4): Chassis and floor cassette,LRHC.5.FAB,Factory production (HXM),5,Task,"LRHC 5-day (England, Christmas shutdown)",4,0,Completed,100,2027-02-10 08:00,2027-02-15 17:00,2027-02-10 08:00,2027-02-15 17:00,2027-02-10 08:00,2027-02-15 17:00,2027-03-03 08:00,2027-03-08 17:00,15,,
LRHC-UP06,2027-05-01 00:00,5-FAB-M121,"Module M12 (Z4): Walls, roof and windows",LRHC.5.FAB,Factory production (HXM),5,Task,"LRHC 5-day (England, Christmas shutdown)",4,0,Completed,100,2027-02-16 08:00,2027-02-19 17:00,2027-02-16 08:00,2027-02-19 17:00,2027-02-16 08:00,2027-02-19 17:00,2027-03-09 08:00,2027-03-12 17:00,15,,
LRHC-UP06,2027-05-01 00:00,5-FAB-M122,Module M12 (Z4): First-fix M&E and linings,LRHC.5.FAB,Factory production (HXM),5,Task,"LRHC 5-day (England, Christmas shutdown)",5,0,Completed,100,2027-02-22 08:00,2027-02-26 17:00,2027-02-22 08:00,2027-02-26 17:00,2027-02-22 08:00,2027-02-26 17:00,2027-03-15 08:00,2027-03-19 17:00,15,,
LRHC-UP06,2027-05-01 00:00,5-FAB-M123,Module M12 (Z4): Factory QA inspection and ready to dispatch,LRHC.5.FAB,Factory production (HXM),5,Task,"LRHC 5-day (England, Christmas shutdown)",2,0,Completed,100,2027-03-01 08:00,2027-03-02 17:00,2027-03-01 08:00,2027-03-02 17:00,2027-03-01 08:00,2027-03-02 17:00,2027-03-22 08:00,2027-03-23 17:00,15,,
LRHC-UP06,2027-05-01 00:00,5-ENB-1000,Site set-up and welfare,LRHC.5.ENB,Enabling works,5,Task,"LRHC 5-day (England, Christmas shutdown)",5,0,Completed,100,2027-01-04 08:00,2027-01-08 17:00,2027-01-04 08:00,2027-01-08 17:00,2027-01-04 08:00,2027-01-08 17:00,2027-01-19 08:00,2027-01-25 17:00,11,CS_MSOA,2027-01-04 08:00
LRHC-UP06,2027-05-01 00:00,5-ENB-1010,Hoarding and site security,LRHC.5.ENB,Enabling works,5,Task,"LRHC 5-day (England, Christmas shutdown)",3,0,Completed,100,2027-01-05 08:00,2027-01-07 17:00,2027-01-05 08:00,2027-01-07 17:00,2027-01-05 08:00,2027-01-07 17:00,2027-01-25 08:00,2027-01-27 17:00,14,,
LRHC-UP06,2027-05-01 00:00,5-ENB-1020,Temporary services,LRHC.5.ENB,Enabling works,5,Task,"LRHC 5-day (England, Christmas shutdown)",4,0,Completed,100,2027-01-06 08:00,2027-01-11 17:00,2027-01-06 08:00,2027-01-11 17:00,2027-01-06 08:00,2027-01-11 17:00,2027-01-22 08:00,2027-01-27 17:00,12,,
LRHC-UP06,2027-05-01 00:00,5-ENB-1030,Setting out from survey control SP-01,LRHC.5.ENB,Enabling works,5,Task,"LRHC 5-day (England, Christmas shutdown)",2,0,Completed,100,2027-01-11 08:00,2027-01-12 17:00,2027-01-11 08:00,2027-01-12 17:00,2027-01-11 08:00,2027-01-12 17:00,2027-01-26 08:00,2027-01-27 17:00,11,,
LRHC-UP06,2027-05-01 00:00,5-ENB-1040,Utilities diversions within the plot,LRHC.5.ENB,Enabling works,5,Task,"LRHC 5-day (England, Christmas shutdown)",8,0,Completed,100,2027-01-13 08:00,2027-01-22 17:00,2027-01-13 08:00,2027-01-22 17:00,2027-01-13 08:00,2027-01-22 17:00,2027-03-09 08:00,2027-03-18 17:00,39,,
LRHC-UP06,2027-05-01 00:00,5-ENB-1050,Haul road and crane hardstanding,LRHC.5.ENB,Enabling works,5,Task,"LRHC 5-day (England, Christmas shutdown)",4,0,Completed,100,2027-01-13 08:00,2027-01-18 17:00,2027-01-13 08:00,2027-01-18 17:00,2027-01-13 08:00,2027-01-18 17:00,2027-03-01 08:00,2027-03-04 17:00,33,,
LRHC-UP06,2027-05-01 00:00,5-SUB-1000,"Excavate foundations, Z1",LRHC.5.SUB,Substructure and below-ground drainage,5,Task,"LRHC 5-day (England, Christmas shutdown)",5,0,Completed,100,2027-01-13 08:00,2027-01-19 17:00,2027-01-13 08:00,2027-01-19 17:00,2027-01-13 08:00,2027-01-19 17:00,2027-01-28 08:00,2027-02-03 17:00,11,,
LRHC-UP06,2027-05-01 00:00,5-SUB-1010,"Pad foundations and ground beams, Z1",LRHC.5.SUB,Substructure and below-ground drainage,5,Task,"LRHC 5-day (England, Christmas shutdown)",10,0,Completed,100,2027-01-20 08:00,2027-02-02 17:00,2027-01-20 08:00,2027-02-02 17:00,2027-01-20 08:00,2027-02-02 17:00,2027-02-17 08:00,2027-03-02 17:00,20,,
LRHC-UP06,2027-05-01 00:00,5-SUB-1020,"Backfill and module bearing check, Z1",LRHC.5.SUB,Substructure and below-ground drainage,5,Task,"LRHC 5-day (England, Christmas shutdown)",2,0,Completed,100,2027-02-03 08:00,2027-02-04 17:00,2027-02-03 08:00,2027-02-04 17:00,2027-02-03 08:00,2027-02-04 17:00,2027-03-03 08:00,2027-03-04 17:00,20,,
LRHC-UP06,2027-05-01 00:00,5-SUB-1100,"Excavate foundations, Z2",LRHC.5.SUB,Substructure and below-ground drainage,5,Task,"LRHC 5-day (England, Christmas shutdown)",5,0,Completed,100,2027-01-18 08:00,2027-01-22 17:00,2027-01-18 08:00,2027-01-22 17:00,2027-01-18 08:00,2027-01-22 17:00,2027-02-02 08:00,2027-02-08 17:00,11,,
LRHC-UP06,2027-05-01 00:00,5-SUB-1110,"Pad foundations and ground beams, Z2",LRHC.5.SUB,Substructure and below-ground drainage,5,Task,"LRHC 5-day (England, Christmas shutdown)",10,0,Completed,100,2027-01-25 08:00,2027-02-05 17:00,2027-01-25 08:00,2027-02-05 17:00,2027-01-25 08:00,2027-02-05 17:00,2027-02-17 08:00,2027-03-02 17:00,17,,
LRHC-UP06,2027-05-01 00:00,5-SUB-1120,"Backfill and module bearing check, Z2",LRHC.5.SUB,Substructure and below-ground drainage,5,Task,"LRHC 5-day (England, Christmas shutdown)",2,0,Completed,100,2027-02-08 08:00,2027-02-09 17:00,2027-02-08 08:00,2027-02-09 17:00,2027-02-08 08:00,2027-02-09 17:00,2027-03-03 08:00,2027-03-04 17:00,17,,
LRHC-UP06,2027-05-01 00:00,5-SUB-1200,"Excavate foundations, Z3",LRHC.5.SUB,Substructure and below-ground drainage,5,Task,"LRHC 5-day (England, Christmas shutdown)",5,0,Completed,100,2027-01-21 08:00,2027-01-27 17:00,2027-01-21 08:00,2027-01-27 17:00,2027-01-21 08:00,2027-01-27 17:00,2027-02-05 08:00,2027-02-11 17:00,11,,
LRHC-UP06,2027-05-01 00:00,5-SUB-1210,"Pad foundations and ground beams, Z3",LRHC.5.SUB,Substructure and below-ground drainage,5,Task,"LRHC 5-day (England, Christmas shutdown)",10,0,Completed,100,2027-01-28 08:00,2027-02-10 17:00,2027-01-28 08:00,2027-02-10 17:00,2027-01-28 08:00,2027-02-10 17:00,2027-02-17 08:00,2027-03-02 17:00,14,,
LRHC-UP06,2027-05-01 00:00,5-SUB-1220,"Backfill and module bearing check, Z3",LRHC.5.SUB,Substructure and below-ground drainage,5,Task,"LRHC 5-day (England, Christmas shutdown)",2,0,Completed,100,2027-02-11 08:00,2027-02-12 17:00,2027-02-11 08:00,2027-02-12 17:00,2027-02-11 08:00,2027-02-12 17:00,2027-03-03 08:00,2027-03-04 17:00,14,,
LRHC-UP06,2027-05-01 00:00,5-SUB-1300,"Excavate foundations, Z4",LRHC.5.SUB,Substructure and below-ground drainage,5,Task,"LRHC 5-day (England, Christmas shutdown)",5,0,Completed,100,2027-01-26 08:00,2027-02-01 17:00,2027-01-26 08:00,2027-02-01 17:00,2027-01-26 08:00,2027-02-01 17:00,2027-02-10 08:00,2027-02-16 17:00,11,,
LRHC-UP06,2027-05-01 00:00,5-SUB-1310,"Pad foundations and ground beams, Z4",LRHC.5.SUB,Substructure and below-ground drainage,5,Task,"LRHC 5-day (England, Christmas shutdown)",10,0,Completed,100,2027-02-02 08:00,2027-02-15 17:00,2027-02-02 08:00,2027-02-15 17:00,2027-02-02 08:00,2027-02-15 17:00,2027-02-17 08:00,2027-03-02 17:00,11,,
LRHC-UP06,2027-05-01 00:00,5-SUB-1320,"Backfill and module bearing check, Z4",LRHC.5.SUB,Substructure and below-ground drainage,5,Task,"LRHC 5-day (England, Christmas shutdown)",2,0,Completed,100,2027-02-16 08:00,2027-02-17 17:00,2027-02-16 08:00,2027-02-17 17:00,2027-02-16 08:00,2027-02-17 17:00,2027-03-03 08:00,2027-03-04 17:00,11,,
LRHC-UP06,2027-05-01 00:00,5-SUB-1500,Plant base and roof plant support steelwork,LRHC.5.SUB,Substructure and below-ground drainage,5,Task,"LRHC 5-day (England, Christmas shutdown)",4,0,Completed,100,2027-02-16 08:00,2027-02-19 17:00,2027-02-16 08:00,2027-02-19 17:00,2027-02-16 08:00,2027-02-19 17:00,2027-03-31 08:00,2027-04-05 17:00,29,,
LRHC-UP06,2027-05-01 00:00,5-SUB-1600,Below-ground drainage,LRHC.5.SUB,Substructure and below-ground drainage,5,Task,"LRHC 5-day (England, Christmas shutdown)",20,0,Completed,100,2027-01-25 08:00,2027-02-19 17:00,2027-01-25 08:00,2027-02-19 17:00,2027-01-25 08:00,2027-02-19 17:00,2027-03-19 08:00,2027-04-19 17:00,39,,
LRHC-UP06,2027-05-01 00:00,5-SUB-1610,Service ducts and building entry points,LRHC.5.SUB,Substructure and below-ground drainage,5,Task,"LRHC 5-day (England, Christmas shutdown)",5,0,Completed,100,2027-01-29 08:00,2027-02-04 17:00,2027-01-29 08:00,2027-02-04 17:00,2027-01-29 08:00,2027-02-04 17:00,2027-03-25 08:00,2027-04-02 17:00,39,,
LRHC-UP06,2027-05-01 00:00,5-SUB-1620,Drainage CCTV survey,LRHC.5.SUB,Substructure and below-ground drainage,5,Task,"LRHC 5-day (England, Christmas shutdown)",2,0,Completed,100,2027-02-22 08:00,2027-02-23 17:00,2027-02-22 08:00,2027-02-23 17:00,2027-02-22 08:00,2027-02-23 17:00,2027-05-25 08:00,2027-05-26 17:00,63,,
LRHC-UP06,2027-05-01 00:00,5-MOD-1000,Crane mobilisation and lift plan,LRHC.5.MOD,Module delivery and installation,5,Task,"LRHC 5-day (England, Christmas shutdown)",2,0,Completed,100,2027-03-04 08:00,2027-03-05 17:00,2027-03-04 08:00,2027-03-05 17:00,2027-03-04 08:00,2027-03-05 17:00,2027-03-05 08:00,2027-03-08 17:00,1,CS_MSOA,2027-03-04 08:00
LRHC-UP06,2027-05-01 00:00,5-MOD-M010,Deliver and set module M01 (Z1),LRHC.5.MOD,Module delivery and installation,5,Task,"LRHC 5-day (England, Christmas shutdown)",1,0,Completed,100,2027-03-08 08:00,2027-03-08 17:00,2027-03-08 08:00,2027-03-08 17:00,2027-03-08 08:00,2027-03-08 17:00,2027-03-09 08:00,2027-03-09 17:00,1,,
LRHC-UP06,2027-05-01 00:00,5-MOD-M011,"Structural connections and seal joints, module M01",LRHC.5.MOD,Module delivery and installation,5,Task,"LRHC 5-day (England, Christmas shutdown)",1,0,Completed,100,2027-03-09 08:00,2027-03-09 17:00,2027-03-09 08:00,2027-03-09 17:00,2027-03-09 08:00,2027-03-09 17:00,2027-04-05 08:00,2027-04-05 17:00,17,,
LRHC-UP06,2027-05-01 00:00,5-MOD-M020,Deliver and set module M02 (Z1),LRHC.5.MOD,Module delivery and installation,5,Task,"LRHC 5-day (England, Christmas shutdown)",1,0,Completed,100,2027-03-09 08:00,2027-03-09 17:00,2027-03-09 08:00,2027-03-09 17:00,2027-03-09 08:00,2027-03-09 17:00,2027-03-10 08:00,2027-03-10 17:00,1,,
LRHC-UP06,2027-05-01 00:00,5-MOD-M021,"Structural connections and seal joints, module M02",LRHC.5.MOD,Module delivery and installation,5,Task,"LRHC 5-day (England, Christmas shutdown)",1,0,Completed,100,2027-03-10 08:00,2027-03-10 17:00,2027-03-10 08:00,2027-03-10 17:00,2027-03-10 08:00,2027-03-10 17:00,2027-04-05 08:00,2027-04-05 17:00,16,,
LRHC-UP06,2027-05-01 00:00,5-MOD-M030,Deliver and set module M03 (Z1),LRHC.5.MOD,Module delivery and installation,5,Task,"LRHC 5-day (England, Christmas shutdown)",1,0,Completed,100,2027-03-10 08:00,2027-03-10 17:00,2027-03-10 08:00,2027-03-10 17:00,2027-03-10 08:00,2027-03-10 17:00,2027-03-11 08:00,2027-03-11 17:00,1,,
LRHC-UP06,2027-05-01 00:00,5-MOD-M031,"Structural connections and seal joints, module M03",LRHC.5.MOD,Module delivery and installation,5,Task,"LRHC 5-day (England, Christmas shutdown)",1,0,Completed,100,2027-03-11 08:00,2027-03-11 17:00,2027-03-11 08:00,2027-03-11 17:00,2027-03-11 08:00,2027-03-11 17:00,2027-04-05 08:00,2027-04-05 17:00,15,,
LRHC-UP06,2027-05-01 00:00,5-MOD-M040,Deliver and set module M04 (Z2),LRHC.5.MOD,Module delivery and installation,5,Task,"LRHC 5-day (England, Christmas shutdown)",1,0,Completed,100,2027-03-11 08:00,2027-03-11 17:00,2027-03-11 08:00,2027-03-11 17:00,2027-03-11 08:00,2027-03-11 17:00,2027-03-12 08:00,2027-03-12 17:00,1,,
LRHC-UP06,2027-05-01 00:00,5-MOD-M041,"Structural connections and seal joints, module M04",LRHC.5.MOD,Module delivery and installation,5,Task,"LRHC 5-day (England, Christmas shutdown)",1,0,Completed,100,2027-03-12 08:00,2027-03-12 17:00,2027-03-12 08:00,2027-03-12 17:00,2027-03-12 08:00,2027-03-12 17:00,2027-03-22 08:00,2027-03-22 17:00,6,,
LRHC-UP06,2027-05-01 00:00,5-MOD-M050,Deliver and set module M05 (Z2),LRHC.5.MOD,Module delivery and installation,5,Task,"LRHC 5-day (England, Christmas shutdown)",1,0,Completed,100,2027-03-12 08:00,2027-03-12 17:00,2027-03-12 08:00,2027-03-12 17:00,2027-03-12 08:00,2027-03-12 17:00,2027-03-15 08:00,2027-03-15 17:00,1,,
LRHC-UP06,2027-05-01 00:00,5-MOD-M051,"Structural connections and seal joints, module M05",LRHC.5.MOD,Module delivery and installation,5,Task,"LRHC 5-day (England, Christmas shutdown)",1,0,Completed,100,2027-03-15 08:00,2027-03-15 17:00,2027-03-15 08:00,2027-03-15 17:00,2027-03-15 08:00,2027-03-15 17:00,2027-03-22 08:00,2027-03-22 17:00,5,,
LRHC-UP06,2027-05-01 00:00,5-MOD-M060,Deliver and set module M06 (Z2),LRHC.5.MOD,Module delivery and installation,5,Task,"LRHC 5-day (England, Christmas shutdown)",1,0,Completed,100,2027-03-15 08:00,2027-03-15 17:00,2027-03-15 08:00,2027-03-15 17:00,2027-03-15 08:00,2027-03-15 17:00,2027-03-16 08:00,2027-03-16 17:00,1,,
LRHC-UP06,2027-05-01 00:00,5-MOD-M061,"Structural connections and seal joints, module M06",LRHC.5.MOD,Module delivery and installation,5,Task,"LRHC 5-day (England, Christmas shutdown)",1,0,Completed,100,2027-03-16 08:00,2027-03-16 17:00,2027-03-16 08:00,2027-03-16 17:00,2027-03-16 08:00,2027-03-16 17:00,2027-03-22 08:00,2027-03-22 17:00,4,,
LRHC-UP06,2027-05-01 00:00,5-MOD-M070,Deliver and set module M07 (Z2),LRHC.5.MOD,Module delivery and installation,5,Task,"LRHC 5-day (England, Christmas shutdown)",1,0,Completed,100,2027-03-16 08:00,2027-03-16 17:00,2027-03-16 08:00,2027-03-16 17:00,2027-03-16 08:00,2027-03-16 17:00,2027-03-17 08:00,2027-03-17 17:00,1,,
LRHC-UP06,2027-05-01 00:00,5-MOD-M071,"Structural connections and seal joints, module M07",LRHC.5.MOD,Module delivery and installation,5,Task,"LRHC 5-day (England, Christmas shutdown)",1,0,Completed,100,2027-03-17 08:00,2027-03-17 17:00,2027-03-17 08:00,2027-03-17 17:00,2027-03-17 08:00,2027-03-17 17:00,2027-03-22 08:00,2027-03-22 17:00,3,,
LRHC-UP06,2027-05-01 00:00,5-MOD-M080,Deliver and set module M08 (Z2),LRHC.5.MOD,Module delivery and installation,5,Task,"LRHC 5-day (England, Christmas shutdown)",1,0,Completed,100,2027-03-17 08:00,2027-03-17 17:00,2027-03-17 08:00,2027-03-17 17:00,2027-03-17 08:00,2027-03-17 17:00,2027-03-18 08:00,2027-03-18 17:00,1,,
LRHC-UP06,2027-05-01 00:00,5-MOD-M081,"Structural connections and seal joints, module M08",LRHC.5.MOD,Module delivery and installation,5,Task,"LRHC 5-day (England, Christmas shutdown)",1,0,Completed,100,2027-03-18 08:00,2027-03-18 17:00,2027-03-18 08:00,2027-03-18 17:00,2027-03-18 08:00,2027-03-18 17:00,2027-03-22 08:00,2027-03-22 17:00,2,,
LRHC-UP06,2027-05-01 00:00,5-MOD-M090,Deliver and set module M09 (Z2),LRHC.5.MOD,Module delivery and installation,5,Task,"LRHC 5-day (England, Christmas shutdown)",1,0,Completed,100,2027-03-18 08:00,2027-03-18 17:00,2027-03-18 08:00,2027-03-18 17:00,2027-03-18 08:00,2027-03-18 17:00,2027-03-19 08:00,2027-03-19 17:00,1,,
LRHC-UP06,2027-05-01 00:00,5-MOD-M091,"Structural connections and seal joints, module M09",LRHC.5.MOD,Module delivery and installation,5,Task,"LRHC 5-day (England, Christmas shutdown)",1,0,Completed,100,2027-03-19 08:00,2027-03-19 17:00,2027-03-19 08:00,2027-03-19 17:00,2027-03-19 08:00,2027-03-19 17:00,2027-03-22 08:00,2027-03-22 17:00,1,,
LRHC-UP06,2027-05-01 00:00,5-MOD-M100,Deliver and set module M10 (Z3),LRHC.5.MOD,Module delivery and installation,5,Task,"LRHC 5-day (England, Christmas shutdown)",1,0,Completed,100,2027-03-19 08:00,2027-03-19 17:00,2027-03-19 08:00,2027-03-19 17:00,2027-03-19 08:00,2027-03-19 17:00,2027-03-22 08:00,2027-03-22 17:00,1,,
LRHC-UP06,2027-05-01 00:00,5-MOD-M101,"Structural connections and seal joints, module M10",LRHC.5.MOD,Module delivery and installation,5,Task,"LRHC 5-day (England, Christmas shutdown)",1,0,Completed,100,2027-03-22 08:00,2027-03-22 17:00,2027-03-22 08:00,2027-03-22 17:00,2027-03-22 08:00,2027-03-22 17:00,2027-04-08 08:00,2027-04-08 17:00,11,,
LRHC-UP06,2027-05-01 00:00,5-MOD-M110,Deliver and set module M11 (Z3),LRHC.5.MOD,Module delivery and installation,5,Task,"LRHC 5-day (England, Christmas shutdown)",1,0,Completed,100,2027-03-22 08:00,2027-03-22 17:00,2027-03-22 08:00,2027-03-22 17:00,2027-03-22 08:00,2027-03-22 17:00,2027-03-23 08:00,2027-03-23 17:00,1,,
LRHC-UP06,2027-05-01 00:00,5-MOD-M111,"Structural connections and seal joints, module M11",LRHC.5.MOD,Module delivery and installation,5,Task,"LRHC 5-day (England, Christmas shutdown)",1,0,Completed,100,2027-03-23 08:00,2027-03-23 17:00,2027-03-23 08:00,2027-03-23 17:00,2027-03-23 08:00,2027-03-23 17:00,2027-04-08 08:00,2027-04-08 17:00,10,,
LRHC-UP06,2027-05-01 00:00,5-MOD-M120,Deliver and set module M12 (Z4),LRHC.5.MOD,Module delivery and installation,5,Task,"LRHC 5-day (England, Christmas shutdown)",1,0,Completed,100,2027-03-23 08:00,2027-03-23 17:00,2027-03-23 08:00,2027-03-23 17:00,2027-03-23 08:00,2027-03-23 17:00,2027-03-24 08:00,2027-03-24 17:00,1,,
LRHC-UP06,2027-05-01 00:00,5-MOD-M121,"Structural connections and seal joints, module M12",LRHC.5.MOD,Module delivery and installation,5,Task,"LRHC 5-day (England, Christmas shutdown)",1,0,Completed,100,2027-03-24 08:00,2027-03-24 17:00,2027-03-24 08:00,2027-03-24 17:00,2027-03-24 08:00,2027-03-24 17:00,2027-03-25 08:00,2027-03-25 17:00,1,,
LRHC-UP06,2027-05-01 00:00,5-MOD-1900,Crane demobilisation,LRHC.5.MOD,Module delivery and installation,5,Task,"LRHC 5-day (England, Christmas shutdown)",1,0,Completed,100,2027-03-25 08:00,2027-03-25 17:00,2027-03-25 08:00,2027-03-25 17:00,2027-03-25 08:00,2027-03-25 17:00,2027-04-28 08:00,2027-04-28 17:00,22,,
LRHC-UP06,2027-05-01 00:00,5-MOD-1910,Modules weathertight,LRHC.5.MOD,Module delivery and installation,5,Finish milestone,"LRHC 5-day (England, Christmas shutdown)",0,0,Completed,100,2027-03-24 17:00,2027-03-24 17:00,2027-03-24 17:00,2027-03-24 17:00,2027-03-24 17:00,2027-03-24 17:00,2027-04-01 17:00,2027-04-01 17:00,4,,
LRHC-UP06,2027-05-01 00:00,5-ENV-1000,"Roof membrane over modules, Z1",LRHC.5.ENV,Roof and envelope completion,5,Task,"LRHC 5-day (England, Christmas shutdown)",4,0,Completed,100,2027-03-12 08:00,2027-03-17 17:00,2027-03-12 08:00,2027-03-17 17:00,2027-03-12 08:00,2027-03-17 17:00,2027-04-06 08:00,2027-04-09 17:00,15,,
LRHC-UP06,2027-05-01 00:00,5-ENV-1010,"Cladding junctions and module joint covers, Z1",LRHC.5.ENV,Roof and envelope completion,5,Task,"LRHC 5-day (England, Christmas shutdown)",4,0,Completed,100,2027-03-12 08:00,2027-03-17 17:00,2027-03-12 08:00,2027-03-17 17:00,2027-03-12 08:00,2027-03-17 17:00,2027-05-17 08:00,2027-05-20 17:00,43,,
LRHC-UP06,2027-05-01 00:00,5-ENV-1100,"Roof membrane over modules, Z2",LRHC.5.ENV,Roof and envelope completion,5,Task,"LRHC 5-day (England, Christmas shutdown)",4,0,Completed,100,2027-03-22 08:00,2027-03-25 17:00,2027-03-22 08:00,2027-03-25 17:00,2027-03-22 08:00,2027-03-25 17:00,2027-03-23 08:00,2027-03-30 17:00,1,,
LRHC-UP06,2027-05-01 00:00,5-ENV-1110,"Cladding junctions and module joint covers, Z2",LRHC.5.ENV,Roof and envelope completion,5,Task,"LRHC 5-day (England, Christmas shutdown)",4,0,Completed,100,2027-03-22 08:00,2027-03-25 17:00,2027-03-22 08:00,2027-03-25 17:00,2027-03-22 08:00,2027-03-25 17:00,2027-05-21 08:00,2027-05-26 17:00,41,,
LRHC-UP06,2027-05-01 00:00,5-ENV-1200,"Roof membrane over modules, Z3",LRHC.5.ENV,Roof and envelope completion,5,Task,"LRHC 5-day (England, Christmas shutdown)",4,0,Completed,100,2027-03-24 08:00,2027-03-31 17:00,2027-03-24 08:00,2027-03-31 17:00,2027-03-24 08:00,2027-03-31 17:00,2027-04-09 08:00,2027-04-14 17:00,10,,
LRHC-UP06,2027-05-01 00:00,5-ENV-1210,"Cladding junctions and module joint covers, Z3",LRHC.5.ENV,Roof and envelope completion,5,Task,"LRHC 5-day (England, Christmas shutdown)",4,0,Completed,100,2027-03-24 08:00,2027-03-31 17:00,2027-03-24 08:00,2027-03-31 17:00,2027-03-24 08:00,2027-03-31 17:00,2027-05-21 08:00,2027-05-26 17:00,39,,
LRHC-UP06,2027-05-01 00:00,5-ENV-1300,"Roof membrane over modules, Z4",LRHC.5.ENV,Roof and envelope completion,5,Task,"LRHC 5-day (England, Christmas shutdown)",4,0,Completed,100,2027-03-25 08:00,2027-04-01 17:00,2027-03-25 08:00,2027-04-01 17:00,2027-03-25 08:00,2027-04-01 17:00,2027-03-31 08:00,2027-04-05 17:00,2,,
LRHC-UP06,2027-05-01 00:00,5-ENV-1310,"Cladding junctions and module joint covers, Z4",LRHC.5.ENV,Roof and envelope completion,5,Task,"LRHC 5-day (England, Christmas shutdown)",4,0,Completed,100,2027-03-25 08:00,2027-04-01 17:00,2027-03-25 08:00,2027-04-01 17:00,2027-03-25 08:00,2027-04-01 17:00,2027-05-21 08:00,2027-05-26 17:00,38,,
LRHC-UP06,2027-05-01 00:00,5-ENV-1500,Roof plant platform and guarding,LRHC.5.ENV,Roof and envelope completion,5,Task,"LRHC 5-day (England, Christmas shutdown)",3,0,Completed,100,2027-04-02 08:00,2027-04-06 17:00,2027-04-02 08:00,2027-04-06 17:00,2027-04-02 08:00,2027-04-06 17:00,2027-04-06 08:00,2027-04-08 17:00,2,,
LRHC-UP06,2027-05-01 00:00,5-ENV-1510,Rainwater goods,LRHC.5.ENV,Roof and envelope completion,5,Task,"LRHC 5-day (England, Christmas shutdown)",3,0,Completed,100,2027-04-02 08:00,2027-04-06 17:00,2027-04-02 08:00,2027-04-06 17:00,2027-04-02 08:00,2027-04-06 17:00,2027-05-19 08:00,2027-05-21 17:00,32,,
LRHC-UP06,2027-05-01 00:00,5-ENV-1520,External doors and entrance canopy,LRHC.5.ENV,Roof and envelope completion,5,Task,"LRHC 5-day (England, Christmas shutdown)",4,0,Completed,100,2027-03-18 08:00,2027-03-23 17:00,2027-03-18 08:00,2027-03-23 17:00,2027-03-18 08:00,2027-03-23 17:00,2027-05-21 08:00,2027-05-26 17:00,43,,
LRHC-UP06,2027-05-01 00:00,5-MEP-1000,Incoming LV supply connection from campus network,LRHC.5.MEP,Building services installation,5,Task,"LRHC 5-day (England, Christmas shutdown)",3,0,Completed,100,2027-04-06 08:00,2027-04-08 17:00,2027-04-06 08:00,2027-04-08 17:00,2027-04-06 08:00,2027-04-08 17:00,2027-04-19 08:00,2027-04-21 17:00,9,,
LRHC-UP06,2027-05-01 00:00,5-MEP-1010,LV switchgear and distribution boards,LRHC.5.MEP,Building services installation,5,Task,"LRHC 5-day (England, Christmas shutdown)",5,0,Completed,100,2027-03-25 08:00,2027-04-02 17:00,2027-03-25 08:00,2027-04-02 17:00,2027-03-25 08:00,2027-04-02 17:00,2027-04-15 08:00,2027-04-21 17:00,13,,
LRHC-UP06,2027-05-01 00:00,5-MEP-1020,Plant room fit-out,LRHC.5.MEP,Building services installation,5,Task,"LRHC 5-day (England, Christmas shutdown)",15,0,Completed,100,2027-03-25 08:00,2027-04-16 17:00,2027-03-25 08:00,2027-04-16 17:00,2027-03-25 08:00,2027-04-16 17:00,2027-03-30 08:00,2027-04-19 17:00,1,,
LRHC-UP06,2027-05-01 00:00,5-MEP-1030,AHU installation,LRHC.5.MEP,Building services installation,5,Task,"LRHC 5-day (England, Christmas shutdown)",3,0,Completed,100,2027-04-07 08:00,2027-04-09 17:00,2027-04-07 08:00,2027-04-09 17:00,2027-04-07 08:00,2027-04-09 17:00,2027-04-09 08:00,2027-04-13 17:00,2,,
LRHC-UP06,2027-05-01 00:00,5-MEP-1040,Air source heat pump installation,LRHC.5.MEP,Building services installation,5,Task,"LRHC 5-day (England, Christmas shutdown)",3,0,Completed,100,2027-04-07 08:00,2027-04-09 17:00,2027-04-07 08:00,2027-04-09 17:00,2027-04-07 08:00,2027-04-09 17:00,2027-04-26 08:00,2027-04-28 17:00,13,,
LRHC-UP06,2027-05-01 00:00,5-MEP-1050,Ductwork connections between modules,LRHC.5.MEP,Building services installation,5,Task,"LRHC 5-day (England, Christmas shutdown)",12,0,Completed,100,2027-04-08 08:00,2027-04-23 17:00,2027-04-08 08:00,2027-04-23 17:00,2027-04-08 08:00,2027-04-23 17:00,2027-04-12 08:00,2027-04-27 17:00,2,,
LRHC-UP06,2027-05-01 00:00,5-MEP-1060,Pipework connections between modules,LRHC.5.MEP,Building services installation,5,Task,"LRHC 5-day (England, Christmas shutdown)",12,0,Completed,100,2027-03-25 08:00,2027-04-13 17:00,2027-03-25 08:00,2027-04-13 17:00,2027-03-25 08:00,2027-04-13 17:00,2027-04-05 08:00,2027-04-20 17:00,5,,
LRHC-UP06,2027-05-01 00:00,5-MEP-1070,Water supply connection and meter,LRHC.5.MEP,Building services installation,5,Task,"LRHC 5-day (England, Christmas shutdown)",2,0,Completed,100,2027-02-05 08:00,2027-02-08 17:00,2027-02-05 08:00,2027-02-08 17:00,2027-02-05 08:00,2027-02-08 17:00,2027-05-07 08:00,2027-05-10 17:00,62,,
LRHC-UP06,2027-05-01 00:00,5-MEP-1080,BMS installation and integration gateway,LRHC.5.MEP,Building services installation,5,Task,"LRHC 5-day (England, Christmas shutdown)",15,0,Completed,100,2027-04-01 08:00,2027-04-21 17:00,2027-04-01 08:00,2027-04-21 17:00,2027-04-01 08:00,2027-04-21 17:00,2027-04-02 08:00,2027-04-22 17:00,1,,
LRHC-UP06,2027-05-01 00:00,5-MEP-1090,Fire detection and alarm installation,LRHC.5.MEP,Building services installation,5,Task,"LRHC 5-day (England, Christmas shutdown)",8,0,Completed,100,2027-03-25 08:00,2027-04-07 17:00,2027-03-25 08:00,2027-04-07 17:00,2027-03-25 08:00,2027-04-07 17:00,2027-05-10 08:00,2027-05-19 17:00,29,,
LRHC-UP06,2027-05-01 00:00,5-MEP-1100,Nurse call and assistance call installation,LRHC.5.MEP,Building services installation,5,Task,"LRHC 5-day (England, Christmas shutdown)",5,0,Completed,100,2027-03-25 08:00,2027-04-02 17:00,2027-03-25 08:00,2027-04-02 17:00,2027-03-25 08:00,2027-04-02 17:00,2027-05-18 08:00,2027-05-24 17:00,35,,
LRHC-UP06,2027-05-01 00:00,5-MEP-1110,Emergency lighting installation,LRHC.5.MEP,Building services installation,5,Task,"LRHC 5-day (England, Christmas shutdown)",5,0,Completed,100,2027-03-25 08:00,2027-04-02 17:00,2027-03-25 08:00,2027-04-02 17:00,2027-03-25 08:00,2027-04-02 17:00,2027-05-19 08:00,2027-05-25 17:00,36,,
LRHC-UP06,2027-05-01 00:00,5-MEP-1120,Luminaire installation,LRHC.5.MEP,Building services installation,5,Task,"LRHC 5-day (England, Christmas shutdown)",4,0,Completed,100,2027-03-25 08:00,2027-04-01 17:00,2027-03-25 08:00,2027-04-01 17:00,2027-03-25 08:00,2027-04-01 17:00,2027-04-16 08:00,2027-04-21 17:00,14,,
LRHC-UP06,2027-05-01 00:00,5-MEP-1130,External lighting installation,LRHC.5.MEP,Building services installation,5,Task,"LRHC 5-day (England, Christmas shutdown)",3,0,Completed,100,2027-04-09 08:00,2027-04-13 17:00,2027-04-09 08:00,2027-04-13 17:00,2027-04-09 08:00,2027-04-13 17:00,2027-06-01 08:00,2027-06-03 17:00,35,,
LRHC-UP06,2027-05-01 00:00,M-204-EN,"M-204-EN Campus 11 kV energisation (by others, MA 4920.204)",LRHC.KEY,Key dates and milestones,,Start milestone,"LRHC 5-day (England, Christmas shutdown)",0,0,Completed,100,2027-04-06 08:00,2027-04-06 08:00,2027-04-06 08:00,2027-04-06 08:00,2027-04-06 08:00,2027-04-06 08:00,2027-04-19 08:00,2027-04-19 08:00,9,CS_MSOA,2027-04-06 08:00
LRHC-UP06,2027-05-01 00:00,5-INT-1000,"Make good module joints, Z1",LRHC.5.INT,Internal completion by zone,5,Task,"LRHC 5-day (England, Christmas shutdown)",6,0,Completed,100,2027-03-25 08:00,2027-04-05 17:00,2027-03-25 08:00,2027-04-05 17:00,2027-03-25 08:00,2027-04-05 17:00,2027-04-12 08:00,2027-04-19 17:00,10,,
LRHC-UP06,2027-05-01 00:00,5-INT-1010,"Second-fix M&E connections, Z1",LRHC.5.INT,Internal completion by zone,5,Task,"LRHC 5-day (England, Christmas shutdown)",10,0,Completed,100,2027-04-06 08:00,2027-04-19 17:00,2027-04-06 08:00,2027-04-19 17:00,2027-04-06 08:00,2027-04-19 17:00,2027-04-20 08:00,2027-05-04 17:00,10,,
LRHC-UP06,2027-05-01 00:00,5-INT-1020,"Finishes at joints and floor coverings, Z1",LRHC.5.INT,Internal completion by zone,5,Task,"LRHC 5-day (England, Christmas shutdown)",8,0,Completed,100,2027-04-20 08:00,2027-04-29 17:00,2027-04-20 08:00,2027-04-29 17:00,2027-04-20 08:00,2027-04-29 17:00,2027-05-05 08:00,2027-05-14 17:00,10,,
LRHC-UP06,2027-05-01 00:00,5-INT-1030,"Install sanitaryware and TMVs, Z1",LRHC.5.INT,Internal completion by zone,5,Task,"LRHC 5-day (England, Christmas shutdown)",3,2,In progress,33,2027-04-30 08:00,2027-05-05 17:00,2027-04-30 08:00,2027-05-05 17:00,2027-04-30 08:00,,2027-05-17 08:00,2027-05-19 17:00,10,,
LRHC-UP06,2027-05-01 00:00,5-INT-1040,"Builder's clean, Z1",LRHC.5.INT,Internal completion by zone,5,Task,"LRHC 5-day (England, Christmas shutdown)",2,2,Not started,0,2027-05-06 08:00,2027-05-07 17:00,2027-05-06 08:00,2027-05-07 17:00,,,2027-05-20 08:00,2027-05-21 17:00,10,,
LRHC-UP06,2027-05-01 00:00,5-INT-1100,"Make good module joints, Z2",LRHC.5.INT,Internal completion by zone,5,Task,"LRHC 5-day (England, Christmas shutdown)",6,0,Completed,100,2027-03-30 08:00,2027-04-06 17:00,2027-03-30 08:00,2027-04-06 17:00,2027-03-30 08:00,2027-04-06 17:00,2027-03-31 08:00,2027-04-07 17:00,1,,
LRHC-UP06,2027-05-01 00:00,5-INT-1110,"Second-fix M&E connections, Z2",LRHC.5.INT,Internal completion by zone,5,Task,"LRHC 5-day (England, Christmas shutdown)",10,0,Completed,100,2027-04-07 08:00,2027-04-20 17:00,2027-04-07 08:00,2027-04-20 17:00,2027-04-07 08:00,2027-04-20 17:00,2027-04-09 08:00,2027-04-22 17:00,2,,
LRHC-UP06,2027-05-01 00:00,5-INT-1120,"Finishes at joints and floor coverings, Z2",LRHC.5.INT,Internal completion by zone,5,Task,"LRHC 5-day (England, Christmas shutdown)",8,0,Completed,100,2027-04-21 08:00,2027-04-30 17:00,2027-04-21 08:00,2027-04-30 17:00,2027-04-21 08:00,2027-04-30 17:00,2027-04-23 08:00,2027-05-05 17:00,2,,
LRHC-UP06,2027-05-01 00:00,5-INT-1130,"Install sanitaryware and TMVs, Z2",LRHC.5.INT,Internal completion by zone,5,Task,"LRHC 5-day (England, Christmas shutdown)",3,3,Not started,0,2027-05-04 08:00,2027-05-06 17:00,2027-05-04 08:00,2027-05-06 17:00,,,2027-05-06 08:00,2027-05-10 17:00,2,,
LRHC-UP06,2027-05-01 00:00,5-INT-1140,"Builder's clean, Z2",LRHC.5.INT,Internal completion by zone,5,Task,"LRHC 5-day (England, Christmas shutdown)",2,2,Not started,0,2027-05-07 08:00,2027-05-10 17:00,2027-05-07 08:00,2027-05-10 17:00,,,2027-05-20 08:00,2027-05-21 17:00,9,,
LRHC-UP06,2027-05-01 00:00,5-INT-1200,"Make good module joints, Z3",LRHC.5.INT,Internal completion by zone,5,Task,"LRHC 5-day (England, Christmas shutdown)",6,0,Completed,100,2027-04-01 08:00,2027-04-08 17:00,2027-04-01 08:00,2027-04-08 17:00,2027-04-01 08:00,2027-04-08 17:00,2027-04-15 08:00,2027-04-22 17:00,10,,
LRHC-UP06,2027-05-01 00:00,5-INT-1210,"Second-fix M&E connections, Z3",LRHC.5.INT,Internal completion by zone,5,Task,"LRHC 5-day (England, Christmas shutdown)",10,0,Completed,100,2027-04-09 08:00,2027-04-22 17:00,2027-04-09 08:00,2027-04-22 17:00,2027-04-09 08:00,2027-04-22 17:00,2027-04-23 08:00,2027-05-07 17:00,10,,
LRHC-UP06,2027-05-01 00:00,5-INT-1220,"Finishes at joints and floor coverings, Z3",LRHC.5.INT,Internal completion by zone,5,Task,"LRHC 5-day (England, Christmas shutdown)",8,2,In progress,75,2027-04-23 08:00,2027-05-05 17:00,2027-04-23 08:00,2027-05-05 17:00,2027-04-23 08:00,,2027-05-10 08:00,2027-05-19 17:00,10,,
LRHC-UP06,2027-05-01 00:00,5-INT-1240,"Builder's clean, Z3",LRHC.5.INT,Internal completion by zone,5,Task,"LRHC 5-day (England, Christmas shutdown)",2,2,Not started,0,2027-05-06 08:00,2027-05-07 17:00,2027-05-06 08:00,2027-05-07 17:00,,,2027-05-20 08:00,2027-05-21 17:00,10,,
LRHC-UP06,2027-05-01 00:00,5-INT-1300,"Make good module joints, Z4",LRHC.5.INT,Internal completion by zone,5,Task,"LRHC 5-day (England, Christmas shutdown)",6,0,Completed,100,2027-04-02 08:00,2027-04-09 17:00,2027-04-02 08:00,2027-04-09 17:00,2027-04-02 08:00,2027-04-09 17:00,2027-04-15 08:00,2027-04-22 17:00,9,,
LRHC-UP06,2027-05-01 00:00,5-INT-1310,"Second-fix M&E connections, Z4",LRHC.5.INT,Internal completion by zone,5,Task,"LRHC 5-day (England, Christmas shutdown)",10,0,Completed,100,2027-04-12 08:00,2027-04-23 17:00,2027-04-12 08:00,2027-04-23 17:00,2027-04-12 08:00,2027-04-23 17:00,2027-04-23 08:00,2027-05-07 17:00,9,,
LRHC-UP06,2027-05-01 00:00,5-INT-1320,"Finishes at joints and floor coverings, Z4",LRHC.5.INT,Internal completion by zone,5,Task,"LRHC 5-day (England, Christmas shutdown)",8,3,In progress,62,2027-04-26 08:00,2027-05-06 17:00,2027-04-26 08:00,2027-05-06 17:00,2027-04-26 08:00,,2027-05-10 08:00,2027-05-19 17:00,9,,
LRHC-UP06,2027-05-01 00:00,5-INT-1340,"Builder's clean, Z4",LRHC.5.INT,Internal completion by zone,5,Task,"LRHC 5-day (England, Christmas shutdown)",2,2,Not started,0,2027-05-07 08:00,2027-05-10 17:00,2027-05-07 08:00,2027-05-10 17:00,,,2027-05-20 08:00,2027-05-21 17:00,9,,
LRHC-UP06,2027-05-01 00:00,5-INT-1400,"Make good module joints, corridor",LRHC.5.INT,Internal completion by zone,5,Task,"LRHC 5-day (England, Christmas shutdown)",6,0,Completed,100,2027-03-25 08:00,2027-04-05 17:00,2027-03-25 08:00,2027-04-05 17:00,2027-03-25 08:00,2027-04-05 17:00,2027-03-31 08:00,2027-04-07 17:00,2,,
LRHC-UP06,2027-05-01 00:00,5-INT-1410,"Second-fix M&E connections, corridor",LRHC.5.INT,Internal completion by zone,5,Task,"LRHC 5-day (England, Christmas shutdown)",10,0,Completed,100,2027-04-06 08:00,2027-04-19 17:00,2027-04-06 08:00,2027-04-19 17:00,2027-04-06 08:00,2027-04-19 17:00,2027-04-08 08:00,2027-04-21 17:00,2,,
LRHC-UP06,2027-05-01 00:00,5-INT-1420,"Finishes at joints and floor coverings, corridor",LRHC.5.INT,Internal completion by zone,5,Task,"LRHC 5-day (England, Christmas shutdown)",8,0,Completed,100,2027-04-20 08:00,2027-04-29 17:00,2027-04-20 08:00,2027-04-29 17:00,2027-04-20 08:00,2027-04-29 17:00,2027-05-10 08:00,2027-05-19 17:00,13,,
LRHC-UP06,2027-05-01 00:00,5-INT-1440,"Builder's clean, corridor",LRHC.5.INT,Internal completion by zone,5,Task,"LRHC 5-day (England, Christmas shutdown)",2,1,In progress,50,2027-04-30 08:00,2027-05-04 17:00,2027-04-30 08:00,2027-05-04 17:00,2027-04-30 08:00,,2027-05-20 08:00,2027-05-21 17:00,13,,
LRHC-UP06,2027-05-01 00:00,5-EXT-1000,Drainage connections to campus network,LRHC.5.EXT,External works,5,Task,"LRHC 5-day (England, Christmas shutdown)",5,0,Completed,100,2027-02-24 08:00,2027-03-02 17:00,2027-02-24 08:00,2027-03-02 17:00,2027-02-24 08:00,2027-03-02 17:00,2027-05-27 08:00,2027-06-03 17:00,63,,
LRHC-UP06,2027-05-01 00:00,5-EXT-1010,Car park and path sub-base,LRHC.5.EXT,External works,5,Task,"LRHC 5-day (England, Christmas shutdown)",8,0,Completed,100,2027-03-30 08:00,2027-04-08 17:00,2027-03-30 08:00,2027-04-08 17:00,2027-03-30 08:00,2027-04-08 17:00,2027-04-29 08:00,2027-05-11 17:00,22,,
LRHC-UP06,2027-05-01 00:00,5-EXT-1020,Car park surfacing,LRHC.5.EXT,External works,5,Task,"LRHC 5-day (England, Christmas shutdown)",5,0,Completed,100,2027-04-09 08:00,2027-04-15 17:00,2027-04-09 08:00,2027-04-15 17:00,2027-04-09 08:00,2027-04-15 17:00,2027-05-12 08:00,2027-05-18 17:00,22,,
LRHC-UP06,2027-05-01 00:00,5-EXT-1030,Paths and paving,LRHC.5.EXT,External works,5,Task,"LRHC 5-day (England, Christmas shutdown)",6,0,Completed,100,2027-04-13 08:00,2027-04-20 17:00,2027-04-13 08:00,2027-04-20 17:00,2027-04-13 08:00,2027-04-20 17:00,2027-05-14 08:00,2027-05-21 17:00,22,,
LRHC-UP06,2027-05-01 00:00,5-EXT-1040,Soft landscaping,LRHC.5.EXT,External works,5,Task,"LRHC 5-day (England, Christmas shutdown)",8,0,Completed,100,2027-04-21 08:00,2027-04-30 17:00,2027-04-21 08:00,2027-04-30 17:00,2027-04-21 08:00,2027-04-30 17:00,2027-05-24 08:00,2027-06-03 17:00,22,,
LRHC-UP06,2027-05-01 00:00,5-EXT-1050,Fencing and gates,LRHC.5.EXT,External works,5,Task,"LRHC 5-day (England, Christmas shutdown)",5,0,Completed,100,2027-04-09 08:00,2027-04-15 17:00,2027-04-09 08:00,2027-04-15 17:00,2027-04-09 08:00,2027-04-15 17:00,2027-05-27 08:00,2027-06-03 17:00,33,,
LRHC-UP06,2027-05-01 00:00,5-EXT-1060,Line marking and signage,LRHC.5.EXT,External works,5,Task,"LRHC 5-day (England, Christmas shutdown)",1,0,Completed,100,2027-04-16 08:00,2027-04-16 17:00,2027-04-16 08:00,2027-04-16 17:00,2027-04-16 08:00,2027-04-16 17:00,2027-06-03 08:00,2027-06-03 17:00,32,,
LRHC-UP06,2027-05-01 00:00,5-COM-1000,LV electrical testing and certification,LRHC.5.COM,Testing and commissioning,5,Task,"LRHC 5-day (England, Christmas shutdown)",4,0,Completed,100,2027-04-20 08:00,2027-04-23 17:00,2027-04-20 08:00,2027-04-23 17:00,2027-04-20 08:00,2027-04-23 17:00,2027-04-22 08:00,2027-04-27 17:00,2,,
LRHC-UP06,2027-05-01 00:00,5-COM-1010,Emergency lighting test (3-hour duration),LRHC.5.COM,Testing and commissioning,5,Task,"LRHC 5-day (England, Christmas shutdown)",2,0,Completed,100,2027-04-26 08:00,2027-04-27 17:00,2027-04-26 08:00,2027-04-27 17:00,2027-04-26 08:00,2027-04-27 17:00,2027-05-26 08:00,2027-05-27 17:00,21,,
LRHC-UP06,2027-05-01 00:00,5-COM-1020,Fire alarm commissioning,LRHC.5.COM,Testing and commissioning,5,Task,"LRHC 5-day (England, Christmas shutdown)",4,0,Completed,100,2027-04-26 08:00,2027-04-29 17:00,2027-04-26 08:00,2027-04-29 17:00,2027-04-26 08:00,2027-04-29 17:00,2027-05-20 08:00,2027-05-25 17:00,17,,
LRHC-UP06,2027-05-01 00:00,5-COM-1021,Fire alarm cause and effect witness test,LRHC.5.COM,Testing and commissioning,5,Task,"LRHC 5-day (England, Christmas shutdown)",1,0,Completed,100,2027-04-30 08:00,2027-04-30 17:00,2027-04-30 08:00,2027-04-30 17:00,2027-04-30 08:00,2027-04-30 17:00,2027-05-27 08:00,2027-05-27 17:00,18,,
LRHC-UP06,2027-05-01 00:00,5-COM-1030,Nurse call and assistance call commissioning,LRHC.5.COM,Testing and commissioning,5,Task,"LRHC 5-day (England, Christmas shutdown)",3,0,Completed,100,2027-04-26 08:00,2027-04-28 17:00,2027-04-26 08:00,2027-04-28 17:00,2027-04-26 08:00,2027-04-28 17:00,2027-05-25 08:00,2027-05-27 17:00,20,,
LRHC-UP06,2027-05-01 00:00,5-COM-1040,Ventilation commissioning and air balancing,LRHC.5.COM,Testing and commissioning,5,Task,"LRHC 5-day (England, Christmas shutdown)",5,0,Completed,100,2027-04-26 08:00,2027-04-30 17:00,2027-04-26 08:00,2027-04-30 17:00,2027-04-26 08:00,2027-04-30 17:00,2027-04-28 08:00,2027-05-05 17:00,2,,
LRHC-UP06,2027-05-01 00:00,5-COM-1050,Heat pump and heating commissioning,LRHC.5.COM,Testing and commissioning,5,Task,"LRHC 5-day (England, Christmas shutdown)",4,0,Completed,100,2027-04-26 08:00,2027-04-29 17:00,2027-04-26 08:00,2027-04-29 17:00,2027-04-26 08:00,2027-04-29 17:00,2027-04-29 08:00,2027-05-05 17:00,3,,
LRHC-UP06,2027-05-01 00:00,5-COM-1060,Water system flush and chlorination,LRHC.5.COM,Testing and commissioning,5,Task,"LRHC 5-day (England, Christmas shutdown)",3,3,Not started,0,2027-05-07 08:00,2027-05-11 17:00,2027-05-07 08:00,2027-05-11 17:00,,,2027-05-11 08:00,2027-05-13 17:00,2,,
LRHC-UP06,2027-05-01 00:00,5-COM-1061,Water sampling and laboratory results,LRHC.5.COM,Testing and commissioning,5,Task,"LRHC 5-day (England, Christmas shutdown)",10,10,Not started,0,2027-05-12 08:00,2027-05-25 17:00,2027-05-12 08:00,2027-05-25 17:00,,,2027-05-14 08:00,2027-05-27 17:00,2,,
LRHC-UP06,2027-05-01 00:00,5-COM-1070,TMV commissioning and temperature tests,LRHC.5.COM,Testing and commissioning,5,Task,"LRHC 5-day (England, Christmas shutdown)",3,3,Not started,0,2027-05-12 08:00,2027-05-14 17:00,2027-05-12 08:00,2027-05-14 17:00,,,2027-05-25 08:00,2027-05-27 17:00,9,,
LRHC-UP06,2027-05-01 00:00,5-COM-1080,Fire damper drop tests,LRHC.5.COM,Testing and commissioning,5,Task,"LRHC 5-day (England, Christmas shutdown)",2,1,In progress,50,2027-04-30 08:00,2027-05-04 17:00,2027-04-30 08:00,2027-05-04 17:00,2027-04-30 08:00,,2027-05-26 08:00,2027-05-27 17:00,17,,
LRHC-UP06,2027-05-01 00:00,5-COM-1090,BMS commissioning,LRHC.5.COM,Testing and commissioning,5,Task,"LRHC 5-day (England, Christmas shutdown)",8,8,Not started,0,2027-05-04 08:00,2027-05-13 17:00,2027-05-04 08:00,2027-05-13 17:00,,,2027-05-06 08:00,2027-05-17 17:00,2,,
LRHC-UP06,2027-05-01 00:00,5-COM-1100,Point-to-point test of all BMS and metering points,LRHC.5.COM,Testing and commissioning,5,Task,"LRHC 5-day (England, Christmas shutdown)",5,5,Not started,0,2027-05-07 08:00,2027-05-13 17:00,2027-05-07 08:00,2027-05-13 17:00,,,2027-05-11 08:00,2027-05-17 17:00,2,,
LRHC-UP06,2027-05-01 00:00,5-COM-1110,End-to-end alarm test (TMV over-temperature to CAFM work order),LRHC.5.COM,Testing and commissioning,5,Task,"LRHC 5-day (England, Christmas shutdown)",1,1,Not started,0,2027-05-17 08:00,2027-05-17 17:00,2027-05-17 08:00,2027-05-17 17:00,,,2027-06-03 08:00,2027-06-03 17:00,12,,
LRHC-UP06,2027-05-01 00:00,5-COM-1120,14-day data soak test,LRHC.5.COM,Testing and commissioning,5,Task,LRHC 7-day (continuous tests),14,14,Not started,0,2027-05-14 08:00,2027-05-27 17:00,2027-05-14 08:00,2027-05-27 17:00,,,2027-05-18 08:00,2027-05-31 17:00,4,,
LRHC-UP06,2027-05-01 00:00,5-COM-1130,Air tightness test,LRHC.5.COM,Testing and commissioning,5,Task,"LRHC 5-day (England, Christmas shutdown)",1,1,Not started,0,2027-05-11 08:00,2027-05-11 17:00,2027-05-11 08:00,2027-05-11 17:00,,,2027-05-27 08:00,2027-05-27 17:00,12,,
LRHC-UP06,2027-05-01 00:00,5-COM-1140,Acoustic testing (consulting rooms),LRHC.5.COM,Testing and commissioning,5,Task,"LRHC 5-day (England, Christmas shutdown)",2,2,Not started,0,2027-05-11 08:00,2027-05-12 17:00,2027-05-11 08:00,2027-05-12 17:00,,,2027-06-02 08:00,2027-06-03 17:00,15,,
LRHC-UP06,2027-05-01 00:00,5-COM-1150,Building control completion inspection,LRHC.5.COM,Testing and commissioning,5,Task,"LRHC 5-day (England, Christmas shutdown)",1,1,Not started,0,2027-05-12 08:00,2027-05-12 17:00,2027-05-12 08:00,2027-05-12 17:00,,,2027-05-28 08:00,2027-05-28 17:00,12,,
LRHC-UP06,2027-05-01 00:00,5-INF-1000,Develop factory inspection and test records,LRHC.5.INF,Construction information,5,Task,"LRHC 5-day (England, Christmas shutdown)",3,0,Completed,100,2027-03-03 08:00,2027-03-05 17:00,2027-03-03 08:00,2027-03-05 17:00,2027-03-03 08:00,2027-03-05 17:00,2027-04-09 08:00,2027-04-13 17:00,25,,
LRHC-UP06,2027-05-01 00:00,5-INF-1001,Check and approve factory inspection and test records,LRHC.5.INF,Construction information,5,Task,"LRHC 5-day (England, Christmas shutdown)",2,0,Completed,100,2027-03-08 08:00,2027-03-09 17:00,2027-03-08 08:00,2027-03-09 17:00,2027-03-08 08:00,2027-03-09 17:00,2027-04-14 08:00,2027-04-15 17:00,25,,
LRHC-UP06,2027-05-01 00:00,5-INF-1005,Issue factory inspection and test records,LRHC.5.INF,Construction information,5,Task,"LRHC 5-day (England, Christmas shutdown)",1,0,Completed,100,2027-03-10 08:00,2027-03-10 17:00,2027-03-10 08:00,2027-03-10 17:00,2027-03-10 08:00,2027-03-10 17:00,2027-04-16 08:00,2027-04-16 17:00,25,,
LRHC-UP06,2027-05-01 00:00,5-INF-1100,Develop commissioning plan,LRHC.5.INF,Construction information,5,Task,"LRHC 5-day (England, Christmas shutdown)",8,0,Completed,100,2027-03-25 08:00,2027-04-07 17:00,2027-03-25 08:00,2027-04-07 17:00,2027-03-25 08:00,2027-04-07 17:00,2027-04-02 08:00,2027-04-13 17:00,4,,
LRHC-UP06,2027-05-01 00:00,5-INF-1101,Check and approve commissioning plan,LRHC.5.INF,Construction information,5,Task,"LRHC 5-day (England, Christmas shutdown)",2,0,Completed,100,2027-04-08 08:00,2027-04-09 17:00,2027-04-08 08:00,2027-04-09 17:00,2027-04-08 08:00,2027-04-09 17:00,2027-04-14 08:00,2027-04-15 17:00,4,,
LRHC-UP06,2027-05-01 00:00,5-INF-1105,Issue commissioning plan,LRHC.5.INF,Construction information,5,Task,"LRHC 5-day (England, Christmas shutdown)",1,0,Completed,100,2027-04-12 08:00,2027-04-12 17:00,2027-04-12 08:00,2027-04-17 17:00,2027-04-12 08:00,2027-04-17 17:00,2027-04-16 08:00,2027-04-16 17:00,4,,
LRHC-UP06,2027-05-01 00:00,5-INF-1200,Develop points schedule (draft),LRHC.5.INF,Construction information,5,Task,"LRHC 5-day (England, Christmas shutdown)",6,0,Completed,100,2027-04-05 08:00,2027-04-12 17:00,2027-04-05 08:00,2027-04-12 17:00,2027-04-05 08:00,2027-04-12 17:00,2027-04-06 08:00,2027-04-13 17:00,1,,
LRHC-UP06,2027-05-01 00:00,5-INF-1201,Check and approve points schedule (draft),LRHC.5.INF,Construction information,5,Task,"LRHC 5-day (England, Christmas shutdown)",2,0,Completed,100,2027-04-13 08:00,2027-04-14 17:00,2027-04-13 08:00,2027-04-14 17:00,2027-04-13 08:00,2027-04-14 17:00,2027-04-14 08:00,2027-04-15 17:00,1,,
LRHC-UP06,2027-05-01 00:00,5-INF-1205,Issue points schedule (draft),LRHC.5.INF,Construction information,5,Task,"LRHC 5-day (England, Christmas shutdown)",1,0,Completed,100,2027-04-15 08:00,2027-04-15 17:00,2027-04-15 08:00,2027-04-15 17:00,2027-04-15 08:00,2027-04-15 17:00,2027-04-16 08:00,2027-04-16 17:00,1,,
LRHC-UP06,2027-05-01 00:00,5-INF-1300,Develop COBie (draft),LRHC.5.INF,Construction information,5,Task,"LRHC 5-day (England, Christmas shutdown)",9,0,Completed,100,2027-03-31 08:00,2027-04-12 17:00,2027-03-31 08:00,2027-04-12 17:00,2027-03-31 08:00,2027-04-12 17:00,2027-04-01 08:00,2027-04-13 17:00,1,,
LRHC-UP06,2027-05-01 00:00,5-INF-1301,Check and approve COBie (draft),LRHC.5.INF,Construction information,5,Task,"LRHC 5-day (England, Christmas shutdown)",2,0,Completed,100,2027-04-13 08:00,2027-04-14 17:00,2027-04-13 08:00,2027-04-14 17:00,2027-04-13 08:00,2027-04-14 17:00,2027-04-14 08:00,2027-04-15 17:00,1,,
LRHC-UP06,2027-05-01 00:00,5-INF-1305,Issue COBie (draft),LRHC.5.INF,Construction information,5,Task,"LRHC 5-day (England, Christmas shutdown)",1,0,Completed,100,2027-04-15 08:00,2027-04-15 17:00,2027-04-15 08:00,2027-04-15 17:00,2027-04-15 08:00,2027-04-15 17:00,2027-04-16 08:00,2027-04-16 17:00,1,,
LRHC-UP06,2027-05-01 00:00,M-203-IE2,M-203-IE2 Pre-handover information (IE2),LRHC.KEY,Key dates and milestones,,Finish milestone,"LRHC 5-day (England, Christmas shutdown)",0,0,Completed,100,2027-04-16 17:00,2027-04-16 17:00,2027-04-16 17:00,2027-04-16 17:00,2027-04-16 17:00,2027-04-16 17:00,2027-04-16 17:00,2027-04-16 17:00,0,CS_MEO,2027-04-16 17:00
LRHC-UP06,2027-05-01 00:00,6-INF-1000,Develop points schedule (final),LRHC.6.INF,Handover information (IE3),6,Task,"LRHC 5-day (England, Christmas shutdown)",3,3,Not started,0,2027-05-14 08:00,2027-05-18 17:00,2027-05-14 08:00,2027-05-18 17:00,,,2027-05-27 08:00,2027-06-01 17:00,9,,
LRHC-UP06,2027-05-01 00:00,6-INF-1001,Check and approve points schedule (final),LRHC.6.INF,Handover information (IE3),6,Task,"LRHC 5-day (England, Christmas shutdown)",2,2,Not started,0,2027-05-19 08:00,2027-05-20 17:00,2027-05-19 08:00,2027-05-20 17:00,,,2027-06-02 08:00,2027-06-03 17:00,9,,
LRHC-UP06,2027-05-01 00:00,6-INF-1005,Issue points schedule (final),LRHC.6.INF,Handover information (IE3),6,Task,"LRHC 5-day (England, Christmas shutdown)",1,1,Not started,0,2027-05-21 08:00,2027-05-21 17:00,2027-05-21 08:00,2027-05-21 17:00,,,2027-06-04 08:00,2027-06-04 17:00,9,,
LRHC-UP06,2027-05-01 00:00,6-INF-1100,Develop data soak test report,LRHC.6.INF,Handover information (IE3),6,Task,"LRHC 5-day (England, Christmas shutdown)",2,2,Not started,0,2027-05-28 08:00,2027-06-01 17:00,2027-05-28 08:00,2027-06-01 17:00,,,2027-06-01 08:00,2027-06-02 17:00,1,,
LRHC-UP06,2027-05-01 00:00,6-INF-1101,Check and approve data soak test report,LRHC.6.INF,Handover information (IE3),6,Task,"LRHC 5-day (England, Christmas shutdown)",1,1,Not started,0,2027-06-02 08:00,2027-06-02 17:00,2027-06-02 08:00,2027-06-02 17:00,,,2027-06-03 08:00,2027-06-03 17:00,1,,
LRHC-UP06,2027-05-01 00:00,6-INF-1105,Issue data soak test report,LRHC.6.INF,Handover information (IE3),6,Task,"LRHC 5-day (England, Christmas shutdown)",1,1,Not started,0,2027-06-03 08:00,2027-06-03 17:00,2027-06-03 08:00,2027-06-03 17:00,,,2027-06-04 08:00,2027-06-04 17:00,1,,
LRHC-UP06,2027-05-01 00:00,6-INF-1200,Develop network and device schedule,LRHC.6.INF,Handover information (IE3),6,Task,"LRHC 5-day (England, Christmas shutdown)",3,3,Not started,0,2027-05-14 08:00,2027-05-18 17:00,2027-05-14 08:00,2027-05-18 17:00,,,2027-05-27 08:00,2027-06-01 17:00,9,,
LRHC-UP06,2027-05-01 00:00,6-INF-1201,Check and approve network and device schedule,LRHC.6.INF,Handover information (IE3),6,Task,"LRHC 5-day (England, Christmas shutdown)",2,2,Not started,0,2027-05-19 08:00,2027-05-20 17:00,2027-05-19 08:00,2027-05-20 17:00,,,2027-06-02 08:00,2027-06-03 17:00,9,,
LRHC-UP06,2027-05-01 00:00,6-INF-1205,Issue network and device schedule,LRHC.6.INF,Handover information (IE3),6,Task,"LRHC 5-day (England, Christmas shutdown)",1,1,Not started,0,2027-05-21 08:00,2027-05-21 17:00,2027-05-21 08:00,2027-05-21 17:00,,,2027-06-04 08:00,2027-06-04 17:00,9,,
LRHC-UP06,2027-05-01 00:00,6-INF-1300,Develop TMV commissioning report,LRHC.6.INF,Handover information (IE3),6,Task,"LRHC 5-day (England, Christmas shutdown)",2,2,Not started,0,2027-05-26 08:00,2027-05-27 17:00,2027-05-26 08:00,2027-05-27 17:00,,,2027-05-28 08:00,2027-06-01 17:00,2,,
LRHC-UP06,2027-05-01 00:00,6-INF-1301,Check and approve TMV commissioning report,LRHC.6.INF,Handover information (IE3),6,Task,"LRHC 5-day (England, Christmas shutdown)",2,2,Not started,0,2027-05-28 08:00,2027-06-01 17:00,2027-05-28 08:00,2027-06-01 17:00,,,2027-06-02 08:00,2027-06-03 17:00,2,,
LRHC-UP06,2027-05-01 00:00,6-INF-1305,Issue TMV commissioning report,LRHC.6.INF,Handover information (IE3),6,Task,"LRHC 5-day (England, Christmas shutdown)",1,1,Not started,0,2027-06-02 08:00,2027-06-02 17:00,2027-06-02 08:00,2027-06-02 17:00,,,2027-06-04 08:00,2027-06-04 17:00,2,,
LRHC-UP06,2027-05-01 00:00,6-INF-1400,Develop fire damper drop-test report,LRHC.6.INF,Handover information (IE3),6,Task,"LRHC 5-day (England, Christmas shutdown)",2,2,Not started,0,2027-05-05 08:00,2027-05-06 17:00,2027-05-05 08:00,2027-05-06 17:00,,,2027-05-28 08:00,2027-06-01 17:00,17,,
LRHC-UP06,2027-05-01 00:00,6-INF-1401,Check and approve fire damper drop-test report,LRHC.6.INF,Handover information (IE3),6,Task,"LRHC 5-day (England, Christmas shutdown)",2,2,Not started,0,2027-05-07 08:00,2027-05-10 17:00,2027-05-07 08:00,2027-05-10 17:00,,,2027-06-02 08:00,2027-06-03 17:00,17,,
LRHC-UP06,2027-05-01 00:00,6-INF-1405,Issue fire damper drop-test report,LRHC.6.INF,Handover information (IE3),6,Task,"LRHC 5-day (England, Christmas shutdown)",1,1,Not started,0,2027-05-11 08:00,2027-05-11 17:00,2027-05-11 08:00,2027-05-11 17:00,,,2027-06-04 08:00,2027-06-04 17:00,17,,
LRHC-UP06,2027-05-01 00:00,6-INF-1500,Develop electrical and emergency lighting test certificates,LRHC.6.INF,Handover information (IE3),6,Task,"LRHC 5-day (England, Christmas shutdown)",2,0,Completed,100,2027-04-28 08:00,2027-04-29 17:00,2027-04-28 08:00,2027-04-29 17:00,2027-04-28 08:00,2027-04-29 17:00,2027-05-28 08:00,2027-06-01 17:00,21,,
LRHC-UP06,2027-05-01 00:00,6-INF-1501,Check and approve electrical and emergency lighting test certificates,LRHC.6.INF,Handover information (IE3),6,Task,"LRHC 5-day (England, Christmas shutdown)",2,1,In progress,50,2027-04-30 08:00,2027-05-04 17:00,2027-04-30 08:00,2027-05-04 17:00,2027-04-30 08:00,,2027-06-02 08:00,2027-06-03 17:00,21,,
LRHC-UP06,2027-05-01 00:00,6-INF-1505,Issue electrical and emergency lighting test certificates,LRHC.6.INF,Handover information (IE3),6,Task,"LRHC 5-day (England, Christmas shutdown)",1,1,Not started,0,2027-05-05 08:00,2027-05-05 17:00,2027-05-05 08:00,2027-05-05 17:00,,,2027-06-04 08:00,2027-06-04 17:00,21,,
LRHC-UP06,2027-05-01 00:00,6-INF-1600,Develop COBie (handover),LRHC.6.INF,Handover information (IE3),6,Task,"LRHC 5-day (England, Christmas shutdown)",10,10,Not started,0,2027-05-04 08:00,2027-05-17 17:00,2027-05-04 08:00,2027-05-17 17:00,,,2027-05-18 08:00,2027-06-01 17:00,10,,
LRHC-UP06,2027-05-01 00:00,6-INF-1601,Check and approve COBie (handover),LRHC.6.INF,Handover information (IE3),6,Task,"LRHC 5-day (England, Christmas shutdown)",2,2,Not started,0,2027-05-18 08:00,2027-05-19 17:00,2027-05-18 08:00,2027-05-19 17:00,,,2027-06-02 08:00,2027-06-03 17:00,10,,
LRHC-UP06,2027-05-01 00:00,6-INF-1605,Issue COBie (handover),LRHC.6.INF,Handover information (IE3),6,Task,"LRHC 5-day (England, Christmas shutdown)",1,1,Not started,0,2027-05-20 08:00,2027-05-20 17:00,2027-05-20 08:00,2027-05-20 17:00,,,2027-06-04 08:00,2027-06-04 17:00,10,,
LRHC-UP06,2027-05-01 00:00,6-INF-1700,Develop as-constructed federated model,LRHC.6.INF,Handover information (IE3),6,Task,"LRHC 5-day (England, Christmas shutdown)",15,6,In progress,60,2027-04-20 08:00,2027-05-11 17:00,2027-04-20 08:00,2027-05-11 17:00,2027-04-20 08:00,,2027-05-11 08:00,2027-06-01 17:00,14,,
LRHC-UP06,2027-05-01 00:00,6-INF-1701,Check and approve as-constructed federated model,LRHC.6.INF,Handover information (IE3),6,Task,"LRHC 5-day (England, Christmas shutdown)",2,2,Not started,0,2027-05-12 08:00,2027-05-13 17:00,2027-05-12 08:00,2027-05-13 17:00,,,2027-06-02 08:00,2027-06-03 17:00,14,,
LRHC-UP06,2027-05-01 00:00,6-INF-1705,Issue as-constructed federated model,LRHC.6.INF,Handover information (IE3),6,Task,"LRHC 5-day (England, Christmas shutdown)",1,1,Not started,0,2027-05-14 08:00,2027-05-14 17:00,2027-05-14 08:00,2027-05-14 17:00,,,2027-06-04 08:00,2027-06-04 17:00,14,,
LRHC-UP06,2027-05-01 00:00,6-INF-1800,Develop O&M manual,LRHC.6.INF,Handover information (IE3),6,Task,"LRHC 5-day (England, Christmas shutdown)",20,11,In progress,45,2027-04-20 08:00,2027-05-18 17:00,2027-04-20 08:00,2027-05-18 17:00,2027-04-20 08:00,,2027-04-30 08:00,2027-05-28 17:00,8,,
LRHC-UP06,2027-05-01 00:00,6-INF-1801,Check and approve O&M manual,LRHC.6.INF,Handover information (IE3),6,Task,"LRHC 5-day (England, Christmas shutdown)",3,3,Not started,0,2027-05-19 08:00,2027-05-21 17:00,2027-05-19 08:00,2027-05-21 17:00,,,2027-06-01 08:00,2027-06-03 17:00,8,,
LRHC-UP06,2027-05-01 00:00,6-INF-1805,Issue O&M manual,LRHC.6.INF,Handover information (IE3),6,Task,"LRHC 5-day (England, Christmas shutdown)",1,1,Not started,0,2027-05-24 08:00,2027-05-24 17:00,2027-05-24 08:00,2027-06-03 17:00,,,2027-06-04 08:00,2027-06-04 17:00,8,,
LRHC-UP06,2027-05-01 00:00,6-INF-1900,Develop health and safety file,LRHC.6.INF,Handover information (IE3),6,Task,"LRHC 5-day (England, Christmas shutdown)",18,9,In progress,50,2027-04-20 08:00,2027-05-14 17:00,2027-04-20 08:00,2027-05-14 17:00,2027-04-20 08:00,,2027-05-06 08:00,2027-06-01 17:00,11,,
LRHC-UP06,2027-05-01 00:00,6-INF-1901,Check and approve health and safety file,LRHC.6.INF,Handover information (IE3),6,Task,"LRHC 5-day (England, Christmas shutdown)",2,2,Not started,0,2027-05-17 08:00,2027-05-18 17:00,2027-05-17 08:00,2027-05-18 17:00,,,2027-06-02 08:00,2027-06-03 17:00,11,,
LRHC-UP06,2027-05-01 00:00,6-INF-1905,Issue health and safety file,LRHC.6.INF,Handover information (IE3),6,Task,"LRHC 5-day (England, Christmas shutdown)",1,1,Not started,0,2027-05-19 08:00,2027-05-19 17:00,2027-05-19 08:00,2027-05-19 17:00,,,2027-06-04 08:00,2027-06-04 17:00,11,,
LRHC-UP06,2027-05-01 00:00,6-HND-1000,Client and FM training,LRHC.6.HND,Handover and practical completion,6,Task,"LRHC 5-day (England, Christmas shutdown)",5,5,Not started,0,2027-05-14 08:00,2027-05-20 17:00,2027-05-14 08:00,2027-05-20 17:00,,,2027-05-28 08:00,2027-06-04 17:00,10,,
LRHC-UP06,2027-05-01 00:00,6-HND-1010,Pre-completion snagging inspection,LRHC.6.HND,Handover and practical completion,6,Task,"LRHC 5-day (England, Christmas shutdown)",3,3,Not started,0,2027-05-11 08:00,2027-05-13 17:00,2027-05-11 08:00,2027-05-13 17:00,,,2027-05-24 08:00,2027-05-26 17:00,9,,
LRHC-UP06,2027-05-01 00:00,6-HND-1020,Snag rectification,LRHC.6.HND,Handover and practical completion,6,Task,"LRHC 5-day (England, Christmas shutdown)",5,5,Not started,0,2027-05-14 08:00,2027-05-20 17:00,2027-05-14 08:00,2027-05-20 17:00,,,2027-05-27 08:00,2027-06-03 17:00,9,,
LRHC-UP06,2027-05-01 00:00,6-HND-1030,Building control completion certificate,LRHC.6.HND,Handover and practical completion,6,Task,"LRHC 5-day (England, Christmas shutdown)",3,3,Not started,0,2027-05-13 08:00,2027-05-17 17:00,2027-05-13 08:00,2027-05-17 17:00,,,2027-06-01 08:00,2027-06-03 17:00,12,,
LRHC-UP06,2027-05-01 00:00,6-HND-1040,Practical completion inspection,LRHC.6.HND,Handover and practical completion,6,Task,"LRHC 5-day (England, Christmas shutdown)",1,1,Not started,0,2027-05-21 08:00,2027-05-21 17:00,2027-05-21 08:00,2027-05-21 17:00,,,2027-06-04 08:00,2027-06-04 17:00,9,,
LRHC-UP06,2027-05-01 00:00,M-203-PC,M-203-PC Practical completion and handover information (IE3),LRHC.KEY,Key dates and milestones,,Finish milestone,"LRHC 5-day (England, Christmas shutdown)",0,0,Not started,0,2027-06-04 17:00,2027-06-04 17:00,2027-06-04 17:00,2027-06-04 17:00,,,2027-06-04 17:00,2027-06-04 17:00,0,CS_MEO,2027-06-04 17:00
LRHC-UP06,2027-05-01 00:00,6-HND-1050,"Handover of keys, access cards and BMS credentials (to IT/OT security)",LRHC.6.HND,Handover and practical completion,6,Task,"LRHC 5-day (England, Christmas shutdown)",1,1,Not started,0,2027-06-07 08:00,2027-06-07 17:00,2027-06-07 08:00,2027-06-07 17:00,,,2027-07-02 08:00,2027-07-02 17:00,19,,
LRHC-UP06,2027-05-01 00:00,6-REC-1000,Develop COBie (record),LRHC.6.REC,Record information (IE4),6,Task,"LRHC 5-day (England, Christmas shutdown)",8,8,Not started,0,2027-06-07 08:00,2027-06-16 17:00,2027-06-07 08:00,2027-06-16 17:00,,,2027-06-18 08:00,2027-06-29 17:00,9,,
LRHC-UP06,2027-05-01 00:00,6-REC-1001,Check and approve COBie (record),LRHC.6.REC,Record information (IE4),6,Task,"LRHC 5-day (England, Christmas shutdown)",2,2,Not started,0,2027-06-17 08:00,2027-06-18 17:00,2027-06-17 08:00,2027-06-18 17:00,,,2027-06-30 08:00,2027-07-01 17:00,9,,
LRHC-UP06,2027-05-01 00:00,6-REC-1005,Issue COBie (record),LRHC.6.REC,Record information (IE4),6,Task,"LRHC 5-day (England, Christmas shutdown)",1,1,Not started,0,2027-06-21 08:00,2027-06-21 17:00,2027-06-21 08:00,2027-06-21 17:00,,,2027-07-02 08:00,2027-07-02 17:00,9,,
LRHC-UP06,2027-05-01 00:00,6-REC-1100,Develop as-constructed federated model (record),LRHC.6.REC,Record information (IE4),6,Task,"LRHC 5-day (England, Christmas shutdown)",10,10,Not started,0,2027-06-07 08:00,2027-06-18 17:00,2027-06-07 08:00,2027-06-18 17:00,,,2027-06-16 08:00,2027-06-29 17:00,7,,
LRHC-UP06,2027-05-01 00:00,6-REC-1101,Check and approve as-constructed federated model (record),LRHC.6.REC,Record information (IE4),6,Task,"LRHC 5-day (England, Christmas shutdown)",2,2,Not started,0,2027-06-21 08:00,2027-06-22 17:00,2027-06-21 08:00,2027-06-22 17:00,,,2027-06-30 08:00,2027-07-01 17:00,7,,
LRHC-UP06,2027-05-01 00:00,6-REC-1105,Issue as-constructed federated model (record),LRHC.6.REC,Record information (IE4),6,Task,"LRHC 5-day (England, Christmas shutdown)",1,1,Not started,0,2027-06-23 08:00,2027-06-23 17:00,2027-06-23 08:00,2027-06-23 17:00,,,2027-07-02 08:00,2027-07-02 17:00,7,,
LRHC-UP06,2027-05-01 00:00,6-REC-1200,Develop O&M manual (record),LRHC.6.REC,Record information (IE4),6,Task,"LRHC 5-day (England, Christmas shutdown)",8,8,Not started,0,2027-06-07 08:00,2027-06-16 17:00,2027-06-07 08:00,2027-06-16 17:00,,,2027-06-18 08:00,2027-06-29 17:00,9,,
LRHC-UP06,2027-05-01 00:00,6-REC-1201,Check and approve O&M manual (record),LRHC.6.REC,Record information (IE4),6,Task,"LRHC 5-day (England, Christmas shutdown)",2,2,Not started,0,2027-06-17 08:00,2027-06-18 17:00,2027-06-17 08:00,2027-06-18 17:00,,,2027-06-30 08:00,2027-07-01 17:00,9,,
LRHC-UP06,2027-05-01 00:00,6-REC-1205,Issue O&M manual (record),LRHC.6.REC,Record information (IE4),6,Task,"LRHC 5-day (England, Christmas shutdown)",1,1,Not started,0,2027-06-21 08:00,2027-06-21 17:00,2027-06-21 08:00,2027-06-21 17:00,,,2027-07-02 08:00,2027-07-02 17:00,9,,
LRHC-UP06,2027-05-01 00:00,M-203-REC,M-203-REC Record information (IE4),LRHC.KEY,Key dates and milestones,,Finish milestone,"LRHC 5-day (England, Christmas shutdown)",0,0,Not started,0,2027-07-02 17:00,2027-07-02 17:00,2027-07-02 17:00,2027-07-02 17:00,,,2027-07-02 17:00,2027-07-02 17:00,0,CS_MEO,2027-07-02 17:00
